# elaboration_project_plan

How a schedule from MS Project changed from version to version. A marks actual dates.

## Version 1 (saved 2007-04-02, file 1.1.1_construction_project_plan.mpp)

Note of the change: *** empty log message ***

| ID | WBS | Task | Duration | Start | Finish | Predecessors | Complete | Total float | Constraint |
| --- | --- | --- | --- | --- | --- | --- | --- | --- | --- |
| 1 | 1 | **Iteration 1 (eligibility, study personnel, registration management, multi-site study)** | 33d | 2007-03-01 A | 2007-04-16 |  | 59% | 149d |  |
| 2 |  | Iteration start | 0d | 2007-03-01 | 2007-03-01 |  |  | 0d | start no earlier than 2007-03-01 |
| 3 | 1.2 | **Project Management** | 30d | 2007-03-01 A | 2007-04-11 | 2 | 57% | 152d |  |
| 4 | 1.2.1 | **Draft project plan (task 1.1)** | 30d | 2007-03-01 A | 2007-04-11 |  | 67% | 152d |  |
| 5 |  | Developer draft | 5d | 2007-03-01 A | 2007-03-07 A |  | 100% |  |  |
| 6 |  | BAH review | 5d | 2007-03-08 A | 2007-03-14 A | 5 | 100% |  |  |
| 7 |  | Developer update | 5d | 2007-03-15 A | 2007-03-21 A | 6 | 100% |  |  |
| 8 |  | Adopter review | 3d | 2007-03-22 A | 2007-03-26 A | 7 | 100% |  |  |
| 9 |  | Developer update | 2d | 2007-03-27 A | 2007-03-28 A | 8 | 100% |  |  |
| 10 |  | Deliver project plan to BAH (task 1.1) | 0d | 2007-03-28 A | 2007-03-28 A | 9 | 100% |  |  |
| 11 |  | BAH review project plan (task 1.1) | 10d | 2007-03-29 | 2007-04-11 | 10 |  | 145d |  |
| 12 | 1.2.2 | **Update risk matrix (task 1.4.1)** | 20d | 2007-03-01 A | 2007-03-28 |  | 50% | 162d |  |
| 13 |  | Update risk matrix for week 1 | 5d | 2007-03-01 A | 2007-03-07 A |  | 100% |  |  |
| 14 |  | Update risk matrix for week 2 | 5d | 2007-03-08 A | 2007-03-14 A | 13 | 100% |  |  |
| 15 |  | Deliver risk matrix to BAH (task 1.4.1) | 0d | 2007-03-14 A | 2007-03-14 A | 14 | 100% |  |  |
| 16 |  | BAH review risk matrix (task 1.4.1) | 10d | 2007-03-15 | 2007-03-28 | 15 |  | 162d |  |
| 17 | 1.2.3 | **Monthly report (task 1.3.1)** | 20d | 2007-03-15 A | 2007-04-11 | 15 | 50% | 152d |  |
| 18 |  | Update risk matrix for week 3 | 5d | 2007-03-15 A | 2007-03-21 A |  | 100% |  |  |
| 19 |  | Update risk matrix for week 4 | 5d | 2007-03-22 A | 2007-03-28 A | 18 | 100% |  |  |
| 20 |  | Deliver monthly report and risk matrix to BAH (task 1.3.1) | 0d | 2007-03-28 A | 2007-03-28 A | 19 | 100% |  |  |
| 21 |  | BAH review monthly report and risk matrix (task 1.3.1) | 10d | 2007-03-29 | 2007-04-11 | 20 |  | 152d |  |
| 22 | 1.3 | **Requirements and use cases** | 32d | 2007-03-01 A | 2007-04-13 | 2 | 38% | 150d |  |
| 23 | 1.3.1 | **Create level 1 use cases and requirements** | 4d | 2007-03-01 A | 2007-03-06 |  | 83% | 0d |  |
| 24 | 1.3.1.1 | **Level 1 use cases for eligibility** | 2d | 2007-03-01 A | 2007-03-02 A |  | 100% |  |  |
| 25 |  | Use case document (task 3.1.1) | 1d | 2007-03-01 A | 2007-03-01 A |  | 100% |  |  |
| 26 |  | Requirements document (3.2.1) | 1d | 2007-03-02 A | 2007-03-02 A | 25 | 100% |  |  |
| 27 | 1.3.1.2 | **Level 1 use cases for study personnel** | 2d | 2007-03-01 A | 2007-03-02 A |  | 100% |  |  |
| 28 |  | Use case document (task 3.1.1) | 1d | 2007-03-01 A | 2007-03-01 A |  | 100% |  |  |
| 29 |  | Requirements document (3.2.1) | 1d | 2007-03-02 A | 2007-03-02 A | 28 | 100% |  |  |
| 30 | 1.3.1.3 | **Level 1 use cases for registration management** | 2d | 2007-03-01 A | 2007-03-02 A |  | 100% |  |  |
| 31 |  | Use case document (task 3.1.1) | 1d | 2007-03-01 A | 2007-03-01 A |  | 100% |  |  |
| 32 |  | Requirements document (3.2.1) | 1d | 2007-03-02 A | 2007-03-02 A | 31 | 100% |  |  |
| 33 | 1.3.1.4 | **Level 1 use cases for multi-site study** | 4d | 2007-03-01 A | 2007-03-06 A |  | 100% |  |  |
| 34 |  | Use case document (task 3.1.1) | 2d | 2007-03-01 A | 2007-03-02 A |  | 100% |  |  |
| 35 |  | Requirements document (3.2.1) | 2d | 2007-03-05 A | 2007-03-06 A | 34 | 100% |  |  |
| 36 | 1.3.1.5 | **Level 1 use cases for C3D integration** | 2d | 2007-03-01 | 2007-03-02 |  |  | 2d |  |
| 37 |  | Use case document (task 3.1.1) | 1d | 2007-03-01 | 2007-03-01 |  |  | 2d |  |
| 38 |  | Requirements document (3.2.1) | 1d | 2007-03-02 | 2007-03-02 | 37 |  | 2d |  |
| 39 | 1.3.2 | **Update use case document (task 3.1.1, task 5.2.1)** | 9d | 2007-03-07 A | 2007-03-19 | 23 | 80% | 160d |  |
| 40 | 1.3.2.1 | **Update eligibility use cases** | 9d | 2007-03-07 A | 2007-03-19 A |  | 100% |  |  |
| 41 |  | Developer update | 2d | 2007-03-07 A | 2007-03-08 A |  | 100% |  |  |
| 42 |  | Adopter review | 5d | 2007-03-09 A | 2007-03-15 A | 41 | 100% |  |  |
| 43 |  | Developer update | 1d | 2007-03-16 A | 2007-03-16 A | 42 | 100% |  |  |
| 44 |  | Adopter sign-off | 1d | 2007-03-19 A | 2007-03-19 A | 43 | 100% |  |  |
| 45 | 1.3.2.2 | **Update study personnel use cases** | 9d | 2007-03-07 A | 2007-03-19 A |  | 100% |  |  |
| 46 |  | Developer update | 2d | 2007-03-07 A | 2007-03-08 A |  | 100% |  |  |
| 47 |  | Adopter review | 5d | 2007-03-09 A | 2007-03-15 A | 46 | 100% |  |  |
| 48 |  | Developer update | 1d | 2007-03-16 A | 2007-03-16 A | 47 | 100% |  |  |
| 49 |  | Adopter sign-off | 1d | 2007-03-19 A | 2007-03-19 A | 48 | 100% |  |  |
| 50 | 1.3.2.3 | **Update registration management use cases** | 9d | 2007-03-07 A | 2007-03-19 A |  | 100% |  |  |
| 51 |  | Developer update | 2d | 2007-03-07 A | 2007-03-08 A |  | 100% |  |  |
| 52 |  | Adopter review | 5d | 2007-03-09 A | 2007-03-15 A | 51 | 100% |  |  |
| 53 |  | Developer update | 1d | 2007-03-16 A | 2007-03-16 A | 52 | 100% |  |  |
| 54 |  | Adopter sign-off | 1d | 2007-03-19 A | 2007-03-19 A | 53 | 100% |  |  |
| 55 | 1.3.2.4 | **Update multi-site trial use cases** | 9d | 2007-03-07 A | 2007-03-19 A |  | 100% |  |  |
| 56 |  | Developer update | 2d | 2007-03-07 A | 2007-03-08 A |  | 100% |  |  |
| 57 |  | Adopter review | 5d | 2007-03-09 A | 2007-03-15 A | 56 | 100% |  |  |
| 58 |  | Developer update | 1d | 2007-03-16 A | 2007-03-16 A | 57 | 100% |  |  |
| 59 |  | Adopter sign-off | 1d | 2007-03-19 A | 2007-03-19 A | 58 | 100% |  |  |
| 60 | 1.3.2.5 | **Update C3D integration use cases** | 9d | 2007-03-07 | 2007-03-19 |  |  | 160d |  |
| 61 |  | Developer update | 2d | 2007-03-07 | 2007-03-08 |  |  | 120d |  |
| 62 |  | Adopter review | 5d | 2007-03-09 | 2007-03-15 | 61 |  | 120d |  |
| 63 |  | Developer update | 1d | 2007-03-16 | 2007-03-16 | 62 |  | 120d |  |
| 64 |  | Adopter sign-off | 1d | 2007-03-19 | 2007-03-19 | 63 |  | 120d |  |
| 65 | 1.3.3 | **Update requirements document (task 3.2.1, task 5.3.1)** | 9d | 2007-03-20 | 2007-03-30 | 39 |  | 160d |  |
| 66 | 1.3.3.1 | **Update eligibility requirements** | 9d | 2007-03-20 | 2007-03-30 |  |  | 160d |  |
| 67 |  | Developer update | 2d | 2007-03-20 | 2007-03-21 |  |  | 120d |  |
| 68 |  | Adopter review | 5d | 2007-03-22 | 2007-03-28 | 67 |  | 120d |  |
| 69 |  | Developer update | 1d | 2007-03-29 | 2007-03-29 | 68 |  | 120d |  |
| 70 |  | Adopter sign-off | 1d | 2007-03-30 | 2007-03-30 | 69 |  | 120d |  |

| ID | WBS | Task | Duration | Start | Finish | Predecessors | Complete | Total float |
| --- | --- | --- | --- | --- | --- | --- | --- | --- |
| 71 | 1.3.3.2 | **Update study personel requirements** | 9d | 2007-03-20 | 2007-03-30 |  |  | 160d |
| 72 |  | Developer update | 2d | 2007-03-20 | 2007-03-21 |  |  | 120d |
| 73 |  | Adopter review | 5d | 2007-03-22 | 2007-03-28 | 72 |  | 120d |
| 74 |  | Developer update | 1d | 2007-03-29 | 2007-03-29 | 73 |  | 120d |
| 75 |  | Adopter sign-off | 1d | 2007-03-30 | 2007-03-30 | 74 |  | 120d |
| 76 | 1.3.3.3 | **Update registration management requirements** | 9d | 2007-03-20 | 2007-03-30 |  |  | 160d |
| 77 |  | Developer update | 2d | 2007-03-20 | 2007-03-21 |  |  | 120d |
| 78 |  | Adopter review | 5d | 2007-03-22 | 2007-03-28 | 77 |  | 120d |
| 79 |  | Developer update | 1d | 2007-03-29 | 2007-03-29 | 78 |  | 120d |
| 80 |  | Adopter sign-off | 1d | 2007-03-30 | 2007-03-30 | 79 |  | 120d |
| 81 | 1.3.3.4 | **Update multi-site trial requirements** | 9d | 2007-03-20 | 2007-03-30 |  |  | 160d |
| 82 |  | Developer update | 2d | 2007-03-20 | 2007-03-21 |  |  | 120d |
| 83 |  | Adopter review | 5d | 2007-03-22 | 2007-03-28 | 82 |  | 120d |
| 84 |  | Developer update | 1d | 2007-03-29 | 2007-03-29 | 83 |  | 120d |
| 85 |  | Adopter sign-off | 1d | 2007-03-30 | 2007-03-30 | 84 |  | 120d |
| 86 | 1.3.3.5 | **Update C3D integration requirements** | 9d | 2007-03-20 | 2007-03-30 |  |  | 160d |
| 87 |  | Developer update | 2d | 2007-03-20 | 2007-03-21 |  |  | 120d |
| 88 |  | Adopter review | 5d | 2007-03-22 | 2007-03-28 | 87 |  | 120d |
| 89 |  | Developer update | 1d | 2007-03-29 | 2007-03-29 | 88 |  | 120d |
| 90 |  | Adopter sign-off | 1d | 2007-03-30 | 2007-03-30 | 89 |  | 120d |
| 91 |  | Developer deliver use case document to BAH (task 3.1.1, task 5.2.1) | 0d | 2007-03-30 A | 2007-03-30 A | 65 | 100% |  |
| 92 |  | BAH review use case document (task 3.1.1, task 5.2.1) | 10d | 2007-04-02 | 2007-04-13 | 91 |  | 150d |
| 93 |  | Developer deliver requirements document to BAH (task 3.2.1, task 5.3.1) | 0d | 2007-03-30 A | 2007-03-30 A | 65 | 100% |  |
| 94 |  | BAH review requirements document (task 3.2.1, task 5.3.1) | 10d | 2007-04-02 | 2007-04-13 | 93 |  | 150d |
| 95 | 1.4 | **Analysis and Design** | 29d | 2007-03-07 A | 2007-04-16 | 23, 2 | 70% | 149d |
| 96 | 1.4.1 | **Perform level 1 design** | 2d | 2007-03-07 A | 2007-03-08 A |  | 100% |  |
| 97 |  | Cursory BRIDG harmonization | 1d | 2007-03-07 A | 2007-03-07 A |  | 100% |  |
| 98 |  | Update implementation model | 1d | 2007-03-08 A | 2007-03-08 A | 97 | 100% |  |
| 99 |  | Cursory system design | 2d | 2007-03-07 A | 2007-03-08 A |  | 100% |  |
| 100 | 1.4.2 | **Modeling (task 3.3.1)** | 27d | 2007-03-09 A | 2007-04-16 | 96 | 80% | 149d |
| 101 | 1.4.2.1 | **Update model** | 6d | 2007-03-09 A | 2007-03-16 A |  | 100% |  |
| 102 | 1.4.2.1.1 | **BRIDG harmonization** | 3d | 2007-03-09 A | 2007-03-13 A | 96 | 100% |  |
| 103 |  | Harmonize Study model | 2d | 2007-03-09 A | 2007-03-12 A |  | 100% |  |
| 104 |  | Harmonize Personnel model | 3d | 2007-03-09 A | 2007-03-13 A |  | 100% |  |
| 105 |  | Harmonize Multi-site Study model | 3d | 2007-03-09 A | 2007-03-13 A |  | 100% |  |
| 106 | 1.4.2.1.2 | **Model implementation** | 3d | 2007-03-14 A | 2007-03-16 A | 102 | 100% |  |
| 107 |  | Implement Study model | 3d | 2007-03-14 A | 2007-03-16 A |  | 100% |  |
| 108 |  | Implement Personnel model | 3d | 2007-03-14 A | 2007-03-16 A |  | 100% |  |
| 109 |  | Implement Multi-site Study model | 3d | 2007-03-14 A | 2007-03-16 A |  | 100% |  |
| 110 |  | Adopter review | 5d | 2007-03-19 A | 2007-03-23 A | 101 | 100% |  |
| 111 | 1.4.2.3 | **Update model** | 6d | 2007-03-26 A | 2007-04-02 A | 110 | 100% |  |
| 112 | 1.4.2.3.1 | **BRIDG harmonization** | 3d | 2007-03-26 A | 2007-03-28 A | 110 | 100% |  |
| 113 |  | Harmonize Study model | 3d | 2007-03-26 A | 2007-03-28 A |  | 100% |  |
| 114 |  | Harmonize Personnel model | 3d | 2007-03-26 A | 2007-03-28 A |  | 100% |  |
| 115 |  | Harmonize Multi-site Study model | 3d | 2007-03-26 A | 2007-03-28 A |  | 100% |  |
| 116 | 1.4.2.3.2 | **Model implementation** | 3d | 2007-03-29 A | 2007-04-02 A | 112 | 100% |  |
| 117 |  | Implement Study model | 3d | 2007-03-29 A | 2007-04-02 A |  | 100% |  |
| 118 |  | Implement Personnel model | 3d | 2007-03-29 A | 2007-04-02 A |  | 100% |  |
| 119 |  | Implement Multi-site Study model | 3d | 2007-03-29 A | 2007-04-02 A |  | 100% |  |
| 120 |  | Developer deliver UML to BAH (task 3.3.1) | 0d | 2007-04-02 A | 2007-04-02 A | 111 | 100% |  |
| 121 |  | BAH review of UML (task 3.3.1) | 10d | 2007-04-03 | 2007-04-16 | 120 |  | 149d |
| 122 | 1.4.3 | **System design (task 3.4.1)** | 25d | 2007-03-09 A | 2007-04-12 | 96 | 71% | 151d |
| 123 | 1.4.3.1 | **Design eligibility** | 15d | 2007-03-09 A | 2007-03-29 A |  | 100% |  |
| 124 |  | Draft UML | 5d | 2007-03-09 A | 2007-03-15 A |  | 100% |  |
| 125 |  | Team review | 5d | 2007-03-16 A | 2007-03-22 A | 124 | 100% |  |
| 126 |  | Update design document | 5d | 2007-03-23 A | 2007-03-29 A | 125 | 100% |  |
| 127 | 1.4.3.2 | **Design personnel** | 15d | 2007-03-09 A | 2007-03-29 A |  | 100% |  |
| 128 |  | Draft UML | 5d | 2007-03-09 A | 2007-03-15 A |  | 100% |  |
| 129 |  | Team review | 5d | 2007-03-16 A | 2007-03-22 A | 128 | 100% |  |
| 130 |  | Update design document | 5d | 2007-03-23 A | 2007-03-29 A | 129 | 100% |  |
| 131 | 1.4.3.3 | **Design registration management** | 15d | 2007-03-09 A | 2007-03-29 A |  | 100% |  |
| 132 |  | Draft UML | 5d | 2007-03-09 A | 2007-03-15 A |  | 100% |  |
| 133 |  | Team review | 5d | 2007-03-16 A | 2007-03-22 A | 132 | 100% |  |
| 134 |  | Update design document | 5d | 2007-03-23 A | 2007-03-29 A | 133 | 100% |  |
| 135 | 1.4.3.4 | **Design multi-site study** | 15d | 2007-03-09 A | 2007-03-29 A |  | 100% |  |
| 136 |  | Draft UML | 5d | 2007-03-09 A | 2007-03-15 A |  | 100% |  |
| 137 |  | Team review | 5d | 2007-03-16 A | 2007-03-22 A | 136 | 100% |  |
| 138 |  | Update design document | 5d | 2007-03-23 A | 2007-03-29 A | 137 | 100% |  |
| 139 | 1.4.3.5 | **Design C3D integration** | 15d | 2007-03-09 | 2007-03-29 |  |  | 151d |
| 140 |  | Draft UML | 5d | 2007-03-09 | 2007-03-15 |  |  | 144d |

| ID | WBS | Task | Duration | Start | Finish | Predecessors | Complete | Total float |
| --- | --- | --- | --- | --- | --- | --- | --- | --- |
| 141 |  | Team review | 5d | 2007-03-16 | 2007-03-22 | 140 |  | 144d |
| 142 |  | Update design document | 5d | 2007-03-23 | 2007-03-29 | 141 |  | 144d |
| 143 |  | Deliver design doc to BAH (task 3.4.1) | 0d | 2007-03-29 | 2007-03-29 | 139 |  | 151d |
| 144 |  | BAH review design doc (task 3.4.1) | 10d | 2007-03-30 | 2007-04-12 | 143 |  | 151d |
| 145 | 1.4.4 | **Research** | 10d | 2007-03-09 | 2007-03-22 | 96 |  | 166d |
| 146 | 1.4.4.1 | **Investigate C3D integration** | 10d | 2007-03-09 | 2007-03-22 | 96 |  | 166d |
| 147 |  | Review release 1 code | 5d | 2007-03-09 | 2007-03-15 |  |  | 166d |
| 148 |  | Review release 1 security model | 5d | 2007-03-16 | 2007-03-22 | 147 |  | 166d |
| 149 | 1.5 | **Implementation (task 3.5.1)** | 25d | 2007-03-09 A | 2007-04-12 | 96, 2 | 72% | 151d |
| 150 | 1.5.1 | **Database layer** | 6d | 2007-03-09 A | 2007-03-16 A |  | 100% |  |
| 151 | 1.5.1.1 | **Eligibility model** | 4d | 2007-03-09 A | 2007-03-14 A |  | 100% |  |
| 152 |  | Create DDLs | 1d | 2007-03-09 A | 2007-03-09 A |  | 100% |  |
| 153 |  | Apply to database | 1d | 2007-03-12 A | 2007-03-12 A | 152 | 100% |  |
| 154 |  | Create test data | 1d | 2007-03-13 A | 2007-03-13 A | 153 | 100% |  |
| 155 |  | Create data access objects (DAOs) | 1d | 2007-03-14 A | 2007-03-14 A | 154 | 100% |  |
| 156 | 1.5.1.2 | **Study personnel** | 6d | 2007-03-09 A | 2007-03-16 A |  | 100% |  |
| 157 |  | Investigate how to implement Person with Role | 2d | 2007-03-09 A | 2007-03-12 A |  | 100% |  |
| 158 |  | Create DDLs | 1d | 2007-03-13 A | 2007-03-13 A | 157 | 100% |  |
| 159 |  | Apply to database | 1d | 2007-03-14 A | 2007-03-14 A | 158 | 100% |  |
| 160 |  | Create test data | 1d | 2007-03-15 A | 2007-03-15 A | 159 | 100% |  |
| 161 |  | Create data access objects (DAOs) | 1d | 2007-03-16 A | 2007-03-16 A | 160 | 100% |  |
| 162 | 1.5.1.3 | **Multi-site** | 4d | 2007-03-09 A | 2007-03-14 A |  | 100% |  |
| 163 |  | Create DDLs | 1d | 2007-03-09 A | 2007-03-09 A |  | 100% |  |
| 164 |  | Apply to database | 1d | 2007-03-12 A | 2007-03-12 A | 163 | 100% |  |
| 165 |  | Create test data | 1d | 2007-03-13 A | 2007-03-13 A | 164 | 100% |  |
| 166 |  | Create data access objects (DAOs) | 1d | 2007-03-14 A | 2007-03-14 A | 165 | 100% |  |
| 167 |  | Unit testing | 4d | 2007-03-09 A | 2007-03-14 A |  | 100% |  |
| 168 | 1.5.2 | **Deployment** | 2d | 2007-03-15 A | 2007-03-16 A |  | 100% |  |
| 169 |  | Deploy a second C3PR for multi-site testing | 2d | 2007-03-15 A | 2007-03-16 A | 162 | 100% |  |
| 170 | 1.5.3 | **Business layer** | 12d | 2007-03-09 A | 2007-03-26 |  | 63% | 164d |
| 171 | 1.5.3.1 | **Implement eligibility APIs** | 7d | 2007-03-15 A | 2007-03-23 A | 151 | 100% |  |
| 172 |  | Design APIs | 2d | 2007-03-15 A | 2007-03-16 A |  | 100% |  |
| 173 |  | Implement APIs | 3d | 2007-03-19 A | 2007-03-21 A | 172 | 100% |  |
| 174 |  | Deploy APIs | 2d | 2007-03-22 A | 2007-03-23 A | 173 | 100% |  |
| 175 | 1.5.3.2 | **Implement study personnel APIs** | 6d | 2007-03-19 A | 2007-03-26 A | 156 | 100% |  |
| 176 |  | Design APIs | 2d | 2007-03-19 A | 2007-03-20 A |  | 100% |  |
| 177 |  | Implement APIs | 3d | 2007-03-21 A | 2007-03-23 A | 176 | 100% |  |
| 178 |  | Deploy APIs | 1d | 2007-03-26 A | 2007-03-26 A | 177 | 100% |  |
| 179 | 1.5.3.3 | **Implement C3PR registration APIs** | 6d | 2007-03-15 A | 2007-03-22 A | 162 | 100% |  |
| 180 |  | Design APIs | 2d | 2007-03-15 A | 2007-03-16 A |  | 100% |  |
| 181 |  | Implement APIs | 3d | 2007-03-19 A | 2007-03-21 A | 180 | 100% |  |
| 182 |  | Deploy APIs | 1d | 2007-03-22 A | 2007-03-22 A | 181 | 100% |  |
| 183 | 1.5.3.4 | **Business rules** | 5d | 2007-03-09 | 2007-03-15 |  |  | 171d |
| 184 |  | Duplicate registrations | 5d | 2007-03-09 | 2007-03-15 |  |  | 164d |
| 185 |  | Duplicate subjects | 5d | 2007-03-09 | 2007-03-15 |  |  | 141d |
| 186 |  | Duplicate studies | 5d | 2007-03-09 | 2007-03-15 |  |  | 141d |
| 187 |  | Unit testing | 6d | 2007-03-16 A | 2007-03-23 A | 184 | 100% |  |
| 188 | 1.5.4 | **ESB** | 5d | 2007-03-23 A | 2007-03-29 A | 179 | 100% |  |
| 189 |  | Implement inbound-binding component for C3PR registration | 5d | 2007-03-23 A | 2007-03-29 A |  | 100% |  |
| 190 |  | Unit testing | 5d | 2007-03-23 A | 2007-03-29 A |  | 100% |  |
| 191 | 1.5.5 | **Web interface** | 17d | 2007-03-09 A | 2007-04-02 A |  | 100% |  |
| 192 | 1.5.5.1 | **Modify study management interface** | 6d | 2007-03-23 A | 2007-03-30 A |  | 100% |  |
| 193 |  | Manage eligibility criteria | 5d | 2007-03-26 A | 2007-03-30 A | 171 | 100% |  |
| 194 |  | Manage multi-site study | 5d | 2007-03-23 A | 2007-03-29 A | 179 | 100% |  |
| 195 | 1.5.5.2 | **Modify study personnel management interface** | 5d | 2007-03-27 A | 2007-04-02 A |  | 100% |  |
| 196 |  | Manage study personnel | 5d | 2007-03-27 A | 2007-04-02 A | 175 | 100% |  |
| 197 | 1.5.5.3 | **Modify registration interface** | 5d | 2007-03-26 A | 2007-03-30 A |  | 100% |  |
| 198 |  | Check eligibility | 5d | 2007-03-26 A | 2007-03-30 A | 171 | 100% |  |
| 199 | 1.5.5.4 | **Modify registration management interface** | 5d | 2007-03-09 A | 2007-03-15 A |  | 100% |  |
| 200 |  | Manage study subject registration | 5d | 2007-03-09 A | 2007-03-15 A |  | 100% |  |
| 201 |  | Unit testing | 5d | 2007-03-09 A | 2007-03-15 A |  | 100% |  |
| 202 | 1.5.6 | **Installer** | 15d | 2007-03-09 A | 2007-03-29 |  | 33% | 161d |
| 203 |  | Externalize properties | 5d | 2007-03-09 A | 2007-03-15 A |  | 100% |  |
| 204 |  | Apply DDLs via ant | 5d | 2007-03-16 | 2007-03-22 | 203 |  | 131d |
| 205 |  | Make WAR file | 5d | 2007-03-23 | 2007-03-29 | 204 |  | 131d |
| 206 |  | Deliver codebase to BAH (task 3.5.1) | 0d | 2007-03-29 A | 2007-03-29 A | 150, 188, 168 | 100% |  |
| 207 |  | BAH review codebase (task 3.5.1) | 10d | 2007-03-30 | 2007-04-12 | 206 |  | 144d |
| 208 | 1.6 | **Testing** | 30d | 2007-03-01 A | 2007-04-11 | 2 | 57% | 152d |
| 209 | 1.6.1 | **Developer testing** | 30d | 2007-03-01 A | 2007-04-11 |  | 57% | 152d |
| 210 | 1.6.1.1 | **Update developer test plan (task 3.6.1, task 5.4.1)** | 30d | 2007-03-01 A | 2007-04-11 |  | 67% | 152d |

| ID | WBS | Task | Duration | Start | Finish | Predecessors | Complete | Total float | Constraint |
| --- | --- | --- | --- | --- | --- | --- | --- | --- | --- |
| 211 |  | Developer draft | 5d | 2007-03-01 A | 2007-03-07 A |  | 100% |  |  |
| 212 |  | Adopter review | 5d | 2007-03-08 A | 2007-03-14 A | 211 | 100% |  |  |
| 213 |  | Developer update | 5d | 2007-03-15 A | 2007-03-21 A | 212 | 100% |  |  |
| 214 |  | Adopter review and sign | 5d | 2007-03-22 A | 2007-03-28 A | 213 | 100% |  |  |
| 215 |  | Deliver signed test plan to BAH (task 3.6.1, task 5.4.1) | 0d | 2007-03-28 A | 2007-03-28 A | 214 | 100% |  |  |
| 216 |  | BAH review signed test plan (task 3.6.1, task 5.4.1) | 10d | 2007-03-29 | 2007-04-11 | 215 |  | 152d |  |
| 217 | 1.6.1.2 | **Integration and system testing (task 3.8.1)** | 10d | 2007-03-23 A | 2007-04-05 | 211, 206FS-5d | 38% | 156d |  |
| 218 |  | Generate test data | 1d | 2007-03-23 A | 2007-03-23 A |  | 100% |  |  |
| 219 |  | Write tests | 3d | 2007-03-23 A | 2007-03-27 A |  | 100% |  |  |
| 220 |  | Validate tests | 1d | 2007-03-28 A | 2007-03-28 A | 219 | 100% |  |  |
| 221 |  | Generate test report | 1d | 2007-03-29 A | 2007-03-29 A | 220 | 100% |  |  |
| 222 |  | Deliver test report to BAH (task 3.8.1) | 0d | 2007-03-23 A | 2007-03-23 A |  | 100% |  |  |
| 223 |  | BAH review test report (task 3.8.1) | 10d | 2007-03-23 | 2007-04-05 |  |  | 156d |  |
| 224 | 1.6.2 | **Adopter testing** | 30d | 2007-03-01 A | 2007-04-11 |  | 58% | 152d |  |
| 225 | 1.6.2.1 | **Adopter deployment** | 5d | 2007-03-01 | 2007-03-07 |  |  | 177d |  |
| 226 |  | Adopter deployment of previous iteration | 5d | 2007-03-01 | 2007-03-07 |  |  | 177d |  |
| 227 | 1.6.2.2 | **Update adopter test plan (task 5.5.1)** | 30d | 2007-03-01 A | 2007-04-11 |  | 67% | 152d |  |
| 228 |  | Adopter update test script | 5d | 2007-03-01 A | 2007-03-07 A |  | 100% |  |  |
| 229 |  | Adopter update test approach | 5d | 2007-03-08 A | 2007-03-14 A | 228 | 100% |  |  |
| 230 |  | Developer review | 5d | 2007-03-15 A | 2007-03-21 A | 229 | 100% |  |  |
| 231 |  | Adopter update | 5d | 2007-03-22 A | 2007-03-28 A | 230 | 100% |  |  |
| 232 |  | Developer deliver adopter test plan to BAH (task 5.5.1) | 0d | 2007-03-28 A | 2007-03-28 A | 231 | 100% |  |  |
| 233 |  | BAH review adopter test plan (task 5.5.1) | 10d | 2007-03-29 | 2007-04-11 | 232 |  | 152d |  |
| 234 | 1.6.2.3 | **Functional testing (task 5.6.1)** | 22d | 2007-03-08 A | 2007-04-06 | 228 | 58% | 155d |  |
| 235 |  | Adopter create test data | 5d | 2007-03-08 A | 2007-03-14 A |  | 100% |  |  |
| 236 |  | Adopter perform test script | 5d | 2007-03-15 A | 2007-03-21 A | 235 | 100% |  |  |
| 237 |  | Adopter document results | 2d | 2007-03-22 A | 2007-03-23 A | 236 | 100% |  |  |
| 238 |  | Adopter log bugs | 2d | 2007-03-26 A | 2007-03-27 A | 237 | 100% |  |  |
| 239 |  | Developer deliver adopter test report to BAH (task 5.6.1) | 0d | 2007-03-23 A | 2007-03-23 A | 237 | 100% |  |  |
| 240 |  | BAH review adopter test report (task 5.6.1) | 10d | 2007-03-26 | 2007-04-06 | 239 |  | 155d |  |
| 241 | 1.7 | **Documentation** | 15d | 2007-03-23 A | 2007-04-12 | 2 | 26% | 151d |  |
| 242 | 1.7.1 | **Installation guide (task 3.10.1)** | 13d | 2007-03-27 A | 2007-04-12 | 206FS-3d | 23% | 151d |  |
| 243 |  | Update installation guide | 3d | 2007-03-27 A | 2007-03-29 A |  | 100% |  |  |
| 244 |  | Deliver installation guide to BAH (task 3.10.1) | 0d | 2007-03-29 A | 2007-03-29 A | 243 | 100% |  |  |
| 245 |  | BAH review of installation guide (task 3.10.1) | 10d | 2007-03-30 | 2007-04-12 | 244 |  | 151d |  |
| 246 | 1.7.2 | **Administration guide (task 3.13.1)** | 13d | 2007-03-27 A | 2007-04-12 | 206FS-3d | 23% | 151d |  |
| 247 |  | Update administration guide | 3d | 2007-03-27 A | 2007-03-29 A |  | 100% |  |  |
| 248 |  | Deliver administration guide to BAH (task 3.13.1) | 0d | 2007-03-29 A | 2007-03-29 A | 247 | 100% |  |  |
| 249 |  | BAH review of administration guide (task 3.13.1) | 10d | 2007-03-30 | 2007-04-12 | 248 |  | 151d |  |
| 250 | 1.7.3 | **Release notes (task 3.14.1)** | 13d | 2007-03-27 A | 2007-04-12 | 206FS-3d | 23% | 151d |  |
| 251 |  | Update release notes | 3d | 2007-03-27 A | 2007-03-29 A |  | 100% |  |  |
| 252 |  | Deliver release notes to BAH (task 3.14.1) | 0d | 2007-03-29 A | 2007-03-29 A | 251 | 100% |  |  |
| 253 |  | BAH review of release notes (task 3.14.1) | 10d | 2007-03-30 | 2007-04-12 | 252 |  | 151d |  |
| 254 | 1.7.4 | **Adopter summary of C3PR (task 5.1.1)** | 15d | 2007-03-23 A | 2007-04-12 | 206FS-5d | 33% | 151d |  |
| 255 |  | Adopter update summary | 3d | 2007-03-23 A | 2007-03-27 A |  | 100% |  |  |
| 256 |  | Developer review summary | 1d | 2007-03-28 A | 2007-03-28 A | 255 | 100% |  |  |
| 257 |  | Adopter update summary | 1d | 2007-03-29 A | 2007-03-29 A | 256 | 100% |  |  |
| 258 |  | Developer deliver C3PR summary to BAH (task 5.1.1) | 0d | 2007-03-29 A | 2007-03-29 A | 257 | 100% |  |  |
| 259 |  | BAH review of C3PR summary (task 5.1.1) | 10d | 2007-03-30 | 2007-04-12 | 258 |  | 151d |  |
| 260 | 1.8 | **Support** | 22d | 2007-03-01 A | 2007-03-30 A | 2 | 100% |  |  |
| 261 |  | Adopter support | 22d | 2007-03-01 A | 2007-03-30 A |  | 100% |  |  |
| 262 |  | Bug fixing | 22d | 2007-03-01 A | 2007-03-30 A |  | 100% |  |  |
| 263 | 1.9 | **Demonstration** | 0d | 2007-04-09 | 2007-04-09 | 2 |  | 155d |  |
| 264 |  | Demonstrate latest features to BAH | 0d | 2007-04-09 | 2007-04-09 | 2 |  | 155d | start no earlier than 2007-04-09 |
| 265 | 2 | **Iteration 2 (eligibility, study personnel/security, C3D integration, multi-site study)** | 35d | 2007-04-02 | 2007-05-18 |  |  | 125d |  |
| 266 |  | Iteration start | 0d | 2007-04-02 | 2007-04-02 |  |  | 125d | start no earlier than 2007-04-02 |
| 267 | 2.2 | **Project Management** | 30d | 2007-04-02 | 2007-05-11 | 266 |  | 130d |  |
| 268 | 2.2.1 | **Draft project plan (task 1.1)** | 30d | 2007-04-02 | 2007-05-11 |  |  | 130d |  |
| 269 |  | Developer draft | 5d | 2007-04-02 | 2007-04-06 |  |  | 130d |  |
| 270 |  | BAH review | 5d | 2007-04-09 | 2007-04-13 | 269 |  | 130d |  |
| 271 |  | Developer update | 5d | 2007-04-16 | 2007-04-20 | 270 |  | 130d |  |
| 272 |  | Adopter review | 3d | 2007-04-23 | 2007-04-25 | 271 |  | 130d |  |
| 273 |  | Developer update | 2d | 2007-04-26 | 2007-04-27 | 272 |  | 130d |  |
| 274 |  | Deliver project plan to BAH (task 1.1) | 0d | 2007-04-27 | 2007-04-27 | 273 |  | 130d |  |
| 275 |  | BAH review project plan (task 1.1) | 10d | 2007-04-30 | 2007-05-11 | 274 |  | 130d |  |
| 276 | 2.2.2 | **Update risk matrix (task 1.4.2)** | 20d | 2007-04-02 | 2007-04-27 |  |  | 130d |  |
| 277 |  | Update risk matrix for week 1 | 5d | 2007-04-02 | 2007-04-06 |  |  | 130d |  |
| 278 |  | Update risk matrix for week 2 | 5d | 2007-04-09 | 2007-04-13 | 277 |  | 130d |  |
| 279 |  | Deliver risk matrix to BAH (task 1.4.2) | 0d | 2007-04-13 | 2007-04-13 | 278 |  | 130d |  |
| 280 |  | BAH review risk matrix (task 1.4.2) | 10d | 2007-04-16 | 2007-04-27 | 279 |  | 140d |  |

| ID | WBS | Task | Duration | Start | Finish | Predecessors | Total float |
| --- | --- | --- | --- | --- | --- | --- | --- |
| 281 | 2.2.3 | **Monthly report (task 1.3.2)** | 20d | 2007-04-16 | 2007-05-11 | 279 | 130d |
| 282 |  | Update risk matrix for week 3 | 5d | 2007-04-16 | 2007-04-20 |  | 130d |
| 283 |  | Update risk matrix for week 4 | 5d | 2007-04-23 | 2007-04-27 | 282 | 130d |
| 284 |  | Deliver monthly report and risk matrix to BAH (task 1.3.2) | 0d | 2007-04-27 | 2007-04-27 | 283 | 130d |
| 285 |  | BAH review monthly report and risk matrix (task 1.3.2) | 10d | 2007-04-30 | 2007-05-11 | 284 | 130d |
| 286 | 2.3 | **Requirements and use cases** | 32d | 2007-04-02 | 2007-05-15 | 266 | 125d |
| 287 | 2.3.1 | **Create level 1 use cases and requirements** | 4d | 2007-04-02 | 2007-04-05 |  | 125d |
| 288 | 2.3.1.1 | **Level 1 use cases for eligibility** | 2d | 2007-04-02 | 2007-04-03 |  | 127d |
| 289 |  | Use case document (task 3.1.1) | 1d | 2007-04-02 | 2007-04-02 |  | 127d |
| 290 |  | Requirements document (3.2.1) | 1d | 2007-04-03 | 2007-04-03 | 289 | 127d |
| 291 | 2.3.1.2 | **Level 1 use cases for study personnel** | 2d | 2007-04-02 | 2007-04-03 |  | 127d |
| 292 |  | Use case document (task 3.1.1) | 1d | 2007-04-02 | 2007-04-02 |  | 127d |
| 293 |  | Requirements document (3.2.1) | 1d | 2007-04-03 | 2007-04-03 | 292 | 127d |
| 294 | 2.3.1.3 | **Level 1 use cases for registration management** | 2d | 2007-04-02 | 2007-04-03 |  | 127d |
| 295 |  | Use case document (task 3.1.1) | 1d | 2007-04-02 | 2007-04-02 |  | 127d |
| 296 |  | Requirements document (3.2.1) | 1d | 2007-04-03 | 2007-04-03 | 295 | 127d |
| 297 | 2.3.1.4 | **Level 1 use cases for multi-site study** | 4d | 2007-04-02 | 2007-04-05 |  | 125d |
| 298 |  | Use case document (task 3.1.1) | 2d | 2007-04-02 | 2007-04-03 |  | 125d |
| 299 |  | Requirements document (3.2.1) | 2d | 2007-04-04 | 2007-04-05 | 298 | 125d |
| 300 | 2.3.1.5 | **Level 1 use cases for C3D integration** | 2d | 2007-04-02 | 2007-04-03 |  | 127d |
| 301 |  | Use case document (task 3.1.1) | 1d | 2007-04-02 | 2007-04-02 |  | 127d |
| 302 |  | Requirements document (3.2.1) | 1d | 2007-04-03 | 2007-04-03 | 301 | 127d |
| 303 | 2.3.2 | **Update use case document (task 3.1.2, task 5.2.2)** | 9d | 2007-04-06 | 2007-04-18 | 287 | 128d |
| 304 | 2.3.2.1 | **Update eligibility use cases** | 9d | 2007-04-06 | 2007-04-18 |  | 128d |
| 305 |  | Developer update | 2d | 2007-04-06 | 2007-04-09 |  | 128d |
| 306 |  | Adopter review | 5d | 2007-04-10 | 2007-04-16 | 305 | 128d |
| 307 |  | Developer update | 1d | 2007-04-17 | 2007-04-17 | 306 | 128d |
| 308 |  | Adopter sign-off | 1d | 2007-04-18 | 2007-04-18 | 307 | 128d |
| 309 | 2.3.2.2 | **Update study personnel use cases** | 9d | 2007-04-06 | 2007-04-18 |  | 128d |
| 310 |  | Developer update | 2d | 2007-04-06 | 2007-04-09 |  | 128d |
| 311 |  | Adopter review | 5d | 2007-04-10 | 2007-04-16 | 310 | 128d |
| 312 |  | Developer update | 1d | 2007-04-17 | 2007-04-17 | 311 | 128d |
| 313 |  | Adopter sign-off | 1d | 2007-04-18 | 2007-04-18 | 312 | 128d |
| 314 | 2.3.2.3 | **Update registration management use cases** | 9d | 2007-04-06 | 2007-04-18 |  | 128d |
| 315 |  | Developer update | 2d | 2007-04-06 | 2007-04-09 |  | 128d |
| 316 |  | Adopter review | 5d | 2007-04-10 | 2007-04-16 | 315 | 128d |
| 317 |  | Developer update | 1d | 2007-04-17 | 2007-04-17 | 316 | 128d |
| 318 |  | Adopter sign-off | 1d | 2007-04-18 | 2007-04-18 | 317 | 128d |
| 319 | 2.3.2.4 | **Update multi-site trial use cases** | 9d | 2007-04-06 | 2007-04-18 |  | 128d |
| 320 |  | Developer update | 2d | 2007-04-06 | 2007-04-09 |  | 128d |
| 321 |  | Adopter review | 5d | 2007-04-10 | 2007-04-16 | 320 | 128d |
| 322 |  | Developer update | 1d | 2007-04-17 | 2007-04-17 | 321 | 128d |
| 323 |  | Adopter sign-off | 1d | 2007-04-18 | 2007-04-18 | 322 | 128d |
| 324 | 2.3.2.5 | **Update C3D integration use cases** | 9d | 2007-04-06 | 2007-04-18 |  | 128d |
| 325 |  | Developer update | 2d | 2007-04-06 | 2007-04-09 |  | 128d |
| 326 |  | Adopter review | 5d | 2007-04-10 | 2007-04-16 | 325 | 128d |
| 327 |  | Developer update | 1d | 2007-04-17 | 2007-04-17 | 326 | 128d |
| 328 |  | Adopter sign-off | 1d | 2007-04-18 | 2007-04-18 | 327 | 128d |
| 329 | 2.3.3 | **Update requirements document (task 3.2.2, task 5.3.2)** | 9d | 2007-04-19 | 2007-05-01 | 303 | 128d |
| 330 | 2.3.3.1 | **Update eligibility requirements** | 9d | 2007-04-19 | 2007-05-01 |  | 128d |
| 331 |  | Developer update | 2d | 2007-04-19 | 2007-04-20 |  | 128d |
| 332 |  | Adopter review | 5d | 2007-04-23 | 2007-04-27 | 331 | 128d |
| 333 |  | Developer update | 1d | 2007-04-30 | 2007-04-30 | 332 | 128d |
| 334 |  | Adopter sign-off | 1d | 2007-05-01 | 2007-05-01 | 333 | 128d |
| 335 | 2.3.3.2 | **Update study personel requirements** | 9d | 2007-04-19 | 2007-05-01 |  | 128d |
| 336 |  | Developer update | 2d | 2007-04-19 | 2007-04-20 |  | 128d |
| 337 |  | Adopter review | 5d | 2007-04-23 | 2007-04-27 | 336 | 128d |
| 338 |  | Developer update | 1d | 2007-04-30 | 2007-04-30 | 337 | 128d |
| 339 |  | Adopter sign-off | 1d | 2007-05-01 | 2007-05-01 | 338 | 128d |
| 340 | 2.3.3.3 | **Update registration management requirements** | 9d | 2007-04-19 | 2007-05-01 |  | 128d |
| 341 |  | Developer update | 2d | 2007-04-19 | 2007-04-20 |  | 128d |
| 342 |  | Adopter review | 5d | 2007-04-23 | 2007-04-27 | 341 | 128d |
| 343 |  | Developer update | 1d | 2007-04-30 | 2007-04-30 | 342 | 128d |
| 344 |  | Adopter sign-off | 1d | 2007-05-01 | 2007-05-01 | 343 | 128d |
| 345 | 2.3.3.4 | **Update multi-site trial requirements** | 9d | 2007-04-19 | 2007-05-01 |  | 128d |
| 346 |  | Developer update | 2d | 2007-04-19 | 2007-04-20 |  | 128d |
| 347 |  | Adopter review | 5d | 2007-04-23 | 2007-04-27 | 346 | 128d |
| 348 |  | Developer update | 1d | 2007-04-30 | 2007-04-30 | 347 | 128d |
| 349 |  | Adopter sign-off | 1d | 2007-05-01 | 2007-05-01 | 348 | 128d |
| 350 | 2.3.3.5 | **Update C3D integration requirements** | 9d | 2007-04-19 | 2007-05-01 |  | 128d |

| ID | WBS | Task | Duration | Start | Finish | Predecessors | Total float |
| --- | --- | --- | --- | --- | --- | --- | --- |
| 351 |  | Developer update | 2d | 2007-04-19 | 2007-04-20 |  | 128d |
| 352 |  | Adopter review | 5d | 2007-04-23 | 2007-04-27 | 351 | 128d |
| 353 |  | Developer update | 1d | 2007-04-30 | 2007-04-30 | 352 | 128d |
| 354 |  | Adopter sign-off | 1d | 2007-05-01 | 2007-05-01 | 353 | 128d |
| 355 |  | Developer deliver use case document to BAH (task 3.1.2, task 5.2.2) | 0d | 2007-05-01 | 2007-05-01 | 329 | 128d |
| 356 |  | BAH review use case document (task 3.1.2, task 5.2.2) | 10d | 2007-05-02 | 2007-05-15 | 355 | 128d |
| 357 |  | Developer deliver requirements document to BAH (task 3.2.2, task 5.3.2) | 0d | 2007-05-01 | 2007-05-01 | 329 | 128d |
| 358 |  | BAH review requirements document (task 3.2.2, task 5.3.2) | 10d | 2007-05-02 | 2007-05-15 | 357 | 128d |
| 359 | 2.4 | **Analysis and Design** | 31d | 2007-04-06 | 2007-05-18 | 287, 266 | 125d |
| 360 | 2.4.1 | **Perform level 1 design** | 4d | 2007-04-06 | 2007-04-11 |  | 125d |
| 361 |  | Cursory BRIDG harmonization | 1d | 2007-04-06 | 2007-04-06 |  | 125d |
| 362 |  | Update implementation model | 1d | 2007-04-09 | 2007-04-09 | 361 | 125d |
| 363 |  | Cursory system design | 2d | 2007-04-10 | 2007-04-11 | 362 | 125d |
| 364 | 2.4.2 | **Modeling (task 3.3.2)** | 27d | 2007-04-12 | 2007-05-18 | 360 | 125d |
| 365 | 2.4.2.1 | **Update model** | 6d | 2007-04-12 | 2007-04-19 |  | 125d |
| 366 | 2.4.2.1.1 | **BRIDG harmonization** | 3d | 2007-04-12 | 2007-04-16 | 360 | 125d |
| 367 |  | Harmonize Study model | 2d | 2007-04-12 | 2007-04-13 |  | 126d |
| 368 |  | Harmonize Personnel model | 3d | 2007-04-12 | 2007-04-16 |  | 125d |
| 369 |  | Harmonize Multi-site Study model | 3d | 2007-04-12 | 2007-04-16 |  | 125d |
| 370 | 2.4.2.1.2 | **Model implementation** | 3d | 2007-04-17 | 2007-04-19 | 366 | 125d |
| 371 |  | Implement Study model | 2d | 2007-04-17 | 2007-04-18 |  | 126d |
| 372 |  | Implement Personnel model | 3d | 2007-04-17 | 2007-04-19 |  | 125d |
| 373 |  | Implement Multi-site Study model | 3d | 2007-04-17 | 2007-04-19 |  | 125d |
| 374 |  | Adopter review | 5d | 2007-04-20 | 2007-04-26 | 365 | 125d |
| 375 | 2.4.2.3 | **Update model** | 6d | 2007-04-27 | 2007-05-04 | 374 | 125d |
| 376 | 2.4.2.3.1 | **BRIDG harmonization** | 3d | 2007-04-27 | 2007-05-01 | 374 | 125d |
| 377 |  | Harmonize Study model | 3d | 2007-04-27 | 2007-05-01 |  | 125d |
| 378 |  | Harmonize Personnel model | 3d | 2007-04-27 | 2007-05-01 |  | 125d |
| 379 |  | Harmonize Multi-site Study model | 3d | 2007-04-27 | 2007-05-01 |  | 125d |
| 380 | 2.4.2.3.2 | **Model implementation** | 3d | 2007-05-02 | 2007-05-04 | 376, 379 | 125d |
| 381 |  | Implement Study model | 3d | 2007-05-02 | 2007-05-04 |  | 125d |
| 382 |  | Implement Personnel model | 3d | 2007-05-02 | 2007-05-04 |  | 125d |
| 383 |  | Implement Multi-site Study model | 3d | 2007-05-02 | 2007-05-04 |  | 125d |
| 384 |  | Developer deliver UML to BAH (task 3.3.2) | 0d | 2007-05-04 | 2007-05-04 | 375, 383 | 125d |
| 385 |  | BAH review of UML (task 3.3.2) | 10d | 2007-05-07 | 2007-05-18 | 384 | 125d |
| 386 | 2.4.3 | **System design (task 3.4.2)** | 25d | 2007-04-12 | 2007-05-16 | 360 | 127d |
| 387 | 2.4.3.1 | **Design eligibility** | 15d | 2007-04-12 | 2007-05-02 |  | 127d |
| 388 |  | Draft UML | 5d | 2007-04-12 | 2007-04-18 |  | 127d |
| 389 |  | Team review | 5d | 2007-04-19 | 2007-04-25 | 388 | 127d |
| 390 |  | Update design document | 5d | 2007-04-26 | 2007-05-02 | 389 | 127d |
| 391 | 2.4.3.2 | **Design personnel** | 15d | 2007-04-12 | 2007-05-02 |  | 127d |
| 392 |  | Draft UML | 5d | 2007-04-12 | 2007-04-18 |  | 127d |
| 393 |  | Team review | 5d | 2007-04-19 | 2007-04-25 | 392 | 127d |
| 394 |  | Update design document | 5d | 2007-04-26 | 2007-05-02 | 393 | 127d |
| 395 | 2.4.3.3 | **Design registration management** | 15d | 2007-04-12 | 2007-05-02 |  | 127d |
| 396 |  | Draft UML | 5d | 2007-04-12 | 2007-04-18 |  | 127d |
| 397 |  | Team review | 5d | 2007-04-19 | 2007-04-25 | 396 | 127d |
| 398 |  | Update design document | 5d | 2007-04-26 | 2007-05-02 | 397 | 127d |
| 399 | 2.4.3.4 | **Design multi-site study** | 15d | 2007-04-12 | 2007-05-02 |  | 127d |
| 400 |  | Draft UML | 5d | 2007-04-12 | 2007-04-18 |  | 127d |
| 401 |  | Team review | 5d | 2007-04-19 | 2007-04-25 | 400 | 127d |
| 402 |  | Update design document | 5d | 2007-04-26 | 2007-05-02 | 401 | 127d |
| 403 | 2.4.3.5 | **Design C3D integration** | 15d | 2007-04-12 | 2007-05-02 |  | 127d |
| 404 |  | Draft UML | 5d | 2007-04-12 | 2007-04-18 |  | 127d |
| 405 |  | Team review | 5d | 2007-04-19 | 2007-04-25 | 404 | 127d |
| 406 |  | Update design document | 5d | 2007-04-26 | 2007-05-02 | 405 | 127d |
| 407 |  | Deliver design doc to BAH (task 3.4.2) | 0d | 2007-05-02 | 2007-05-02 | 387, 391, 395, 399, 403 | 127d |
| 408 |  | BAH review design doc (task 3.4.2) | 10d | 2007-05-03 | 2007-05-16 | 407 | 127d |
| 409 | 2.4.4 | **Research** | 5d | 2007-04-06 | 2007-04-12 |  | 151d |
| 410 | 2.4.4.1 | **Investigate C3D integration** | 5d | 2007-04-06 | 2007-04-12 |  | 151d |
| 411 |  | Investigate C3D SSO versus CTMSi SSO | 5d | 2007-04-06 | 2007-04-12 |  | 151d |
| 412 | 2.5 | **Implementation (task 3.5.2)** | 25d | 2007-04-12 | 2007-05-16 | 360, 266 | 126d |
| 413 | 2.5.1 | **Database** | 3d | 2007-04-12 | 2007-04-16 |  | 126d |
| 414 | 2.5.1.1 | **Eligibility model** | 3d | 2007-04-12 | 2007-04-16 |  | 126d |
| 415 |  | Update DDLs | 1d | 2007-04-12 | 2007-04-12 |  | 126d |
| 416 |  | Apply to database | 1d | 2007-04-13 | 2007-04-13 | 415 | 126d |
| 417 |  | Create test data | 1d | 2007-04-16 | 2007-04-16 | 416 | 126d |
| 418 | 2.5.1.2 | **Study personnel** | 3d | 2007-04-12 | 2007-04-16 |  | 127d |
| 419 |  | Update DDLs | 1d | 2007-04-12 | 2007-04-12 |  | 127d |
| 420 |  | Apply to database | 1d | 2007-04-13 | 2007-04-13 | 419 | 127d |

| ID | WBS | Task | Duration | Start | Finish | Predecessors | Total float |
| --- | --- | --- | --- | --- | --- | --- | --- |
| 421 |  | Create test data | 1d | 2007-04-16 | 2007-04-16 | 420 | 127d |
| 422 | 2.5.1.3 | **Multi-site** | 3d | 2007-04-12 | 2007-04-16 |  | 127d |
| 423 |  | Update DDLs | 1d | 2007-04-12 | 2007-04-12 |  | 127d |
| 424 |  | Apply to database | 1d | 2007-04-13 | 2007-04-13 | 423 | 127d |
| 425 |  | Create test data | 1d | 2007-04-16 | 2007-04-16 | 424 | 127d |
| 426 | 2.5.2 | **Business layer** | 10d | 2007-04-17 | 2007-04-30 |  | 126d |
| 427 | 2.5.2.1 | **Implement eligibility APIs** | 7d | 2007-04-17 | 2007-04-25 | 414 | 126d |
| 428 |  | Update APIs | 2d | 2007-04-17 | 2007-04-18 |  | 126d |
| 429 |  | Implement APIs | 3d | 2007-04-19 | 2007-04-23 | 428 | 126d |
| 430 |  | Deploy APIs | 2d | 2007-04-24 | 2007-04-25 | 429 | 126d |
| 431 | 2.5.2.2 | **Implement study personnel APIs** | 6d | 2007-04-17 | 2007-04-24 | 418 | 127d |
| 432 |  | Update APIs | 2d | 2007-04-17 | 2007-04-18 |  | 127d |
| 433 |  | Implement APIs | 3d | 2007-04-19 | 2007-04-23 | 432 | 127d |
| 434 |  | Deploy APIs | 1d | 2007-04-24 | 2007-04-24 | 433 | 127d |
| 435 | 2.5.2.3 | **Implement C3PR registration APIs** | 6d | 2007-04-17 | 2007-04-24 | 422 | 127d |
| 436 |  | Update APIs | 2d | 2007-04-17 | 2007-04-18 |  | 127d |
| 437 |  | Implement APIs | 3d | 2007-04-19 | 2007-04-23 | 436 | 127d |
| 438 |  | Deploy APIs | 1d | 2007-04-24 | 2007-04-24 | 437 | 127d |
| 439 | 2.5.2.4 | **Implement import eligibility** | 10d | 2007-04-17 | 2007-04-30 | 414 | 139d |
| 440 |  | Import eligibility from a file | 5d | 2007-04-17 | 2007-04-23 |  | 139d |
| 441 |  | Import eligibility from the caDSR | 5d | 2007-04-24 | 2007-04-30 | 440 | 139d |
| 442 | 2.5.3 | **ESB** | 5d | 2007-04-17 | 2007-04-23 | 413 | 144d |
| 443 |  | Implement binding components for C3D | 5d | 2007-04-17 | 2007-04-23 |  | 144d |
| 444 | 2.5.4 | **Security** | 5d | 2007-04-12 | 2007-04-18 |  | 147d |
| 445 |  | Connect C3PR roles to GridGrouper groups | 5d | 2007-04-12 | 2007-04-18 |  | 147d |
| 446 |  | Hook groups into authorization | 5d | 2007-04-12 | 2007-04-18 |  | 147d |
| 447 | 2.5.5 | **Web interface** | 15d | 2007-04-12 | 2007-05-02 |  | 126d |
| 448 | 2.5.5.1 | **Modify study management interface** | 6d | 2007-04-25 | 2007-05-02 |  | 126d |
| 449 |  | Manage eligibility criteria | 5d | 2007-04-26 | 2007-05-02 | 427 | 126d |
| 450 |  | Manage multi-site study | 5d | 2007-04-25 | 2007-05-01 | 435 | 127d |
| 451 | 2.5.5.2 | **Modify study personnel management interface** | 5d | 2007-04-25 | 2007-05-01 |  | 127d |
| 452 |  | Manage study personnel | 5d | 2007-04-25 | 2007-05-01 | 431 | 127d |
| 453 | 2.5.5.3 | **Modify registration interface** | 5d | 2007-04-26 | 2007-05-02 |  | 126d |
| 454 |  | Check eligibility | 5d | 2007-04-26 | 2007-05-02 | 427 | 126d |
| 455 | 2.5.5.4 | **Modify registration management interface** | 5d | 2007-04-12 | 2007-04-18 |  | 136d |
| 456 |  | Manage study subject registration | 5d | 2007-04-12 | 2007-04-18 |  | 136d |
| 457 |  | Deliver codebase to BAH (task 3.5.2) | 0d | 2007-05-02 | 2007-05-02 | 413, 447, 454 | 126d |
| 458 |  | BAH review codebase (task 3.5.2) | 10d | 2007-05-03 | 2007-05-16 | 457 | 127d |
| 459 | 2.6 | **Testing** | 34d | 2007-04-02 | 2007-05-17 | 266 | 126d |
| 460 | 2.6.1 | **Developer testing** | 34d | 2007-04-02 | 2007-05-17 |  | 126d |
| 461 | 2.6.1.1 | **Update developer test plan (task 3.6.2, task 5.4.2)** | 30d | 2007-04-02 | 2007-05-11 |  | 130d |
| 462 |  | Developer draft | 5d | 2007-04-02 | 2007-04-06 |  | 130d |
| 463 |  | Adopter review | 5d | 2007-04-09 | 2007-04-13 | 462 | 130d |
| 464 |  | Developer update | 5d | 2007-04-16 | 2007-04-20 | 463 | 130d |
| 465 |  | Adopter review and sign | 5d | 2007-04-23 | 2007-04-27 | 464 | 130d |
| 466 |  | Deliver signed test plan to BAH (task 3.6.2, task 5.4.2) | 0d | 2007-04-27 | 2007-04-27 | 465 | 130d |
| 467 |  | BAH review signed test plan (task 3.6.2, task 5.4.2) | 10d | 2007-04-30 | 2007-05-11 | 466 | 130d |
| 468 | 2.6.1.2 | **Integration and system testing (task 3.8.2)** | 16d | 2007-04-26 | 2007-05-17 | 457FS-5d | 126d |
| 469 |  | Generate test data | 1d | 2007-04-26 | 2007-04-26 |  | 126d |
| 470 |  | Write tests | 3d | 2007-04-27 | 2007-05-01 | 469 | 126d |
| 471 |  | Validate tests | 1d | 2007-05-02 | 2007-05-02 | 470 | 126d |
| 472 |  | Generate test report | 1d | 2007-05-03 | 2007-05-03 | 471 | 126d |
| 473 |  | Deliver test report to BAH (task 3.8.2) | 0d | 2007-05-03 | 2007-05-03 | 472 | 126d |
| 474 |  | BAH review test report (task 3.8.2) | 10d | 2007-05-04 | 2007-05-17 | 473 | 126d |
| 475 | 2.6.2 | **Adopter testing** | 30d | 2007-04-02 | 2007-05-11 |  | 130d |
| 476 | 2.6.2.1 | **Adopter deployment** | 5d | 2007-04-02 | 2007-04-06 |  | 155d |
| 477 |  | Adopter deployment of previous iteration | 5d | 2007-04-02 | 2007-04-06 |  | 155d |
| 478 | 2.6.2.2 | **Update adopter test plan (task 5.5.1)** | 30d | 2007-04-02 | 2007-05-11 |  | 130d |
| 479 |  | Adopter update test script | 5d | 2007-04-02 | 2007-04-06 |  | 130d |
| 480 |  | Adopter update test approach | 5d | 2007-04-09 | 2007-04-13 | 479 | 130d |
| 481 |  | Developer review | 5d | 2007-04-16 | 2007-04-20 | 480 | 130d |
| 482 |  | Adopter update | 5d | 2007-04-23 | 2007-04-27 | 481 | 130d |
| 483 |  | Developer deliver adopter test plan to BAH (task 5.5.1) | 0d | 2007-04-27 | 2007-04-27 | 482 | 130d |
| 484 |  | BAH review adopter test plan (task 5.5.1) | 10d | 2007-04-30 | 2007-05-11 | 483 | 130d |
| 485 | 2.6.2.3 | **QA testing (task 5.6.1)** | 24d | 2007-04-09 | 2007-05-10 | 479 | 131d |
| 486 |  | Adopter create test data | 5d | 2007-04-09 | 2007-04-13 |  | 131d |
| 487 |  | Adopter perform test script | 5d | 2007-04-16 | 2007-04-20 | 486 | 131d |
| 488 |  | Adopter document results | 2d | 2007-04-23 | 2007-04-24 | 487 | 131d |
| 489 |  | Adopter log bugs | 2d | 2007-04-25 | 2007-04-26 | 488 | 131d |
| 490 |  | Developer deliver adopter test report to BAH (task 5.6.1) | 0d | 2007-04-26 | 2007-04-26 | 488, 489 | 131d |

| ID | WBS | Task | Duration | Start | Finish | Predecessors | Total float | Constraint |
| --- | --- | --- | --- | --- | --- | --- | --- | --- |
| 491 |  | BAH review adopter test report (task 5.6.1) | 10d | 2007-04-27 | 2007-05-10 | 490 | 131d |  |
| 492 | 2.7 | **Documentation** | 15d | 2007-04-26 | 2007-05-16 | 266 | 127d |  |
| 493 | 2.7.1 | **Installation guide (task 3.10.2)** | 13d | 2007-04-30 | 2007-05-16 | 457FS-3d | 127d |  |
| 494 |  | Update installation guide | 3d | 2007-04-30 | 2007-05-02 |  | 127d |  |
| 495 |  | Deliver installation guide to BAH (task 3.10.2) | 0d | 2007-05-02 | 2007-05-02 | 494 | 127d |  |
| 496 |  | BAH review of installation guide (task 3.10.2) | 10d | 2007-05-03 | 2007-05-16 | 495 | 127d |  |
| 497 | 2.7.2 | **Administration guide (task 3.13.2)** | 13d | 2007-04-30 | 2007-05-16 | 457FS-3d | 127d |  |
| 498 |  | Update administration guide | 3d | 2007-04-30 | 2007-05-02 |  | 127d |  |
| 499 |  | Deliver administration guide to BAH (task 3.13.2) | 0d | 2007-05-02 | 2007-05-02 | 498 | 127d |  |
| 500 |  | BAH review of administration guide (task 3.13.2) | 10d | 2007-05-03 | 2007-05-16 | 499 | 127d |  |
| 501 | 2.7.3 | **Release notes (task 3.14.2)** | 13d | 2007-04-30 | 2007-05-16 | 457FS-3d | 127d |  |
| 502 |  | Update release notes | 3d | 2007-04-30 | 2007-05-02 |  | 127d |  |
| 503 |  | Deliver release notes to BAH (task 3.14.2) | 0d | 2007-05-02 | 2007-05-02 | 502 | 127d |  |
| 504 |  | BAH review of release notes (task 3.14.2) | 10d | 2007-05-03 | 2007-05-16 | 503 | 127d |  |
| 505 | 2.7.4 | **Adopter summary of C3PR (task 5.1.2)** | 15d | 2007-04-26 | 2007-05-16 | 457FS-5d | 127d |  |
| 506 |  | Adopter update summary | 3d | 2007-04-26 | 2007-04-30 |  | 127d |  |
| 507 |  | Developer review summary | 1d | 2007-05-01 | 2007-05-01 | 506 | 127d |  |
| 508 |  | Adopter update summary | 1d | 2007-05-02 | 2007-05-02 | 507 | 127d |  |
| 509 |  | Developer deliver C3PR summary to BAH (task 5.1.2) | 0d | 2007-05-02 | 2007-05-02 | 508 | 127d |  |
| 510 |  | BAH review of C3PR summary (task 5.1.2) | 10d | 2007-05-03 | 2007-05-16 | 509 | 127d |  |
| 511 | 2.8 | **Demonstration** | 0d | 2007-05-14 | 2007-05-14 | 266 | 130d |  |
| 512 |  | Demonstrate latest features to BAH | 0d | 2007-05-14 | 2007-05-14 | 266 | 130d | start no earlier than 2007-05-14 |
| 513 |  | Demonstrate to the larger community | 0d | 2007-05-14 | 2007-05-14 | 266 | 130d | start no earlier than 2007-05-14 |
| 514 | 2.9 | **Touchpoints** | 22d | 2007-04-02 | 2007-05-01 | 266 | 138d |  |
| 515 |  | Adopter review of deliverables | 22d | 2007-04-02 | 2007-05-01 |  | 138d |  |
| 516 |  | Adopter deployment of previous iteration codebase | 22d | 2007-04-02 | 2007-05-01 |  | 138d |  |
| 517 | 3 | **Iteration 3 (stratification, security, enrollment. multi-site study, study ammendments)** | 28d | 2007-05-02 | 2007-06-11 |  | 110d |  |
| 518 |  | Iteration start | 0d | 2007-05-02 | 2007-05-02 |  | 116d | start no earlier than 2007-05-02 |
| 519 | 3.2 | **Project management** | 22d | 2007-05-02 | 2007-05-31 | 518 | 116d |  |
| 520 |  | Update project plan | 22d | 2007-05-02 | 2007-05-31 |  | 116d |  |
| 521 |  | Update risk matrix | 22d | 2007-05-02 | 2007-05-31 |  | 116d |  |
| 522 |  | Monthly report | 22d | 2007-05-02 | 2007-05-31 |  | 116d |  |
| 523 | 3.3 | **Requirements and use cases** | 22d | 2007-05-02 | 2007-05-31 | 518 | 116d |  |
| 524 |  | Create level 1 use cases and requirements | 22d | 2007-05-02 | 2007-05-31 |  | 116d |  |
| 525 |  | Update use case document | 22d | 2007-05-02 | 2007-05-31 |  | 116d |  |
| 526 |  | Update requirements document | 22d | 2007-05-02 | 2007-05-31 |  | 116d |  |
| 527 | 3.4 | **Analysis and Design** | 22d | 2007-05-02 | 2007-05-31 | 518 | 116d |  |
| 528 |  | Perform level 1 design | 22d | 2007-05-02 | 2007-05-31 |  | 116d |  |
| 529 |  | Modeling | 22d | 2007-05-02 | 2007-05-31 |  | 116d |  |
| 530 |  | Systems design | 22d | 2007-05-02 | 2007-05-31 |  | 116d |  |
| 531 | 3.5 | **Implementation** | 22d | 2007-05-02 | 2007-05-31 | 518 | 116d |  |
| 532 | 3.5.1 | **Stratification** | 22d | 2007-05-02 | 2007-05-31 |  | 116d |  |
| 533 |  | First pass at stratification implementation | 22d | 2007-05-02 | 2007-05-31 |  | 116d |  |
| 534 | 3.5.2 | **Security** | 22d | 2007-05-02 | 2007-05-31 |  | 116d |  |
| 535 |  | Complete security implementation | 22d | 2007-05-02 | 2007-05-31 |  | 116d |  |
| 536 | 3.5.3 | **Enrollment** | 22d | 2007-05-02 | 2007-05-31 |  | 116d |  |
| 537 | 3.5.3.1 | **Enrollment details** | 22d | 2007-05-02 | 2007-05-31 |  | 116d |  |
| 538 |  | Treating MD | 22d | 2007-05-02 | 2007-05-31 |  | 116d |  |
| 539 |  | Disease | 22d | 2007-05-02 | 2007-05-31 |  | 116d |  |
| 540 |  | Compassionate | 22d | 2007-05-02 | 2007-05-31 |  | 116d |  |
| 541 | 3.5.3.2 | **Enrollment business rules** | 22d | 2007-05-02 | 2007-05-31 |  | 116d |  |
| 542 |  | Accrual ceilings | 22d | 2007-05-02 | 2007-05-31 |  | 116d |  |
| 543 |  | Notifications | 22d | 2007-05-02 | 2007-05-31 |  | 116d |  |
| 544 | 3.5.4 | **Multi-site study** | 22d | 2007-05-02 | 2007-05-31 |  | 116d |  |
| 545 |  | Complete multi-site study implementation | 22d | 2007-05-02 | 2007-05-31 |  | 116d |  |
| 546 | 3.5.5 | **Registration management** | 22d | 2007-05-02 | 2007-05-31 |  | 116d |  |
| 547 |  | Off study | 22d | 2007-05-02 | 2007-05-31 |  | 116d |  |
| 548 | 3.5.6 | **Study ammendments** | 22d | 2007-05-02 | 2007-05-31 |  | 116d |  |
| 549 |  | Change model, harmonize | 22d | 2007-05-02 | 2007-05-31 |  | 116d |  |
| 550 |  | Implement business rules | 22d | 2007-05-02 | 2007-05-31 |  | 116d |  |
| 551 | 3.6 | **Testing** | 22d | 2007-05-02 | 2007-05-31 | 518 | 116d |  |
| 552 |  | Developer testing | 22d | 2007-05-02 | 2007-05-31 |  | 116d |  |
| 553 |  | Adopter testing | 22d | 2007-05-02 | 2007-05-31 |  | 116d |  |
| 554 | 3.7 | **Documentation** | 22d | 2007-05-02 | 2007-05-31 | 518 | 116d |  |
| 555 |  | Installation guide | 22d | 2007-05-02 | 2007-05-31 |  | 116d |  |
| 556 |  | Administration guide | 22d | 2007-05-02 | 2007-05-31 |  | 116d |  |
| 557 |  | Release notes | 22d | 2007-05-02 | 2007-05-31 |  | 116d |  |
| 558 |  | Adopter summary of C3PR | 22d | 2007-05-02 | 2007-05-31 |  | 116d |  |
| 559 | 3.8 | **Support** | 22d | 2007-05-02 | 2007-05-31 | 518 | 116d |  |
| 560 |  | Adopter support | 22d | 2007-05-02 | 2007-05-31 |  | 116d |  |

| ID | WBS | Task | Duration | Start | Finish | Predecessors | Total float | Constraint |
| --- | --- | --- | --- | --- | --- | --- | --- | --- |
| 561 |  | Bug fixing | 22d | 2007-05-02 | 2007-05-31 |  | 116d |  |
| 562 | 3.9 | **Touchpoints** | 22d | 2007-05-02 | 2007-05-31 | 518 | 116d |  |
| 563 |  | Adopter review of deliverables | 22d | 2007-05-02 | 2007-05-31 |  | 116d |  |
| 564 |  | Adopter deployment of previous iteration codebase | 22d | 2007-05-02 | 2007-05-31 |  | 116d |  |
| 565 |  | Contact mentors to review deliverables | 22d | 2007-05-02 | 2007-05-31 |  | 116d |  |
| 566 | 3.10 | **Deliverables** | 22d | 2007-05-02 | 2007-05-31 | 518 | 116d |  |
| 567 |  | Risk matrix 1.4.x | 22d | 2007-05-02 | 2007-05-31 |  | 116d |  |
| 568 |  | Monthly report and risk matrix 1.3.x | 22d | 2007-05-02 | 2007-05-31 |  | 116d |  |
| 569 |  | Use case document (3.1.x) | 22d | 2007-05-02 | 2007-05-31 |  | 116d |  |
| 570 |  | Requirements document (3.2.x) | 22d | 2007-05-02 | 2007-05-31 |  | 116d |  |
| 571 |  | UML (3.3.x) | 22d | 2007-05-02 | 2007-05-31 |  | 116d |  |
| 572 |  | Design document (3.4.x) | 22d | 2007-05-02 | 2007-05-31 |  | 116d |  |
| 573 |  | Codebase (3.5.x) | 22d | 2007-05-02 | 2007-05-31 |  | 116d |  |
| 574 |  | Test plan (3.6.x, 5.4.x) | 22d | 2007-05-02 | 2007-05-31 |  | 116d |  |
| 575 |  | Test report (3.8.x) | 22d | 2007-05-02 | 2007-05-31 |  | 116d |  |
| 576 |  | Adopter test plan (5.5.x) | 22d | 2007-05-02 | 2007-05-31 |  | 116d |  |
| 577 |  | Adopter test report (5.6.x) | 22d | 2007-05-02 | 2007-05-31 |  | 116d |  |
| 578 |  | Installation guide (3.10.x) | 22d | 2007-05-02 | 2007-05-31 |  | 116d |  |
| 579 |  | Administration guide (3.13.x) | 22d | 2007-05-02 | 2007-05-31 |  | 116d |  |
| 580 |  | Release notes (3.14.x) | 22d | 2007-05-02 | 2007-05-31 |  | 116d |  |
| 581 |  | Adopter summary of C3PR (5.1.x) | 22d | 2007-05-02 | 2007-05-31 |  | 116d |  |
| 582 | 3.11 | **Demonstration** | 0d | 2007-06-11 | 2007-06-11 | 518 | 110d |  |
| 583 |  | Demonstrate latest features to BAH | 0d | 2007-06-11 | 2007-06-11 | 518 | 110d | start no earlier than 2007-06-11 |
| 584 | 4 | **Iteration 4 (stratification, enrollment, randomization, reporting, legacy systems)** | 26d | 2007-06-01 | 2007-07-09 |  | 90d |  |
| 585 |  | Iteration start | 0d | 2007-06-01 | 2007-06-01 |  | 95d | start no earlier than 2007-06-01 |
| 586 | 4.2 | **Project management** | 21d | 2007-06-01 | 2007-06-29 | 585 | 95d |  |
| 587 |  | Update project plan | 21d | 2007-06-01 | 2007-06-29 |  | 95d |  |
| 588 |  | Update risk matrix | 21d | 2007-06-01 | 2007-06-29 |  | 95d |  |
| 589 |  | Monthly report | 21d | 2007-06-01 | 2007-06-29 |  | 95d |  |
| 590 | 4.3 | **Requirements and use cases** | 21d | 2007-06-01 | 2007-06-29 | 585 | 95d |  |
| 591 |  | Create level 1 use cases and requirements | 21d | 2007-06-01 | 2007-06-29 |  | 95d |  |
| 592 |  | Update use case document | 21d | 2007-06-01 | 2007-06-29 |  | 95d |  |
| 593 |  | Update requirements document | 21d | 2007-06-01 | 2007-06-29 |  | 95d |  |
| 594 | 4.4 | **Analysis and Design** | 21d | 2007-06-01 | 2007-06-29 | 585 | 95d |  |
| 595 |  | Perform level 1 design | 21d | 2007-06-01 | 2007-06-29 |  | 95d |  |
| 596 |  | Modeling | 21d | 2007-06-01 | 2007-06-29 |  | 95d |  |
| 597 |  | Systems design | 21d | 2007-06-01 | 2007-06-29 |  | 95d |  |
| 598 | 4.5 | **Implementation** | 21d | 2007-06-01 | 2007-06-29 | 585 | 95d |  |
| 599 | 4.5.1 | **Stratification** | 21d | 2007-06-01 | 2007-06-29 |  | 95d |  |
| 600 |  | Finalize stratification implementation | 21d | 2007-06-01 | 2007-06-29 |  | 95d |  |
| 601 | 4.5.2 | **Enrollment** | 21d | 2007-06-01 | 2007-06-29 |  | 95d |  |
| 602 | 4.5.2.1 | **Enrollment details** | 21d | 2007-06-01 | 2007-06-29 |  | 95d |  |
| 603 |  | Finalize enrollment details | 21d | 2007-06-01 | 2007-06-29 |  | 95d |  |
| 604 | 4.5.2.2 | **Enrollment business rules** | 21d | 2007-06-01 | 2007-06-29 |  | 95d |  |
| 605 |  | Finalize enrollment business rules | 21d | 2007-06-01 | 2007-06-29 |  | 95d |  |
| 606 | 4.5.3 | **Randomization** | 21d | 2007-06-01 | 2007-06-29 |  | 95d |  |
| 607 |  | Begin interfacing with Randomization Hub | 21d | 2007-06-01 | 2007-06-29 |  | 95d |  |
| 608 |  | Randomization book | 21d | 2007-06-01 | 2007-06-29 |  | 95d |  |
| 609 | 4.5.4 | **Reporting** | 21d | 2007-06-01 | 2007-06-29 |  | 95d |  |
| 610 |  | Reporting interface | 21d | 2007-06-01 | 2007-06-29 |  | 95d |  |
| 611 | 4.5.5 | **Legacy systems** | 21d | 2007-06-01 | 2007-06-29 |  | 95d |  |
| 612 |  | Investigate legacy systems at Adopter sites | 21d | 2007-06-01 | 2007-06-29 |  | 95d |  |
| 613 |  | Investigate support of legacy systems (APIs, files, etc.) | 21d | 2007-06-01 | 2007-06-29 |  | 95d |  |
| 614 | 4.6 | **Testing** | 21d | 2007-06-01 | 2007-06-29 | 585 | 95d |  |
| 615 |  | Developer testing | 21d | 2007-06-01 | 2007-06-29 |  | 95d |  |
| 616 |  | Adopter testing | 21d | 2007-06-01 | 2007-06-29 |  | 95d |  |
| 617 | 4.7 | **Documentation** | 21d | 2007-06-01 | 2007-06-29 | 585 | 95d |  |
| 618 |  | Installation guide | 21d | 2007-06-01 | 2007-06-29 |  | 95d |  |
| 619 |  | Administration guide | 21d | 2007-06-01 | 2007-06-29 |  | 95d |  |
| 620 |  | Release notes | 21d | 2007-06-01 | 2007-06-29 |  | 95d |  |
| 621 |  | Adopter summary of C3PR | 21d | 2007-06-01 | 2007-06-29 |  | 95d |  |
| 622 | 4.8 | **Support** | 21d | 2007-06-01 | 2007-06-29 | 585 | 95d |  |
| 623 |  | Adopter support | 21d | 2007-06-01 | 2007-06-29 |  | 95d |  |
| 624 |  | Bug fixing | 21d | 2007-06-01 | 2007-06-29 |  | 95d |  |
| 625 | 4.9 | **Touchpoints** | 21d | 2007-06-01 | 2007-06-29 | 585 | 95d |  |
| 626 |  | Adopter review of deliverables | 21d | 2007-06-01 | 2007-06-29 |  | 95d |  |
| 627 |  | Adopter deployment of previous iteration codebase | 21d | 2007-06-01 | 2007-06-29 |  | 95d |  |
| 628 |  | Complete mentor review of deliverables | 21d | 2007-06-01 | 2007-06-29 |  | 95d |  |
| 629 | 4.10 | **Deliverables** | 21d | 2007-06-01 | 2007-06-29 | 585 | 95d |  |
| 630 |  | Risk matrix 1.4.x | 21d | 2007-06-01 | 2007-06-29 |  | 95d |  |

| ID | WBS | Task | Duration | Start | Finish | Predecessors | Total float | Constraint |
| --- | --- | --- | --- | --- | --- | --- | --- | --- |
| 631 |  | Monthly report and risk matrix 1.3.x | 21d | 2007-06-01 | 2007-06-29 |  | 95d |  |
| 632 |  | Use case document (3.1.x) | 21d | 2007-06-01 | 2007-06-29 |  | 95d |  |
| 633 |  | Requirements document (3.2.x) | 21d | 2007-06-01 | 2007-06-29 |  | 95d |  |
| 634 |  | UML (3.3.x) | 21d | 2007-06-01 | 2007-06-29 |  | 95d |  |
| 635 |  | Design document (3.4.x) | 21d | 2007-06-01 | 2007-06-29 |  | 95d |  |
| 636 |  | Codebase (3.5.x) | 21d | 2007-06-01 | 2007-06-29 |  | 95d |  |
| 637 |  | Test plan (3.6.x, 5.4.x) | 21d | 2007-06-01 | 2007-06-29 |  | 95d |  |
| 638 |  | Test report (3.8.x) | 21d | 2007-06-01 | 2007-06-29 |  | 95d |  |
| 639 |  | Adopter test plan (5.5.x) | 21d | 2007-06-01 | 2007-06-29 |  | 95d |  |
| 640 |  | Adopter test report (5.6.x) | 21d | 2007-06-01 | 2007-06-29 |  | 95d |  |
| 641 |  | Installation guide (3.10.x) | 21d | 2007-06-01 | 2007-06-29 |  | 95d |  |
| 642 |  | Administration guide (3.13.x) | 21d | 2007-06-01 | 2007-06-29 |  | 95d |  |
| 643 |  | Release notes (3.14.x) | 21d | 2007-06-01 | 2007-06-29 |  | 95d |  |
| 644 |  | Adopter summary of C3PR (5.1.x) | 21d | 2007-06-01 | 2007-06-29 |  | 95d |  |
| 645 | 4.11 | **Demonstration** | 0d | 2007-07-09 | 2007-07-09 | 585 | 90d |  |
| 646 |  | Demonstrate latest features to BAH | 0d | 2007-07-09 | 2007-07-09 | 585 | 90d | start no earlier than 2007-07-09 |
| 647 |  | Demonstrate to the larger community | 0d | 2007-07-09 | 2007-07-09 | 585 | 90d | start no earlier than 2007-07-09 |
| 648 | 5 | **Iteration 5 (randomization, reporting, legacy systems, semantic integration, BRIDG)** | 30d | 2007-07-02 | 2007-08-13 |  | 65d |  |
| 649 |  | Iteration start | 0d | 2007-07-02 | 2007-07-02 |  | 73d | start no earlier than 2007-07-02 |
| 650 | 5.2 | **Project management** | 22d | 2007-07-02 | 2007-07-31 | 649 | 73d |  |
| 651 |  | Update project plan | 22d | 2007-07-02 | 2007-07-31 |  | 73d |  |
| 652 |  | Update risk matrix | 22d | 2007-07-02 | 2007-07-31 |  | 73d |  |
| 653 |  | Monthly report | 22d | 2007-07-02 | 2007-07-31 |  | 73d |  |
| 654 | 5.3 | **Requirements and use cases** | 22d | 2007-07-02 | 2007-07-31 | 649 | 73d |  |
| 655 |  | Create level 1 use cases and requirements | 22d | 2007-07-02 | 2007-07-31 |  | 73d |  |
| 656 |  | Update use case document | 22d | 2007-07-02 | 2007-07-31 |  | 73d |  |
| 657 |  | Update requirements document | 22d | 2007-07-02 | 2007-07-31 |  | 73d |  |
| 658 | 5.4 | **Analysis and Design** | 22d | 2007-07-02 | 2007-07-31 | 649 | 73d |  |
| 659 |  | Perform level 1 design | 22d | 2007-07-02 | 2007-07-31 |  | 73d |  |
| 660 |  | Modeling | 22d | 2007-07-02 | 2007-07-31 |  | 73d |  |
| 661 |  | Systems design | 22d | 2007-07-02 | 2007-07-31 |  | 73d |  |
| 662 | 5.5 | **Implementation** | 22d | 2007-07-02 | 2007-07-31 |  | 73d |  |
| 663 | 5.5.1 | **Randomization** | 22d | 2007-07-02 | 2007-07-31 | 649 | 73d |  |
| 664 |  | Randomization email | 22d | 2007-07-02 | 2007-07-31 |  | 73d |  |
| 665 | 5.5.2 | **Reporting** | 22d | 2007-07-02 | 2007-07-31 | 649 | 73d |  |
| 666 |  | Storing reports | 22d | 2007-07-02 | 2007-07-31 |  | 73d |  |
| 667 | 5.5.3 | **Legacy systems** | 22d | 2007-07-02 | 2007-07-31 | 649 | 73d |  |
| 668 |  | Implement legacy support for adopters | 22d | 2007-07-02 | 2007-07-31 |  | 73d |  |
| 669 |  | Implement generic support for legacy systems | 22d | 2007-07-02 | 2007-07-31 |  | 73d |  |
| 670 | 5.6 | **Testing** | 22d | 2007-07-02 | 2007-07-31 | 649 | 73d |  |
| 671 |  | Developer testing | 22d | 2007-07-02 | 2007-07-31 |  | 73d |  |
| 672 |  | Adopter testing | 22d | 2007-07-02 | 2007-07-31 |  | 73d |  |
| 673 | 5.7 | **Documentation** | 22d | 2007-07-02 | 2007-07-31 | 649 | 73d |  |
| 674 |  | Installation guide | 22d | 2007-07-02 | 2007-07-31 |  | 73d |  |
| 675 |  | Administration guide | 22d | 2007-07-02 | 2007-07-31 |  | 73d |  |
| 676 |  | Release notes | 22d | 2007-07-02 | 2007-07-31 |  | 73d |  |
| 677 |  | Adopter summary of C3PR | 22d | 2007-07-02 | 2007-07-31 |  | 73d |  |
| 678 | 5.8 | **Support** | 22d | 2007-07-02 | 2007-07-31 | 649 | 73d |  |
| 679 |  | Adopter support | 22d | 2007-07-02 | 2007-07-31 |  | 73d |  |
| 680 |  | Bug fixing | 22d | 2007-07-02 | 2007-07-31 |  | 73d |  |
| 681 | 5.9 | **Touchpoints** | 22d | 2007-07-02 | 2007-07-31 | 649 | 73d |  |
| 682 |  | Adopter review of deliverables | 22d | 2007-07-02 | 2007-07-31 |  | 73d |  |
| 683 |  | Adopter deployment of previous iteration codebase | 22d | 2007-07-02 | 2007-07-31 |  | 73d |  |
| 684 |  | Begin semantic integration with the caDSR and EVS | 22d | 2007-07-02 | 2007-07-31 |  | 73d |  |
| 685 |  | Begin BRIDG review | 22d | 2007-07-02 | 2007-07-31 | 649 | 73d |  |
| 686 | 5.10 | **Deliverables** | 22d | 2007-07-02 | 2007-07-31 | 649 | 73d |  |
| 687 |  | Risk matrix 1.4.x | 22d | 2007-07-02 | 2007-07-31 |  | 73d |  |
| 688 |  | Monthly report and risk matrix 1.3.x | 22d | 2007-07-02 | 2007-07-31 |  | 73d |  |
| 689 |  | Use case document (3.1.x) | 22d | 2007-07-02 | 2007-07-31 |  | 73d |  |
| 690 |  | Requirements document (3.2.x) | 22d | 2007-07-02 | 2007-07-31 |  | 73d |  |
| 691 |  | UML (3.3.x) | 22d | 2007-07-02 | 2007-07-31 |  | 73d |  |
| 692 |  | Design document (3.4.x) | 22d | 2007-07-02 | 2007-07-31 |  | 73d |  |
| 693 |  | Codebase (3.5.x) | 22d | 2007-07-02 | 2007-07-31 |  | 73d |  |
| 694 |  | Test plan (3.6.x, 5.4.x) | 22d | 2007-07-02 | 2007-07-31 |  | 73d |  |
| 695 |  | Test report (3.8.x) | 22d | 2007-07-02 | 2007-07-31 |  | 73d |  |
| 696 |  | Adopter test plan (5.5.x) | 22d | 2007-07-02 | 2007-07-31 |  | 73d |  |
| 697 |  | Adopter test report (5.6.x) | 22d | 2007-07-02 | 2007-07-31 |  | 73d |  |
| 698 |  | Installation guide (3.10.x) | 22d | 2007-07-02 | 2007-07-31 |  | 73d |  |
| 699 |  | Administration guide (3.13.x) | 22d | 2007-07-02 | 2007-07-31 |  | 73d |  |
| 700 |  | Release notes (3.14.x) | 22d | 2007-07-02 | 2007-07-31 |  | 73d |  |

| ID | WBS | Task | Duration | Start | Finish | Predecessors | Total float | Constraint |
| --- | --- | --- | --- | --- | --- | --- | --- | --- |
| 701 |  | Adopter summary of C3PR (5.1.x) | 22d | 2007-07-02 | 2007-07-31 |  | 73d |  |
| 702 | 5.11 | **Demonstration** | 0d | 2007-08-13 | 2007-08-13 | 649 | 65d |  |
| 703 |  | Demonstrate latest features to BAH | 0d | 2007-08-13 | 2007-08-13 | 649 | 65d | start no earlier than 2007-08-13 |
| 704 | 6 | **Iteration 6 (randomization, reporting, legacy systems, semantic integration, BRIDG)** | 28d | 2007-08-01 | 2007-09-10 |  | 45d |  |
| 705 |  | Iteration start | 0d | 2007-08-01 | 2007-08-01 |  | 50d | start no earlier than 2007-08-01 |
| 706 | 6.2 | **Project management** | 23d | 2007-08-01 | 2007-08-31 | 705 | 50d |  |
| 707 |  | Update project plan | 23d | 2007-08-01 | 2007-08-31 |  | 50d |  |
| 708 |  | Update risk matrix | 23d | 2007-08-01 | 2007-08-31 |  | 50d |  |
| 709 |  | Monthly report | 23d | 2007-08-01 | 2007-08-31 |  | 50d |  |
| 710 | 6.3 | **Requirements and use cases** | 23d | 2007-08-01 | 2007-08-31 | 705 | 50d |  |
| 711 |  | Create level 1 use cases and requirements | 23d | 2007-08-01 | 2007-08-31 |  | 50d |  |
| 712 |  | Update use case document | 23d | 2007-08-01 | 2007-08-31 |  | 50d |  |
| 713 |  | Update requirements document | 23d | 2007-08-01 | 2007-08-31 |  | 50d |  |
| 714 | 6.4 | **Analysis and Design** | 23d | 2007-08-01 | 2007-08-31 | 705 | 50d |  |
| 715 |  | Perform level 1 design | 23d | 2007-08-01 | 2007-08-31 |  | 50d |  |
| 716 |  | Modeling | 23d | 2007-08-01 | 2007-08-31 |  | 50d |  |
| 717 |  | Systems design | 23d | 2007-08-01 | 2007-08-31 |  | 50d |  |
| 718 | 6.5 | **Implementation** | 23d | 2007-08-01 | 2007-08-31 | 705 | 50d |  |
| 719 | 6.5.1 | **Randomization** | 23d | 2007-08-01 | 2007-08-31 |  | 50d |  |
| 720 |  | Randomization call-out | 23d | 2007-08-01 | 2007-08-31 |  | 50d |  |
| 721 | 6.5.2 | **Reporting** | 23d | 2007-08-01 | 2007-08-31 |  | 50d |  |
| 722 |  | Finalize reporting | 23d | 2007-08-01 | 2007-08-31 |  | 50d |  |
| 723 | 6.5.3 | **Legacy systems** | 23d | 2007-08-01 | 2007-08-31 |  | 50d |  |
| 724 |  | Finalize legacy systems | 23d | 2007-08-01 | 2007-08-31 |  | 50d |  |
| 725 | 6.6 | **Testing** | 23d | 2007-08-01 | 2007-08-31 | 705 | 50d |  |
| 726 |  | Developer testing | 23d | 2007-08-01 | 2007-08-31 |  | 50d |  |
| 727 |  | Adopter testing | 23d | 2007-08-01 | 2007-08-31 |  | 50d |  |
| 728 | 6.7 | **Documentation** | 23d | 2007-08-01 | 2007-08-31 | 705 | 50d |  |
| 729 |  | Installation guide | 23d | 2007-08-01 | 2007-08-31 |  | 50d |  |
| 730 |  | Administration guide | 23d | 2007-08-01 | 2007-08-31 |  | 50d |  |
| 731 |  | Release notes | 23d | 2007-08-01 | 2007-08-31 |  | 50d |  |
| 732 |  | Adopter summary of C3PR | 23d | 2007-08-01 | 2007-08-31 |  | 50d |  |
| 733 | 6.8 | **Support** | 23d | 2007-08-01 | 2007-08-31 | 705 | 50d |  |
| 734 |  | Adopter support | 23d | 2007-08-01 | 2007-08-31 |  | 50d |  |
| 735 |  | Bug fixing | 23d | 2007-08-01 | 2007-08-31 |  | 50d |  |
| 736 | 6.9 | **Touchpoints** | 23d | 2007-08-01 | 2007-08-31 | 705 | 50d |  |
| 737 |  | Adopter review of deliverables | 23d | 2007-08-01 | 2007-08-31 |  | 50d |  |
| 738 |  | Adopter deployment of previous iteration codebase | 23d | 2007-08-01 | 2007-08-31 |  | 50d |  |
| 739 |  | Complete semantic integration with the caDSR and EVS | 23d | 2007-08-01 | 2007-08-31 |  | 50d |  |
| 740 |  | Complete BRIDG review | 23d | 2007-08-01 | 2007-08-31 |  | 50d |  |
| 741 | 6.10 | **Deliverables** | 23d | 2007-08-01 | 2007-08-31 | 705 | 50d |  |
| 742 |  | Risk matrix 1.4.x | 23d | 2007-08-01 | 2007-08-31 |  | 50d |  |
| 743 |  | Monthly report and risk matrix 1.3.x | 23d | 2007-08-01 | 2007-08-31 |  | 50d |  |
| 744 |  | Use case document (3.1.x) | 23d | 2007-08-01 | 2007-08-31 |  | 50d |  |
| 745 |  | Requirements document (3.2.x) | 23d | 2007-08-01 | 2007-08-31 |  | 50d |  |
| 746 |  | UML (3.3.x) | 23d | 2007-08-01 | 2007-08-31 |  | 50d |  |
| 747 |  | Design document (3.4.x) | 23d | 2007-08-01 | 2007-08-31 |  | 50d |  |
| 748 |  | Codebase (3.5.x) | 23d | 2007-08-01 | 2007-08-31 |  | 50d |  |
| 749 |  | Test plan (3.6.x, 5.4.x) | 23d | 2007-08-01 | 2007-08-31 |  | 50d |  |
| 750 |  | Test report (3.8.x) | 23d | 2007-08-01 | 2007-08-31 |  | 50d |  |
| 751 |  | Adopter test plan (5.5.x) | 23d | 2007-08-01 | 2007-08-31 |  | 50d |  |
| 752 |  | Adopter test report (5.6.x) | 23d | 2007-08-01 | 2007-08-31 |  | 50d |  |
| 753 |  | Installation guide (3.10.x) | 23d | 2007-08-01 | 2007-08-31 |  | 50d |  |
| 754 |  | Administration guide (3.13.x) | 23d | 2007-08-01 | 2007-08-31 |  | 50d |  |
| 755 |  | Release notes (3.14.x) | 23d | 2007-08-01 | 2007-08-31 |  | 50d |  |
| 756 |  | Adopter summary of C3PR (5.1.x) | 23d | 2007-08-01 | 2007-08-31 |  | 50d |  |
| 757 | 6.11 | **Demonstration** | 0d | 2007-09-10 | 2007-09-10 | 705 | 45d |  |
| 758 |  | Demonstrate latest features to BAH | 0d | 2007-09-10 | 2007-09-10 | 705 | 45d | start no earlier than 2007-09-10 |
| 759 |  | Demonstrate to the larger community | 0d | 2007-09-10 | 2007-09-10 | 758 | 45d |  |
| 760 | 7 | **Iteration 7 (installer, silver review)** | 25d | 2007-09-03 | 2007-10-08 |  | 25d |  |
| 761 |  | Iteration start | 0d | 2007-09-03 | 2007-09-03 |  | 30d | start no earlier than 2007-09-03 |
| 762 | 7.2 | **Project management** | 20d | 2007-09-03 | 2007-09-28 | 761 | 30d |  |
| 763 |  | Update project plan | 20d | 2007-09-03 | 2007-09-28 |  | 30d |  |
| 764 |  | Update risk matrix | 20d | 2007-09-03 | 2007-09-28 |  | 30d |  |
| 765 |  | Monthly report | 20d | 2007-09-03 | 2007-09-28 |  | 30d |  |
| 766 | 7.3 | **Requirements and use cases** | 10d | 2007-09-03 | 2007-09-14 | 761 | 40d |  |
| 767 |  | Create level 1 use cases and requirements | 10d | 2007-09-03 | 2007-09-14 |  | 40d |  |
| 768 |  | Update use case document | 10d | 2007-09-03 | 2007-09-14 |  | 40d |  |
| 769 |  | Update requirements document | 10d | 2007-09-03 | 2007-09-14 |  | 40d |  |
| 770 | 7.4 | **Analysis and Design** | 10d | 2007-09-03 | 2007-09-14 | 761 | 40d |  |

| ID | WBS | Task | Duration | Start | Finish | Predecessors | Total float | Constraint |
| --- | --- | --- | --- | --- | --- | --- | --- | --- |
| 771 |  | Perform level 1 design | 10d | 2007-09-03 | 2007-09-14 |  | 40d |  |
| 772 |  | Modeling | 10d | 2007-09-03 | 2007-09-14 |  | 40d |  |
| 773 |  | Systems design | 10d | 2007-09-03 | 2007-09-14 |  | 40d |  |
| 774 |  | Implementation | 10d | 2007-09-03 | 2007-09-14 | 761 | 40d |  |
| 775 | 7.6 | **Testing** | 20d | 2007-09-03 | 2007-09-28 | 761 | 30d |  |
| 776 |  | Developer testing | 20d | 2007-09-03 | 2007-09-28 |  | 30d |  |
| 777 |  | Adopter testing | 20d | 2007-09-03 | 2007-09-28 |  | 30d |  |
| 778 | 7.7 | **Documentation** | 20d | 2007-09-03 | 2007-09-28 | 761 | 30d |  |
| 779 |  | Installation guide | 20d | 2007-09-03 | 2007-09-28 |  | 30d |  |
| 780 |  | Administration guide | 20d | 2007-09-03 | 2007-09-28 |  | 30d |  |
| 781 |  | Release notes | 20d | 2007-09-03 | 2007-09-28 |  | 30d |  |
| 782 |  | Adopter summary of C3PR | 20d | 2007-09-03 | 2007-09-28 |  | 30d |  |
| 783 | 7.8 | **Support** | 20d | 2007-09-03 | 2007-09-28 | 761 | 30d |  |
| 784 |  | Adopter support | 20d | 2007-09-03 | 2007-09-28 |  | 30d |  |
| 785 |  | Bug fixing | 20d | 2007-09-03 | 2007-09-28 |  | 30d |  |
| 786 | 7.9 | **Touchpoints** | 20d | 2007-09-03 | 2007-09-28 | 761 | 30d |  |
| 787 |  | Adopter review of deliverables | 20d | 2007-09-03 | 2007-09-28 |  | 30d |  |
| 788 |  | Adopter deployment of previous iteration codebase | 20d | 2007-09-03 | 2007-09-28 |  | 30d |  |
| 789 |  | Begin silver review | 20d | 2007-09-03 | 2007-09-28 |  | 30d |  |
| 790 | 7.10 | **Deliverables** | 20d | 2007-09-03 | 2007-09-28 | 761 | 30d |  |
| 791 |  | Risk matrix 1.4.x | 20d | 2007-09-03 | 2007-09-28 |  | 30d |  |
| 792 |  | Monthly report and risk matrix 1.3.x | 20d | 2007-09-03 | 2007-09-28 |  | 30d |  |
| 793 |  | Use case document (3.1.x) | 20d | 2007-09-03 | 2007-09-28 |  | 30d |  |
| 794 |  | Requirements document (3.2.x) | 20d | 2007-09-03 | 2007-09-28 |  | 30d |  |
| 795 |  | UML (3.3.x) | 20d | 2007-09-03 | 2007-09-28 |  | 30d |  |
| 796 |  | Design document (3.4.x) | 20d | 2007-09-03 | 2007-09-28 |  | 30d |  |
| 797 |  | Codebase (3.5.x) | 20d | 2007-09-03 | 2007-09-28 |  | 30d |  |
| 798 |  | Test plan (3.6.x, 5.4.x) | 20d | 2007-09-03 | 2007-09-28 |  | 30d |  |
| 799 |  | Test report (3.8.x) | 20d | 2007-09-03 | 2007-09-28 |  | 30d |  |
| 800 |  | Adopter test plan (5.5.x) | 20d | 2007-09-03 | 2007-09-28 |  | 30d |  |
| 801 |  | Adopter test report (5.6.x) | 20d | 2007-09-03 | 2007-09-28 |  | 30d |  |
| 802 |  | Installation guide (3.10.x) | 20d | 2007-09-03 | 2007-09-28 |  | 30d |  |
| 803 |  | Administration guide (3.13.x) | 20d | 2007-09-03 | 2007-09-28 |  | 30d |  |
| 804 |  | Release notes (3.14.x) | 20d | 2007-09-03 | 2007-09-28 |  | 30d |  |
| 805 |  | Adopter summary of C3PR (5.1.x) | 20d | 2007-09-03 | 2007-09-28 |  | 30d |  |
| 806 | 7.11 | **Demonstration** | 0d | 2007-10-08 | 2007-10-08 | 761 | 25d |  |
| 807 |  | Demonstrate latest features to BAH | 0d | 2007-10-08 | 2007-10-08 | 761 | 25d | start no earlier than 2007-10-08 |
| 808 | 8 | **Iteration 8 (silver review)** | 30d | 2007-10-01 | 2007-11-12 |  | 0d |  |
| 809 |  | Iteration start | 0d | 2007-10-01 | 2007-10-01 |  | 7d | start no earlier than 2007-10-01 |
| 810 | 8.2 | **Project management** | 23d | 2007-10-01 | 2007-10-31 | 809 | 7d |  |
| 811 |  | Update project plan | 23d | 2007-10-01 | 2007-10-31 |  | 7d |  |
| 812 |  | Update risk matrix | 23d | 2007-10-01 | 2007-10-31 |  | 7d |  |
| 813 |  | Monthly report | 23d | 2007-10-01 | 2007-10-31 |  | 7d |  |
| 814 | 8.3 | **Requirements and use cases** | 10d | 2007-10-01 | 2007-10-12 | 809 | 20d |  |
| 815 |  | Create level 1 use cases and requirements | 10d | 2007-10-01 | 2007-10-12 |  | 20d |  |
| 816 |  | Update use case document | 10d | 2007-10-01 | 2007-10-12 |  | 20d |  |
| 817 |  | Update requirements document | 10d | 2007-10-01 | 2007-10-12 |  | 20d |  |
| 818 | 8.4 | **Analysis and Design** | 10d | 2007-10-01 | 2007-10-12 | 809 | 20d |  |
| 819 |  | Perform level 1 design | 10d | 2007-10-01 | 2007-10-12 |  | 20d |  |
| 820 |  | Modeling | 10d | 2007-10-01 | 2007-10-12 |  | 20d |  |
| 821 |  | Systems design | 10d | 2007-10-01 | 2007-10-12 |  | 20d |  |
| 822 |  | Implementation | 10d | 2007-10-01 | 2007-10-12 | 809 | 20d |  |
| 823 | 8.6 | **Testing** | 23d | 2007-10-01 | 2007-10-31 | 809 | 7d |  |
| 824 |  | Developer testing | 23d | 2007-10-01 | 2007-10-31 |  | 7d |  |
| 825 |  | Adopter testing | 23d | 2007-10-01 | 2007-10-31 |  | 7d |  |
| 826 | 8.7 | **Documentation** | 23d | 2007-10-01 | 2007-10-31 | 809 | 7d |  |
| 827 |  | Installation guide | 23d | 2007-10-01 | 2007-10-31 |  | 7d |  |
| 828 |  | Administration guide | 23d | 2007-10-01 | 2007-10-31 |  | 7d |  |
| 829 |  | Release notes | 23d | 2007-10-01 | 2007-10-31 |  | 7d |  |
| 830 |  | Adopter summary of C3PR | 23d | 2007-10-01 | 2007-10-31 |  | 7d |  |
| 831 | 8.8 | **Support** | 23d | 2007-10-01 | 2007-10-31 | 809 | 7d |  |
| 832 |  | Adopter support | 23d | 2007-10-01 | 2007-10-31 |  | 7d |  |
| 833 |  | Bug fixing | 23d | 2007-10-01 | 2007-10-31 |  | 7d |  |
| 834 | 8.9 | **Touchpoints** | 23d | 2007-10-01 | 2007-10-31 | 809 | 7d |  |
| 835 |  | Adopter review of deliverables | 23d | 2007-10-01 | 2007-10-31 |  | 7d |  |
| 836 |  | Adopter deployment of previous iteration codebase | 23d | 2007-10-01 | 2007-10-31 |  | 7d |  |
| 837 |  | Complete silver review | 23d | 2007-10-01 | 2007-10-31 |  | 7d |  |
| 838 | 8.10 | **Deliverables** | 23d | 2007-10-01 | 2007-10-31 | 809 | 7d |  |
| 839 |  | Risk matrix 1.4.x | 23d | 2007-10-01 | 2007-10-31 |  | 7d |  |
| 840 |  | Monthly report and risk matrix 1.3.x | 23d | 2007-10-01 | 2007-10-31 |  | 7d |  |

| ID | WBS | Task | Duration | Start | Finish | Predecessors | Total float | Constraint |
| --- | --- | --- | --- | --- | --- | --- | --- | --- |
| 841 |  | Use case document (3.1.x) | 23d | 2007-10-01 | 2007-10-31 |  | 7d |  |
| 842 |  | Requirements document (3.2.x) | 23d | 2007-10-01 | 2007-10-31 |  | 7d |  |
| 843 |  | UML (3.3.x) | 23d | 2007-10-01 | 2007-10-31 |  | 7d |  |
| 844 |  | Design document (3.4.x) | 23d | 2007-10-01 | 2007-10-31 |  | 7d |  |
| 845 |  | Codebase (3.5.x) | 23d | 2007-10-01 | 2007-10-31 |  | 7d |  |
| 846 |  | Test plan (3.6.x, 5.4.x) | 23d | 2007-10-01 | 2007-10-31 |  | 7d |  |
| 847 |  | Test report (3.8.x) | 23d | 2007-10-01 | 2007-10-31 |  | 7d |  |
| 848 |  | Adopter test plan (5.5.x) | 23d | 2007-10-01 | 2007-10-31 |  | 7d |  |
| 849 |  | Adopter test report (5.6.x) | 23d | 2007-10-01 | 2007-10-31 |  | 7d |  |
| 850 |  | Installation guide (3.10.x) | 23d | 2007-10-01 | 2007-10-31 |  | 7d |  |
| 851 |  | Administration guide (3.13.x) | 23d | 2007-10-01 | 2007-10-31 |  | 7d |  |
| 852 |  | Release notes (3.14.x) | 23d | 2007-10-01 | 2007-10-31 |  | 7d |  |
| 853 |  | Adopter summary of C3PR (5.1.x) | 23d | 2007-10-01 | 2007-10-31 |  | 7d |  |
| 854 | 8.11 | **Demonstration** | 0d | 2007-11-12 | 2007-11-12 | 809 | 0d |  |
| 855 |  | Demonstrate latest features to BAH | 0d | 2007-11-12 | 2007-11-12 | 809 | 0d | start no earlier than 2007-11-12 |
| 856 |  | Demonstrate to the larger community | 0d | 2007-11-12 | 2007-11-12 | 809 | 0d | start no earlier than 2007-11-12 |

## Version 2 (saved 2007-05-04, file 1.1.5_construction_project_plan.mpp)

Note of the change: *** empty log message ***

Last finish stays 2007-11-12. Complete tasks 134 → 135.

Added:

| ID | Task | Duration | Start | Finish | Predecessors | Resources |
| --- | --- | --- | --- | --- | --- | --- |
| 519 | **Project Management** | 30d | 2007-05-02 | 2007-06-12 | 518 | Patrick; Adopters; BAH |
| 520 | **Draft project plan (task 1.1)** | 30d | 2007-05-02 | 2007-06-12 |  | Patrick; Adopters; BAH |
| 521 | Developer draft | 5d | 2007-05-02 | 2007-05-08 |  | Patrick |
| 522 | BAH review | 5d | 2007-05-09 | 2007-05-15 | 521 | BAH |
| 523 | Developer update | 5d | 2007-05-16 | 2007-05-22 | 522 | Patrick |
| 524 | Adopter review | 3d | 2007-05-23 | 2007-05-25 | 523 | Adopters |
| 525 | Developer update | 2d | 2007-05-28 | 2007-05-29 | 524 | Patrick |
| 526 | Deliver project plan to BAH (task 1.1) | 0d | 2007-05-29 | 2007-05-29 | 525 | Patrick |
| 527 | BAH review project plan (task 1.1) | 10d | 2007-05-30 | 2007-06-12 | 526 | BAH |
| 528 | **Update risk matrix (task 1.4.2)** | 20d | 2007-05-02 | 2007-05-29 |  | Patrick; BAH |
| 529 | Update risk matrix for week 1 | 5d | 2007-05-02 | 2007-05-08 |  | Patrick |
| 530 | Update risk matrix for week 2 | 5d | 2007-05-09 | 2007-05-15 | 529 | Patrick |
| 531 | Deliver risk matrix to BAH (task 1.4.2) | 0d | 2007-05-15 | 2007-05-15 | 530 | Patrick |
| 532 | BAH review risk matrix (task 1.4.2) | 10d | 2007-05-16 | 2007-05-29 | 531 | BAH |
| 533 | **Monthly report (task 1.3.2)** | 20d | 2007-05-16 | 2007-06-12 | 531 | Patrick; BAH |
| 534 | Update risk matrix for week 3 | 5d | 2007-05-16 | 2007-05-22 |  | Patrick |
| 535 | Update risk matrix for week 4 | 5d | 2007-05-23 | 2007-05-29 | 534 | Patrick |
| 536 | Deliver monthly report and risk matrix to BAH (task 1.3.2) | 0d | 2007-05-29 | 2007-05-29 | 535 | Patrick |
| 537 | BAH review monthly report and risk matrix (task 1.3.2) | 10d | 2007-05-30 | 2007-06-12 | 536 | BAH |
| 539 | **Create level 1 use cases and requirements** | 2d | 2007-05-02 | 2007-05-03 |  | Developers |
| 540 | **Level 1 use cases for eligibility** | 2d | 2007-05-02 | 2007-05-03 |  | Priyatam |
| 541 | Use case document (task 3.1.3) | 1d | 2007-05-02 | 2007-05-02 |  | Priyatam |
| 542 | Requirements document (task 3.2.3) | 1d | 2007-05-03 | 2007-05-03 | 541 | Priyatam |
| 543 | **Level 1 use cases for study personnel** | 2d | 2007-05-02 | 2007-05-03 |  | Ramakrishna |
| 544 | Use case document (task 3.1.3) | 1d | 2007-05-02 | 2007-05-02 |  | Ramakrishna |
| 545 | Requirements document (task 3.2.3) | 1d | 2007-05-03 | 2007-05-03 | 544 | Ramakrishna |
| 546 | **Level 1 use cases for registration management** | 2d | 2007-05-02 | 2007-05-03 |  | Ramakrishna |
| 547 | Use case document (task 3.1.3) | 1d | 2007-05-02 | 2007-05-02 |  | Ramakrishna |
| 548 | Requirements document (task 3.2.3) | 1d | 2007-05-03 | 2007-05-03 | 547 | Ramakrishna |
| 549 | **Level 1 use cases for multi-site study** | 2d | 2007-05-02 | 2007-05-03 |  | Manav |
| 550 | Use case document (task 3.1.3) | 1d | 2007-05-02 | 2007-05-02 |  | Manav |
| 551 | Requirements document (task 3.2.3) | 1d | 2007-05-03 | 2007-05-03 | 550 | Manav |
| 552 | **Level 1 use cases for C3D integration** | 2d | 2007-05-02 | 2007-05-03 |  | Manav |
| 553 | Use case document (task 3.1.3) | 1d | 2007-05-02 | 2007-05-02 |  | Manav |
| 554 | Requirements document (task 3.2.3) | 1d | 2007-05-03 | 2007-05-03 | 553 | Manav |
| 555 | **Level 1 use cases for Security** | 2d | 2007-05-02 | 2007-05-03 |  | Manav |
| 556 | Use case document (task 3.1.3) | 1d | 2007-05-02 | 2007-05-02 |  | Manav |
| 557 | Requirements document (task 3.2.3) | 1d | 2007-05-03 | 2007-05-03 | 556 | Manav |
| 558 | **Level 1 use cases for Stratification** | 2d | 2007-05-02 | 2007-05-03 |  | Kruttik |
| 559 | Use case document (task 3.1.3) | 1d | 2007-05-02 | 2007-05-02 |  | Kruttik |
| 560 | Requirements document (task 3.2.3) | 1d | 2007-05-03 | 2007-05-03 | 559 | Kruttik |
| 561 | **Level 1 use cases for Randomization** | 2d | 2007-05-02 | 2007-05-03 |  | Kruttik |
| 562 | Use case document (task 3.1.3) | 1d | 2007-05-02 | 2007-05-02 |  | Kruttik |
| 563 | Requirements document (task 3.2.3) | 1d | 2007-05-03 | 2007-05-03 | 562 | Kruttik |
| 564 | **Level 1 use cases for disease site** | 2d | 2007-05-02 | 2007-05-03 |  | Ramakrishna |
| 565 | Use case document (task 3.1.3) | 1d | 2007-05-02 | 2007-05-02 |  | Ramakrishna |
| 566 | Requirements document (task 3.2.3) | 1d | 2007-05-03 | 2007-05-03 | 565 | Ramakrishna |
| 567 | **Update use case document (task 3.1.3, task 5.2.3)** | 9d | 2007-05-04 | 2007-05-16 | 539 | Developers; Adopters |
| 568 | **Update eligibility use cases** | 9d | 2007-05-04 | 2007-05-16 |  | Adopters; Priyatam |
| 569 | Developer update | 2d | 2007-05-04 | 2007-05-07 |  | Priyatam |
| 570 | Adopter review | 5d | 2007-05-08 | 2007-05-14 | 569 | Adopters |
| 571 | Developer update | 1d | 2007-05-15 | 2007-05-15 | 570 | Priyatam |
| 572 | Adopter sign-off | 1d | 2007-05-16 | 2007-05-16 | 571 | Adopters |
| 573 | **Update study personnel use cases** | 9d | 2007-05-04 | 2007-05-16 |  | Ramakrishna; Adopters |
| 574 | Developer update | 2d | 2007-05-04 | 2007-05-07 |  | Ramakrishna |
| 575 | Adopter review | 5d | 2007-05-08 | 2007-05-14 | 574 | Adopters |
| 576 | Developer update | 1d | 2007-05-15 | 2007-05-15 | 575 | Ramakrishna |
| 577 | Adopter sign-off | 1d | 2007-05-16 | 2007-05-16 | 576 | Adopters |
| 578 | **Update registration management use cases** | 9d | 2007-05-04 | 2007-05-16 |  | Ramakrishna; Adopters |
| 579 | Developer update | 2d | 2007-05-04 | 2007-05-07 |  | Ramakrishna |
| 580 | Adopter review | 5d | 2007-05-08 | 2007-05-14 | 579 | Adopters |
| 581 | Developer update | 1d | 2007-05-15 | 2007-05-15 | 580 | Ramakrishna |
| 582 | Adopter sign-off | 1d | 2007-05-16 | 2007-05-16 | 581 | Adopters |
| 583 | **Update multi-site trial use cases** | 9d | 2007-05-04 | 2007-05-16 |  | Manav; Adopters |
| 584 | Developer update | 2d | 2007-05-04 | 2007-05-07 |  | Manav |
| 585 | Adopter review | 5d | 2007-05-08 | 2007-05-14 | 584 | Adopters |
| 586 | Developer update | 1d | 2007-05-15 | 2007-05-15 | 585 | Manav |
| 587 | Adopter sign-off | 1d | 2007-05-16 | 2007-05-16 | 586 | Adopters |
| 588 | **Update C3D integration use cases** | 9d | 2007-05-04 | 2007-05-16 |  | Manav; Adopters |
| 589 | Developer update | 2d | 2007-05-04 | 2007-05-07 |  | Manav |
| 590 | Adopter review | 5d | 2007-05-08 | 2007-05-14 | 589 | Adopters |
| 591 | Developer update | 1d | 2007-05-15 | 2007-05-15 | 590 | Manav |
| 592 | Adopter sign-off | 1d | 2007-05-16 | 2007-05-16 | 591 | Adopters |
| 593 | **Update security use cases** | 9d | 2007-05-04 | 2007-05-16 |  | Manav; Adopters |
| 594 | Developer update | 2d | 2007-05-04 | 2007-05-07 |  | Manav |
| 595 | Adopter review | 5d | 2007-05-08 | 2007-05-14 | 594 | Adopters |
| 596 | Developer update | 1d | 2007-05-15 | 2007-05-15 | 595 | Manav |
| 597 | Adopter sign-off | 1d | 2007-05-16 | 2007-05-16 | 596 | Adopters |
| 598 | **Update stratification use cases** | 9d | 2007-05-04 | 2007-05-16 |  | Kruttik; Adopters |
| 599 | Developer update | 2d | 2007-05-04 | 2007-05-07 |  | Kruttik |
| 600 | Adopter review | 5d | 2007-05-08 | 2007-05-14 | 599 | Adopters |
| 601 | Developer update | 1d | 2007-05-15 | 2007-05-15 | 600 | Kruttik |
| 602 | Adopter sign-off | 1d | 2007-05-16 | 2007-05-16 | 601 | Adopters |
| 603 | **Update Randomization use cases** | 9d | 2007-05-04 | 2007-05-16 |  | Kruttik; Adopters |
| 604 | Developer update | 2d | 2007-05-04 | 2007-05-07 |  | Kruttik |
| 605 | Adopter review | 5d | 2007-05-08 | 2007-05-14 | 604 | Adopters |
| 606 | Developer update | 1d | 2007-05-15 | 2007-05-15 | 605 | Kruttik |
| 607 | Adopter sign-off | 1d | 2007-05-16 | 2007-05-16 | 606 | Adopters |
| 608 | **Update disease site use cases** | 9d | 2007-05-04 | 2007-05-16 |  | Kruttik; Adopters |
| 609 | Developer update | 2d | 2007-05-04 | 2007-05-07 |  | Kruttik |
| 610 | Adopter review | 5d | 2007-05-08 | 2007-05-14 | 609 | Adopters |
| 611 | Developer update | 1d | 2007-05-15 | 2007-05-15 | 610 | Kruttik |
| 612 | Adopter sign-off | 1d | 2007-05-16 | 2007-05-16 | 611 | Adopters |
| 613 | **Update use case document (task 3.2.3, task 5.3.3)** | 9d | 2007-05-17 | 2007-05-29 | 567 | Developers; Adopters |
| 614 | **Update eligibility requirements** | 9d | 2007-05-17 | 2007-05-29 |  | Adopters; Priyatam |
| 615 | Developer update | 2d | 2007-05-17 | 2007-05-18 |  | Priyatam |
| 616 | Adopter review | 5d | 2007-05-21 | 2007-05-25 | 615 | Adopters |
| 617 | Developer update | 1d | 2007-05-28 | 2007-05-28 | 616 | Priyatam |
| 618 | Adopter sign-off | 1d | 2007-05-29 | 2007-05-29 | 617 | Adopters |
| 619 | **Update study personnel requirements** | 9d | 2007-05-17 | 2007-05-29 |  | Ramakrishna; Adopters |
| 620 | Developer update | 2d | 2007-05-17 | 2007-05-18 |  | Ramakrishna |
| 621 | Adopter review | 5d | 2007-05-21 | 2007-05-25 | 620 | Adopters |
| 622 | Developer update | 1d | 2007-05-28 | 2007-05-28 | 621 | Ramakrishna |
| 623 | Adopter sign-off | 1d | 2007-05-29 | 2007-05-29 | 622 | Adopters |
| 624 | **Update registration management requirements** | 9d | 2007-05-17 | 2007-05-29 |  | Ramakrishna; Adopters |
| 625 | Developer update | 2d | 2007-05-17 | 2007-05-18 |  | Ramakrishna |
| 626 | Adopter review | 5d | 2007-05-21 | 2007-05-25 | 625 | Adopters |
| 627 | Developer update | 1d | 2007-05-28 | 2007-05-28 | 626 | Ramakrishna |
| 628 | Adopter sign-off | 1d | 2007-05-29 | 2007-05-29 | 627 | Adopters |
| 629 | **Update multi-site trial requirements** | 9d | 2007-05-17 | 2007-05-29 |  | Manav; Adopters |
| 630 | Developer update | 2d | 2007-05-17 | 2007-05-18 |  | Manav |
| 631 | Adopter review | 5d | 2007-05-21 | 2007-05-25 | 630 | Adopters |
| 632 | Developer update | 1d | 2007-05-28 | 2007-05-28 | 631 | Manav |
| 633 | Adopter sign-off | 1d | 2007-05-29 | 2007-05-29 | 632 | Adopters |
| 634 | **Update C3D integration requirements** | 9d | 2007-05-17 | 2007-05-29 |  | Manav; Adopters |
| 635 | Developer update | 2d | 2007-05-17 | 2007-05-18 |  | Manav |
| 636 | Adopter review | 5d | 2007-05-21 | 2007-05-25 | 635 | Adopters |
| 637 | Developer update | 1d | 2007-05-28 | 2007-05-28 | 636 | Manav |
| 638 | Adopter sign-off | 1d | 2007-05-29 | 2007-05-29 | 637 | Adopters |
| 639 | **Update security requirements** | 9d | 2007-05-17 | 2007-05-29 |  | Manav; Adopters |
| 640 | Developer update | 2d | 2007-05-17 | 2007-05-18 |  | Manav |
| 641 | Adopter review | 5d | 2007-05-21 | 2007-05-25 | 640 | Adopters |
| 642 | Developer update | 1d | 2007-05-28 | 2007-05-28 | 641 | Manav |
| 643 | Adopter sign-off | 1d | 2007-05-29 | 2007-05-29 | 642 | Adopters |
| 644 | **Update stratification requirements** | 9d | 2007-05-17 | 2007-05-29 |  | Kruttik; Adopters |
| 645 | Developer update | 2d | 2007-05-17 | 2007-05-18 |  | Kruttik |
| 646 | Adopter review | 5d | 2007-05-21 | 2007-05-25 | 645 | Adopters |
| 647 | Developer update | 1d | 2007-05-28 | 2007-05-28 | 646 | Kruttik |
| 648 | Adopter sign-off | 1d | 2007-05-29 | 2007-05-29 | 647 | Adopters |
| 649 | **Update Randomization requirements** | 9d | 2007-05-17 | 2007-05-29 |  | Kruttik; Adopters |
| 650 | Developer update | 2d | 2007-05-17 | 2007-05-18 |  | Kruttik |
| 651 | Adopter review | 5d | 2007-05-21 | 2007-05-25 | 650 | Adopters |
| 652 | Developer update | 1d | 2007-05-28 | 2007-05-28 | 651 | Kruttik |
| 653 | Adopter sign-off | 1d | 2007-05-29 | 2007-05-29 | 652 | Adopters |
| 654 | **Update disease site requirements** | 9d | 2007-05-17 | 2007-05-29 |  | Kruttik; Adopters |
| 655 | Developer update | 2d | 2007-05-17 | 2007-05-18 |  | Kruttik |
| 656 | Adopter review | 5d | 2007-05-21 | 2007-05-25 | 655 | Adopters |
| 657 | Developer update | 1d | 2007-05-28 | 2007-05-28 | 656 | Kruttik |
| 658 | Adopter sign-off | 1d | 2007-05-29 | 2007-05-29 | 657 | Adopters |
| 659 | Developer deliver use case document to BAH (task 3.1.2, task 5.2.2) | 0d | 2007-05-29 | 2007-05-29 | 613 | Patrick |
| 660 | BAH review use case document (task 3.1.2, task 5.2.2) | 10d | 2007-05-30 | 2007-06-12 | 659 | BAH |
| 661 | Developer deliver requirements document to BAH (task 3.2.2, task 5.3.2) | 0d | 2007-06-12 | 2007-06-12 | 660 | Patrick |
| 662 | BAH review requirements document (task 3.2.2, task 5.3.2) | 10d | 2007-06-13 | 2007-06-26 | 661 | BAH |
| 664 | **Perform level 1 design** | 4d | 2007-05-04 | 2007-05-09 |  | Developers |
| 665 | Cursory BRIDG harmonization | 1d | 2007-05-04 | 2007-05-04 |  | Developers |
| 666 | Update implementation model | 1d | 2007-05-07 | 2007-05-07 | 665 | Developers |
| 667 | Cursory system design | 2d | 2007-05-08 | 2007-05-09 | 666 | Developers |
| 668 | **Modeling (task 3.3.3)** | 27d | 2007-05-10 | 2007-06-15 | 664 | Developers; Adopters |
| 669 | **Update model** | 6d | 2007-05-10 | 2007-05-17 |  | Developers |
| 670 | **BRIDG harmonization** | 3d | 2007-05-10 | 2007-05-14 |  | Developers |
| 671 | Harmonize models | 3d | 2007-05-10 | 2007-05-14 |  | Developers |
| 672 | **Model implementation** | 3d | 2007-05-15 | 2007-05-17 | 670 | Developers |
| 673 | Implement models | 3d | 2007-05-15 | 2007-05-17 |  | Developers |
| 674 | Adopter review | 5d | 2007-05-18 | 2007-05-24 | 669 | Adopters |
| 675 | **Update model** | 6d | 2007-05-25 | 2007-06-01 | 674 | Developers |
| 676 | **BRIDG harmonization** | 3d | 2007-05-25 | 2007-05-29 | 674 |  |
| 677 | Harmonize models | 3d | 2007-05-25 | 2007-05-29 |  | Kruttik; Priyatam; Manav |
| 678 | **Model implementation** | 3d | 2007-05-30 | 2007-06-01 | 676 |  |
| 679 | Implement models | 3d | 2007-05-30 | 2007-06-01 |  | Kruttik; Priyatam; Manav |
| 680 | Developer deliver UML to BAH (task 3.3.3) | 0d | 2007-06-01 | 2007-06-01 | 675 | Patrick |
| 681 | BAH review of UML (task 3.3.3) | 10d | 2007-06-04 | 2007-06-15 | 680 | BAH |
| 682 | **System design (task 3.4.3)** | 25d | 2007-05-10 | 2007-06-13 | 664 | Developers; BAH |
| 683 | **Design use cases** | 15d | 2007-05-10 | 2007-05-30 |  | Kruttik; Priyatam |
| 684 | Draft UML | 5d | 2007-05-10 | 2007-05-16 |  | Developers |
| 685 | Team review | 5d | 2007-05-17 | 2007-05-23 | 684 | Developers |
| 686 | Update design document | 5d | 2007-05-24 | 2007-05-30 | 685 | Developers |
| 687 | Deliver design doc to BAH (task 3.4.3) | 0d | 2007-05-30 | 2007-05-30 | 683 | Patrick |
| 688 | BAH review design doc (task 3.4.3) | 10d | 2007-05-31 | 2007-06-13 | 687 | BAH |
| 689 | **Implementation (task 3.5.3)** | 30d | 2007-05-10 | 2007-06-20 | 664 | Developers; BAH |
| 690 | **Database** | 3d | 2007-05-10 | 2007-05-14 |  | Developers |
| 691 | **Implement models for use cases** | 3d | 2007-05-10 | 2007-05-14 |  | Developers |
| 692 | Update DDLs | 1d | 2007-05-10 | 2007-05-10 |  | Developers |
| 693 | Apply to database | 1d | 2007-05-11 | 2007-05-11 | 692 | Developers |
| 694 | Create test data | 1d | 2007-05-14 | 2007-05-14 | 693 | Developers |
| 695 | **caDSR** | 10d | 2007-05-10 | 2007-05-23 |  |  |
| 696 | Investigate caDSR eligibility | 5d | 2007-05-10 | 2007-05-16 |  | Priyatam |
| 697 | Create XML format | 5d | 2007-05-17 | 2007-05-23 | 696 | Priyatam |
| 698 | **Business layer** | 10d | 2007-05-10 | 2007-05-23 |  | Developers |
| 699 | **Implement use caseAPIs** | 7d | 2007-05-15 | 2007-05-23 | 691 | Developers |
| 700 | Update APIs | 2d | 2007-05-15 | 2007-05-16 |  | Developers |
| 701 | Implement APIs | 3d | 2007-05-17 | 2007-05-21 | 700 | Developers |
| 702 | Deploy APIs | 2d | 2007-05-22 | 2007-05-23 | 701 | Developers |
| 703 | **Implement caDSR/XML import APIs** | 7d | 2007-05-10 | 2007-05-18 |  | Priyatam |
| 704 | Update APIs | 2d | 2007-05-10 | 2007-05-11 |  | Priyatam |
| 705 | Implement APIs | 3d | 2007-05-14 | 2007-05-16 | 704 | Priyatam |
| 706 | Deploy APIs | 2d | 2007-05-17 | 2007-05-18 | 705 | Priyatam |
| 707 | **ESB** | 10d | 2007-05-15 | 2007-05-28 | 690 | Manav |
| 708 | Implement binding components for C3D | 5d | 2007-05-15 | 2007-05-21 |  | Manav |
| 709 | Implement binding components for study msg | 5d | 2007-05-22 | 2007-05-28 | 708 | Manav |
| 711 | Connect C3PR roles to GridGrouper groups | 5d | 2007-05-22 | 2007-05-28 |  | Manav |
| 712 | **Web interface** | 20d | 2007-05-10 | 2007-06-06 |  | Developers |
| 713 | **Modify study management interface** | 10d | 2007-05-24 | 2007-06-06 |  | Kruttik; Priyatam; Manav |
| 714 | Manage eligibility criteria | 5d | 2007-05-24 | 2007-05-30 | 699 | Kruttik; Priyatam; Manav |
| 715 | Manage multi-site study | 5d | 2007-05-31 | 2007-06-06 | 714 | Kruttik; Priyatam; Manav |
| 716 | **Modify study personnel management interface** | 5d | 2007-05-10 | 2007-05-16 |  | Priyatam; Kula |
| 717 | Manage study personnel | 5d | 2007-05-10 | 2007-05-16 |  | Priyatam; Kula |
| 718 | **Modify registration interface** | 5d | 2007-05-24 | 2007-05-30 |  | Kruttik; Priyatam |
| 719 | Check eligibility | 5d | 2007-05-24 | 2007-05-30 | 699 | Kruttik; Priyatam |
| 720 | **Modify registration management interface** | 5d | 2007-05-10 | 2007-05-16 |  | Ramakrishna |
| 721 | Manage study subject registration | 5d | 2007-05-10 | 2007-05-16 |  | Ramakrishna |
| 722 | Deliver codebase to BAH (task 3.5.3) | 0d | 2007-06-06 | 2007-06-06 | 690, 712, 719, 721 | Patrick |
| 723 | BAH review codebase (task 3.5.3) | 10d | 2007-06-07 | 2007-06-20 | 722 | BAH |
| 725 | **Developer testing** | 37d | 2007-05-02 | 2007-06-21 |  | BAH; Adopters; Developers |
| 726 | **Update developer test plan (task 3.6.2, task 5.4.2)** | 30d | 2007-05-02 | 2007-06-12 |  | Developers; Adopters; BAH |
| 727 | Developer draft | 5d | 2007-05-02 | 2007-05-08 |  | Developers |
| 728 | Adopter review | 5d | 2007-05-09 | 2007-05-15 | 727 | Adopters |
| 729 | Developer update | 5d | 2007-05-16 | 2007-05-22 | 728 | Developers |
| 730 | Adopter review and sign | 5d | 2007-05-23 | 2007-05-29 | 729 | Adopters |
| 731 | Deliver signed test plan to BAH (task 3.6.2, task 5.4.2) | 0d | 2007-05-29 | 2007-05-29 | 730 | Patrick |
| 732 | BAH review signed test plan (task 3.6.2, task 5.4.2) | 10d | 2007-05-30 | 2007-06-12 | 731 | BAH |
| 733 | **Integration and system testing (task 3.8.2)** | 16d | 2007-05-31 | 2007-06-21 | 722FS-5d | Developers; BAH |
| 734 | Generate test data | 1d | 2007-05-31 | 2007-05-31 |  | Developers |
| 735 | Write tests | 3d | 2007-06-01 | 2007-06-05 | 734 | Developers |
| 736 | Validate tests | 1d | 2007-06-06 | 2007-06-06 | 735 | Developers |
| 737 | Generate test report | 1d | 2007-06-07 | 2007-06-07 | 736 | Developers |
| 738 | Deliver test report to BAH (task 3.8.2) | 0d | 2007-06-07 | 2007-06-07 | 737 | Patrick |
| 739 | BAH review test report (task 3.8.2) | 10d | 2007-06-08 | 2007-06-21 | 738 | BAH |
| 740 | **Adopter testing** | 35d | 2007-05-02 | 2007-06-19 |  | Adopters; Developers; BAH |
| 741 | **Adopter deployment** | 5d | 2007-05-02 | 2007-05-08 |  | Adopters |
| 742 | Adopter deployment of previous iteration | 5d | 2007-05-02 | 2007-05-08 |  | Adopters |
| 743 | **Update adopter test plan (task 5.5.1)** | 30d | 2007-05-09 | 2007-06-19 | 742 | Adopters; Developers; BAH |
| 744 | Adopter update test script | 5d | 2007-05-09 | 2007-05-15 |  | Adopters |
| 745 | Adopter update test approach | 5d | 2007-05-16 | 2007-05-22 | 744 | Adopters |
| 746 | Developer review | 5d | 2007-05-23 | 2007-05-29 | 745 | Patrick; Ram |
| 747 | Adopter update | 5d | 2007-05-30 | 2007-06-05 | 746 | Adopters |
| 748 | Developer deliver adopter test plan to BAH (task 5.5.1) | 0d | 2007-06-05 | 2007-06-05 | 747 | Patrick |
| 749 | BAH review adopter test plan (task 5.5.1) | 10d | 2007-06-06 | 2007-06-19 | 748 | BAH |
| 750 | **QA testing (task 5.6.1)** | 24d | 2007-05-16 | 2007-06-18 | 744 | Adopters; BAH |
| 751 | Adopter create test data | 5d | 2007-05-16 | 2007-05-22 |  | Adopters |
| 752 | Adopter perform test script | 5d | 2007-05-23 | 2007-05-29 | 751 | Adopters |
| 753 | Adopter document results | 2d | 2007-05-30 | 2007-05-31 | 752 | Adopters |
| 754 | Adopter log bugs | 2d | 2007-06-01 | 2007-06-04 | 753 | Adopters |
| 755 | Developer deliver adopter test report to BAH (task 5.6.1) | 0d | 2007-06-04 | 2007-06-04 | 753, 754 | Patrick |
| 756 | BAH review adopter test report (task 5.6.1) | 10d | 2007-06-05 | 2007-06-18 | 755 | BAH |
| 758 | **Installation guide (task 3.10.2)** | 13d | 2007-06-04 | 2007-06-20 | 722FS-3d | Developers; BAH |
| 759 | Update installation guide | 3d | 2007-06-04 | 2007-06-06 |  | Developers |
| 760 | Deliver installation guide to BAH (task 3.10.2) | 0d | 2007-06-06 | 2007-06-06 | 759 | Patrick |
| 761 | BAH review of installation guide (task 3.10.2) | 10d | 2007-06-07 | 2007-06-20 | 760 | BAH |
| 762 | **Administration guide (task 3.13.2)** | 13d | 2007-06-04 | 2007-06-20 | 722FS-3d | Developers; BAH |
| 763 | Update administration guide | 3d | 2007-06-04 | 2007-06-06 |  | Developers |
| 764 | Deliver administration guide to BAH (task 3.13.2) | 0d | 2007-06-06 | 2007-06-06 | 763 | Patrick |
| 765 | BAH review of administration guide (task 3.13.2) | 10d | 2007-06-07 | 2007-06-20 | 764 | BAH |
| 766 | **Release notes (task 3.14.2)** | 13d | 2007-06-04 | 2007-06-20 | 722FS-3d | Developers; BAH |
| 767 | Update release notes | 3d | 2007-06-04 | 2007-06-06 |  | Developers |
| 768 | Deliver release notes to BAH (task 3.14.2) | 0d | 2007-06-06 | 2007-06-06 | 767 | Patrick |
| 769 | BAH review of release notes (task 3.14.2) | 10d | 2007-06-07 | 2007-06-20 | 768 | BAH |
| 770 | **Adopter summary of C3PR (task 5.1.2)** | 15d | 2007-05-31 | 2007-06-20 | 722FS-5d | Adopters; BAH |
| 771 | Adopter update summary | 3d | 2007-05-31 | 2007-06-04 |  | Adopters |
| 772 | Developer review summary | 1d | 2007-06-05 | 2007-06-05 | 771 | Adopters |
| 773 | Adopter update summary | 1d | 2007-06-06 | 2007-06-06 | 772 | Adopters |
| 774 | Developer deliver C3PR summary to BAH (task 5.1.2) | 0d | 2007-06-06 | 2007-06-06 | 773 | Patrick |
| 775 | BAH review of C3PR summary (task 5.1.2) | 10d | 2007-06-07 | 2007-06-20 | 774 | BAH |
| 1028 | Final Technical/Architecture Guide | 23d | 2007-10-01 | 2007-10-31 |  |  |

Removed: 519 Project management; 520 Update project plan; 521 Update risk matrix; 522 Monthly report; 524 Create level 1 use cases and requirements; 525 Update use case document; 526 Update requirements document; 528 Perform level 1 design; 529 Modeling; 530 Systems design; 531 Implementation; 532 Stratification; 533 First pass at stratification implementation; 535 Complete security implementation; 536 Enrollment; 537 Enrollment details; 538 Treating MD; 539 Disease; 540 Compassionate; 541 Enrollment business rules; 542 Accrual ceilings; 543 Notifications; 544 Multi-site study; 545 Complete multi-site study implementation; 546 Registration management; 547 Off study; 548 Study ammendments; 549 Change model, harmonize; 550 Implement business rules; 552 Developer testing; 553 Adopter testing; 555 Installation guide; 556 Administration guide; 557 Release notes; 558 Adopter summary of C3PR; 559 Support; 560 Adopter support; 561 Bug fixing; 565 Contact mentors to review deliverables; 566 Deliverables; 567 Risk matrix 1.4.x; 568 Monthly report and risk matrix 1.3.x; 569 Use case document (3.1.x); 570 Requirements document (3.2.x); 571 UML (3.3.x); 572 Design document (3.4.x); 573 Codebase (3.5.x); 574 Test plan (3.6.x, 5.4.x); 575 Test report (3.8.x); 576 Adopter test plan (5.5.x); 577 Adopter test report (5.6.x); 578 Installation guide (3.10.x); 579 Administration guide (3.13.x); 580 Release notes (3.14.x); 581 Adopter summary of C3PR (5.1.x)

Changed:

| ID | Task | Start | Finish | Duration | Complete | Total float | Predecessors | Other |
| --- | --- | --- | --- | --- | --- | --- | --- | --- |
| 263 | **Demonstration** | 2007-04-09 A | 2007-04-09 A |  | 0% → 100% | 155d → none |  |  |
| 264 | Demonstrate latest features to BAH | 2007-04-09 A | 2007-04-09 A |  | 0% → 100% | 155d → none |  |  |
| 517 | **Iteration 3 (stratification, security, multi-site study, study ammendments)** |  | 2007-06-11 → 2007-06-26 (+15d) | 28d → 40d |  | 110d → 28d |  | was named Iteration 3 (stratification, security, enrollment. multi-site study, study ammendments) |
| 538 | **Requirements and use cases** |  | 2007-05-31 → 2007-06-26 (+26d) | 22d → 40d |  | 116d → 98d |  | resources none → Developers; Adopters; BAH |
| 663 | **Analysis and Design** | 2007-05-02 → 2007-05-04 (+2d) | 2007-05-31 → 2007-06-15 (+15d) | 22d → 31d |  | 116d → 101d | 518 → 539 | resources none → Developers; Adopters; BAH |
| 710 | **Security** | 2007-05-02 → 2007-05-22 (+20d) | 2007-05-31 → 2007-05-28 (-3d) | 22d → 5d |  | 116d → 119d | none → 708 | resources none → Manav |
| 724 | **Testing** |  | 2007-05-31 → 2007-06-21 (+21d) | 22d → 37d |  | 116d → 101d |  | resources none → Developers; Adopters; BAH |
| 757 | **Documentation** | 2007-05-02 → 2007-05-31 (+29d) | 2007-05-31 → 2007-06-20 (+20d) | 22d → 15d |  | 116d → 102d |  | resources none → Developers; Adopters; BAH |
| 777 | Demonstrate latest features to BAH |  |  |  |  | 110d → 0d | 518 → none | constraint start no earlier than 2007-06-11 → must start on 2007-06-11 |
| 778 | **Touchpoints** |  |  |  |  |  |  | resources none → Adopters |
| 779 | Adopter review of deliverables |  |  |  |  |  |  | resources none → Adopters |
| 780 | Adopter deployment of previous iteration codebase |  |  |  |  |  |  | resources none → Adopters |

## Version 3 (saved 2007-09-05, file 1.1.9_construction_project_plan.mpp)

Note of the change: *** empty log message ***

Last finish stays 2007-11-12.

Added:

| ID | Task | Duration | Start | Finish |
| --- | --- | --- | --- | --- |
| 1052 | Transition Phase Plan | 23d | 2007-10-01 | 2007-10-31 |
| 1053 | Compatitbility Review Package (3.12) | 1d? | 2007-10-01 | 2007-10-01 |

Changed:

| ID | Task | Duration |
| --- | --- | --- |
| 1005 | **Iteration 8 (silver review)** | 30d → 30d? |
| 1036 | **Deliverables** | 23d → 23d? |
