# elaboration_project_plan

How a schedule from MS Project changed from version to version. A marks actual dates.

## Version 1 (saved 2007-02-23)

Note of the change: first draft of template

| ID | WBS | Task | Duration | Start | Finish | Predecessors | Total float | Constraint |
| --- | --- | --- | --- | --- | --- | --- | --- | --- |
| 1 | 1 | **Iteration 1** | 117d? | 2006-11-01 | 2007-04-12 |  | 0d |  |
| 2 |  | Iteration start | 0d | 2007-03-01 | 2007-03-01 |  | -86d | start no earlier than 2007-03-01 |
| 3 | 1.2 | **Project Management** | 30d | 2006-11-01 | 2006-12-12 |  | 87d |  |
| 4 | 1.2.1 | **Draft project plan (task 1.1)** | 30d | 2006-11-01 | 2006-12-12 |  | 87d |  |
| 5 |  | Developer draft | 5d | 2006-11-01 | 2006-11-07 |  | 87d |  |
| 6 |  | BAH review | 5d | 2006-11-08 | 2006-11-14 | 5 | 87d |  |
| 7 |  | Developer update | 5d | 2006-11-15 | 2006-11-21 | 6 | 87d |  |
| 8 |  | Adopter review | 3d | 2006-11-22 | 2006-11-24 | 7 | 87d |  |
| 9 |  | Developer update | 2d | 2006-11-27 | 2006-11-28 | 8 | 87d |  |
| 10 |  | Deliver project plan to BAH (task 1.1) | 0d | 2006-11-28 | 2006-11-28 | 9 | 87d |  |
| 11 |  | BAH review project plan (task 1.1) | 10d | 2006-11-29 | 2006-12-12 | 10 | 87d |  |
| 12 | 1.2.2 | **Update risk matrix (task 1.3.1)** | 20d | 2006-11-01 | 2006-11-28 |  | 87d |  |
| 13 |  | Update risk matrix for week 1 | 5d | 2006-11-01 | 2006-11-07 |  | 87d |  |
| 14 |  | Update risk matrix for week 2 | 5d | 2006-11-08 | 2006-11-14 | 13 | 87d |  |
| 15 |  | Deliver risk matrix to BAH (task 1.3.1) | 0d | 2006-11-14 | 2006-11-14 | 14 | 87d |  |
| 16 |  | BAH review risk matrix (task 1.3.1) | 10d | 2006-11-15 | 2006-11-28 | 15 | 97d |  |
| 17 | 1.2.3 | **Monthly report (task 1.3.1)** | 20d | 2006-11-15 | 2006-12-12 | 15 | 87d |  |
| 18 |  | Update risk matrix for week 3 | 5d | 2006-11-15 | 2006-11-21 |  | 87d |  |
| 19 |  | Update risk matrix for week 4 | 5d | 2006-11-22 | 2006-11-28 | 18 | 87d |  |
| 20 |  | Deliver monthly report and risk matrix to BAH (task 1.3.1) | 0d | 2006-11-28 | 2006-11-28 | 19 | 87d |  |
| 21 |  | BAH review monthly report and risk matrix (task 1.3.1) | 10d | 2006-11-29 | 2006-12-12 | 20 | 87d |  |
| 22 | 1.3 | **Requirements and use cases** | 30d | 2007-03-01 | 2007-04-11 | 2 | 0d |  |
| 23 | 1.3.1 | **Create level 1 use cases and requirements** | 2d | 2007-03-01 | 2007-03-02 |  | 0d |  |
| 24 |  | Use case document (task 3.1.1) | 1d | 2007-03-01 | 2007-03-01 |  | 0d |  |
| 25 |  | Requirements document (3.2.1) | 1d | 2007-03-02 | 2007-03-02 | 24 | 0d |  |
| 26 | 1.3.2 | **Update use case document (task 3.1.1, task 5.2.1)** | 9d | 2007-03-05 | 2007-03-15 | 23 | 1d |  |
| 27 | 1.3.2.1 | **Update eligibility use cases** | 9d | 2007-03-05 | 2007-03-15 |  | 1d |  |
| 28 |  | Developer update | 2d | 2007-03-05 | 2007-03-06 |  | 1d |  |
| 29 |  | Adopter review | 5d | 2007-03-07 | 2007-03-13 | 28 | 1d |  |
| 30 |  | Developer update | 1d | 2007-03-14 | 2007-03-14 | 29 | 1d |  |
| 31 |  | Adopter sign-off | 1d | 2007-03-15 | 2007-03-15 | 30 | 1d |  |
| 32 | 1.3.2.2 | **Update study personel use cases** | 9d | 2007-03-05 | 2007-03-15 |  | 1d |  |
| 33 |  | Developer update | 2d | 2007-03-05 | 2007-03-06 |  | 1d |  |
| 34 |  | Adopter review | 5d | 2007-03-07 | 2007-03-13 | 33 | 1d |  |
| 35 |  | Developer update | 1d | 2007-03-14 | 2007-03-14 | 34 | 1d |  |
| 36 |  | Adopter sign-off | 1d | 2007-03-15 | 2007-03-15 | 35 | 1d |  |
| 37 | 1.3.2.3 | **Update multi-site trial use cases** | 9d | 2007-03-05 | 2007-03-15 |  | 1d |  |
| 38 |  | Developer update | 2d | 2007-03-05 | 2007-03-06 |  | 1d |  |
| 39 |  | Adopter review | 5d | 2007-03-07 | 2007-03-13 | 38 | 1d |  |
| 40 |  | Developer update | 1d | 2007-03-14 | 2007-03-14 | 39 | 1d |  |
| 41 |  | Adopter sign-off | 1d | 2007-03-15 | 2007-03-15 | 40 | 1d |  |
| 42 | 1.3.3 | **Update requirements document (task 3.2.1, task 5.3.1)** | 9d | 2007-03-16 | 2007-03-28 | 26 | 1d |  |
| 43 | 1.3.3.1 | **Update eligibility requirements** | 9d | 2007-03-16 | 2007-03-28 |  | 1d |  |
| 44 |  | Developer update | 2d | 2007-03-16 | 2007-03-19 |  | 1d |  |
| 45 |  | Adopter review | 5d | 2007-03-20 | 2007-03-26 | 44 | 1d |  |
| 46 |  | Developer update | 1d | 2007-03-27 | 2007-03-27 | 45 | 1d |  |
| 47 |  | Adopter sign-off | 1d | 2007-03-28 | 2007-03-28 | 46 | 1d |  |
| 48 | 1.3.3.2 | **Update study personel requirements** | 9d | 2007-03-16 | 2007-03-28 |  | 1d |  |
| 49 |  | Developer update | 2d | 2007-03-16 | 2007-03-19 |  | 1d |  |
| 50 |  | Adopter review | 5d | 2007-03-20 | 2007-03-26 | 49 | 1d |  |
| 51 |  | Developer update | 1d | 2007-03-27 | 2007-03-27 | 50 | 1d |  |
| 52 |  | Adopter sign-off | 1d | 2007-03-28 | 2007-03-28 | 51 | 1d |  |
| 53 | 1.3.3.3 | **Update multi-site trial requirements** | 9d | 2007-03-16 | 2007-03-28 |  | 1d |  |
| 54 |  | Developer update | 2d | 2007-03-16 | 2007-03-19 |  | 1d |  |
| 55 |  | Adopter review | 5d | 2007-03-20 | 2007-03-26 | 54 | 1d |  |
| 56 |  | Developer update | 1d | 2007-03-27 | 2007-03-27 | 55 | 1d |  |
| 57 |  | Adopter sign-off | 1d | 2007-03-28 | 2007-03-28 | 56 | 1d |  |
| 58 |  | Developer deliver use case document to BAH (task 3.1.1, task 5.2.1) | 0d | 2007-03-28 | 2007-03-28 | 42 | 1d |  |
| 59 |  | BAH review use case document (task 3.1.1, task 5.2.1) | 10d | 2007-03-29 | 2007-04-11 | 58 | 1d |  |
| 60 |  | Developer deliver requirements document to BAH (task 3.2.1, task 5.3.1) | 0d | 2007-03-28 | 2007-03-28 | 42 | 1d |  |
| 61 |  | BAH review requirements document (task 3.2.1, task 5.3.1) | 10d | 2007-03-29 | 2007-04-11 | 60 | 1d |  |
| 62 | 1.4 | **Analysis and Design** | 29d | 2007-03-05 | 2007-04-12 | 23 | 0d |  |
| 63 | 1.4.1 | **Perform level 1 design** | 2d | 2007-03-05 | 2007-03-06 |  | 0d |  |
| 64 |  | Cursory BRIDG harmonization | 1d | 2007-03-05 | 2007-03-05 |  | 0d |  |
| 65 |  | Update implementation model | 1d | 2007-03-06 | 2007-03-06 | 64 | 0d |  |
| 66 |  | Cursory system design | 2d | 2007-03-05 | 2007-03-06 |  | 0d |  |
| 67 | 1.4.2 | **Modeling (task 3.3.1)** | 27d | 2007-03-07 | 2007-04-12 | 63 | 0d |  |
| 68 | 1.4.2.1 | **Update model** | 6d | 2007-03-07 | 2007-03-14 |  | 0d |  |
| 69 | 1.4.2.1.1 | **BRIDG harmonization** | 3d | 2007-03-07 | 2007-03-09 | 63 | 0d |  |
| 70 |  | Harmonize Study model | 3d | 2007-03-07 | 2007-03-09 |  | 0d |  |

| ID | WBS | Task | Duration | Start | Finish | Predecessors | Total float |
| --- | --- | --- | --- | --- | --- | --- | --- |
| 71 |  | Harmonize Personnel model | 3d | 2007-03-07 | 2007-03-09 |  | 0d |
| 72 | 1.4.2.1.2 | **Model implementation** | 3d | 2007-03-12 | 2007-03-14 | 69 | 0d |
| 73 |  | Implement Study model | 3d | 2007-03-12 | 2007-03-14 |  | 0d |
| 74 |  | Implement Personnel model | 3d | 2007-03-12 | 2007-03-14 |  | 0d |
| 75 |  | Adopter review | 5d | 2007-03-15 | 2007-03-21 | 68 | 0d |
| 76 | 1.4.2.3 | **Update model** | 6d | 2007-03-22 | 2007-03-29 | 75 | 0d |
| 77 | 1.4.2.3.1 | **BRIDG harmonization** | 3d | 2007-03-22 | 2007-03-26 | 75 | 0d |
| 78 |  | Harmonize Study model | 3d | 2007-03-22 | 2007-03-26 |  | 0d |
| 79 |  | Harmonize Personnel model | 3d | 2007-03-22 | 2007-03-26 |  | 0d |
| 80 | 1.4.2.3.2 | **Model implementation** | 3d | 2007-03-27 | 2007-03-29 | 77 | 0d |
| 81 |  | Implement Study model | 3d | 2007-03-27 | 2007-03-29 |  | 0d |
| 82 |  | Implement Personnel model | 3d | 2007-03-27 | 2007-03-29 |  | 0d |
| 83 |  | Developer deliver UML to BAH (task 3.3.1) | 0d | 2007-03-29 | 2007-03-29 | 76 | 0d |
| 84 |  | BAH review of UML (task 3.3.1) | 10d | 2007-03-30 | 2007-04-12 | 83 | 0d |
| 85 | 1.4.3 | **System design (task 3.4.1)** | 25d | 2007-03-07 | 2007-04-10 | 63 | 2d |
| 86 | 1.4.3.1 | **Design eligibility** | 15d | 2007-03-07 | 2007-03-27 |  | 2d |
| 87 |  | Draft UML | 5d | 2007-03-07 | 2007-03-13 |  | 2d |
| 88 |  | Team review | 5d | 2007-03-14 | 2007-03-20 | 87 | 2d |
| 89 |  | Update design document | 5d | 2007-03-21 | 2007-03-27 | 88 | 2d |
| 90 | 1.4.3.2 | **Design personnel** | 15d | 2007-03-07 | 2007-03-27 |  | 2d |
| 91 |  | Draft UML | 5d | 2007-03-07 | 2007-03-13 |  | 2d |
| 92 |  | Team review | 5d | 2007-03-14 | 2007-03-20 | 91 | 2d |
| 93 |  | Update design document | 5d | 2007-03-21 | 2007-03-27 | 92 | 2d |
| 94 | 1.4.3.3 | **Design multi-site study** | 15d | 2007-03-07 | 2007-03-27 |  | 2d |
| 95 |  | Draft UML | 5d | 2007-03-07 | 2007-03-13 |  | 2d |
| 96 |  | Team review | 5d | 2007-03-14 | 2007-03-20 | 95 | 2d |
| 97 |  | Update design document | 5d | 2007-03-21 | 2007-03-27 | 96 | 2d |
| 98 |  | Deliver design doc to BAH (task 3.4.1) | 0d | 2007-03-27 | 2007-03-27 | 86, 90, 94 | 2d |
| 99 |  | BAH review design doc (task 3.4.1) | 10d | 2007-03-28 | 2007-04-10 | 98 | 2d |
| 100 | 1.5 | **Implementation (task 3.5.1)** | 11d? | 2007-03-07 | 2007-03-21 | 63 | 11d |
| 101 |  | Database | 1d? | 2007-03-07 | 2007-03-07 |  | 16d |
| 102 |  | Business layer | 1d? | 2007-03-07 | 2007-03-07 |  | 16d |
| 103 |  | ESB | 1d? | 2007-03-07 | 2007-03-07 |  | 16d |
| 104 |  | Grid services | 1d? | 2007-03-07 | 2007-03-07 |  | 16d |
| 105 |  | Web interface | 1d? | 2007-03-07 | 2007-03-07 |  | 16d |
| 106 |  | Security | 1d? | 2007-03-07 | 2007-03-07 |  | 16d |
| 107 |  | Deliver codebase to BAH (task 3.5.1) | 0d | 2007-03-07 | 2007-03-07 | 101, 102, 103, 104, 105, 106 | 16d |
| 108 |  | BAH review codebase (task 3.5.1) | 10d | 2007-03-08 | 2007-03-21 | 107 | 16d |
| 109 | 1.6 | **Testing** | 30d | 2007-03-01 | 2007-04-11 | 2 | 1d |
| 110 | 1.6.1 | **Developer testing** | 30d | 2007-03-01 | 2007-04-11 |  | 1d |
| 111 | 1.6.1.1 | **Update developer test plan (task 3.6.1, task 5.4.1)** | 30d | 2007-03-01 | 2007-04-11 |  | 1d |
| 112 |  | Developer draft | 5d | 2007-03-01 | 2007-03-07 |  | 1d |
| 113 |  | Adopter review | 5d | 2007-03-08 | 2007-03-14 | 112 | 1d |
| 114 |  | Developer update | 5d | 2007-03-15 | 2007-03-21 | 113 | 1d |
| 115 |  | Adopter review and sign | 5d | 2007-03-22 | 2007-03-28 | 114 | 1d |
| 116 |  | Deliver signed test plan to BAH (task 3.6.1, task 5.4.1) | 0d | 2007-03-28 | 2007-03-28 | 115 | 1d |
| 117 |  | BAH review signed test plan (task 3.6.1, task 5.4.1) | 10d | 2007-03-29 | 2007-04-11 | 116 | 1d |
| 118 | 1.6.1.2 | **Integration and system testing (task 3.8.1)** | 10d | 2007-03-15 | 2007-03-28 | 100FS-5d, 112 | 11d |
| 119 |  | Generate test data | 1d | 2007-03-15 | 2007-03-15 |  | 20d |
| 120 |  | Write tests | 3d | 2007-03-15 | 2007-03-19 |  | 16d |
| 121 |  | Validate tests | 1d | 2007-03-20 | 2007-03-20 | 120 | 16d |
| 122 |  | Generate test report | 1d | 2007-03-21 | 2007-03-21 | 121 | 16d |
| 123 |  | Deliver test report to BAH (task 3.8.1) | 0d | 2007-03-15 | 2007-03-15 |  | 21d |
| 124 |  | BAH review test report (task 3.8.1) | 10d | 2007-03-15 | 2007-03-28 |  | 11d |
| 125 | 1.6.2 | **Adopter testing** | 30d | 2007-03-01 | 2007-04-11 |  | 1d |
| 126 | 1.6.2.1 | **Update adopter test plan (task 5.5.1)** | 30d | 2007-03-01 | 2007-04-11 |  | 1d |
| 127 |  | Adopter update test script | 5d | 2007-03-01 | 2007-03-07 |  | 1d |
| 128 |  | Adopter update test approach | 5d | 2007-03-08 | 2007-03-14 | 127 | 1d |
| 129 |  | Developer review | 5d | 2007-03-15 | 2007-03-21 | 128 | 1d |
| 130 |  | Adopter update | 5d | 2007-03-22 | 2007-03-28 | 129 | 1d |
| 131 |  | Developer deliver adopter test plan to BAH (task 5.5.1) | 0d | 2007-03-28 | 2007-03-28 | 130 | 1d |
| 132 |  | BAH review adopter test plan (task 5.5.1) | 10d | 2007-03-29 | 2007-04-11 | 131 | 1d |
| 133 | 1.6.2.2 | **QA testing (task 5.6.1)** | 22d | 2007-03-08 | 2007-04-06 | 127 | 4d |
| 134 |  | Adopter create test data | 5d | 2007-03-08 | 2007-03-14 |  | 4d |
| 135 |  | Adopter perform test script | 5d | 2007-03-15 | 2007-03-21 | 134 | 4d |
| 136 |  | Adopter document results | 2d | 2007-03-22 | 2007-03-23 | 135 | 4d |
| 137 |  | Adopter log bugs | 2d | 2007-03-26 | 2007-03-27 | 136 | 12d |
| 138 |  | Developer deliver adopter test report to BAH (task 5.6.1) | 0d | 2007-03-23 | 2007-03-23 | 136 | 4d |
| 139 |  | BAH review adopter test report (task 5.6.1) | 10d | 2007-03-26 | 2007-04-06 | 138 | 4d |
| 143 | 1.7 | **Analysis and Design** | 1d? | 2006-11-01 | 2006-11-01 |  | 116d |

| ID | WBS | Task | Duration | Start | Finish | Predecessors | Complete | Total float |
| --- | --- | --- | --- | --- | --- | --- | --- | --- |
| 144 | 1.7.1 | **Perform level 1 design** | 1d | 2006-11-01 | 2006-11-01 |  |  | 116d |
| 145 |  | Perform cursory BRIDG harmonization | 1d | 2006-11-01 | 2006-11-01 |  |  | 116d |
| 146 |  | Update implementation model | 1d | 2006-11-01 | 2006-11-01 |  |  | 116d |
| 147 |  | Update design document (task 3.4.1) | 1d? | 2006-11-01 | 2006-11-01 |  |  | 116d |
| 150 | 2 | **Project Management** | 96d | 2006-11-01 A | 2007-03-14 |  | 95% | 21d |
| 151 | 2.1 | **Draft project plan (task 1.1)** | 20d | 2006-11-01 A | 2006-11-28 |  | 50% | 97d |
| 152 |  | Developer draft | 5d | 2006-11-01 A | 2006-11-07 A |  | 100% |  |
| 153 |  | Adopter review | 3d | 2006-11-08 A | 2006-11-10 A | 152 | 100% |  |
| 154 |  | Developer update | 2d | 2006-11-13 A | 2006-11-14 A | 153 | 100% |  |
| 155 |  | Deliver to BAH | 0d | 2006-11-14 A | 2006-11-14 A | 154 | 100% |  |
| 156 |  | BAH review | 10d | 2006-11-15 | 2006-11-28 | 155 |  | 97d |
| 157 | 2.2 | **Draft communication plan (task 1.2)** | 32d | 2006-11-01 A | 2006-12-14 A |  | 100% |  |
| 158 |  | Developer draft | 12d | 2006-11-01 A | 2006-11-16 A |  | 100% |  |
| 159 |  | Adopter review | 5d | 2006-11-17 A | 2006-11-23 A | 158 | 100% |  |
| 160 |  | Developer update | 5d | 2006-11-24 A | 2006-11-30 A | 159 | 100% |  |
| 161 |  | Deliver to BAH | 0d | 2006-11-30 A | 2006-11-30 A | 160 | 100% |  |
| 162 |  | BAH review | 10d | 2006-12-01 A | 2006-12-14 A | 161 | 100% |  |
| 163 | 2.3 | **Draft risk matrix (task 1.4.1)** | 22d | 2006-11-01 A | 2006-11-30 A |  | 100% |  |
| 164 |  | Developer draft | 12d | 2006-11-01 A | 2006-11-16 A |  | 100% |  |
| 165 |  | Deliver to BAH | 0d | 2006-11-16 A | 2006-11-16 A | 164 | 100% |  |
| 166 |  | BAH review | 10d | 2006-11-17 A | 2006-11-30 A | 165 | 100% |  |
| 167 | 2.4 | **Update risk matrix (task 1.3.1)** | 20d | 2006-11-17 A | 2006-12-14 A |  | 100% |  |
| 168 |  | Developer draft | 10d | 2006-11-17 A | 2006-11-30 A | 163 | 100% |  |
| 169 |  | Deliver to BAH | 0d | 2006-11-30 A | 2006-11-30 A | 168 | 100% |  |
| 170 |  | BAH review | 10d | 2006-12-01 A | 2006-12-14 A | 169 | 100% |  |
| 171 | 2.5 | **Monthly report (task 1.3.1)** | 32d | 2006-11-01 A | 2006-12-14 A |  | 100% |  |
| 172 |  | Developer draft | 22d | 2006-11-01 A | 2006-11-30 A |  | 100% |  |
| 173 |  | Deliver to BAH | 0d | 2006-11-30 A | 2006-11-30 A | 172 | 100% |  |
| 174 |  | BAH review | 10d | 2006-12-01 A | 2006-12-14 A | 173 | 100% |  |
| 175 | 2.6 | **Test plan document (task 2.6.1)** | 22d | 2006-11-01 A | 2006-11-30 |  | 69% | 95d |
| 176 |  | Developer draft | 12d | 2006-11-01 A | 2006-11-16 A |  | 100% |  |
| 177 |  | Adopter review | 5d | 2006-11-17 A | 2006-11-23 A | 176 | 100% |  |
| 178 |  | Developer update | 5d | 2006-11-24 A | 2006-11-30 A | 177 | 100% |  |
| 179 |  | Deliver to BAH | 0d | 2006-11-14 A | 2006-11-14 A | 178 | 100% |  |
| 180 |  | BAH review | 10d | 2006-11-15 | 2006-11-28 | 179 |  | 97d |
| 181 | 2.7 | **Requirements** | 96d | 2006-11-01 A | 2007-03-14 | 2 | 92% | 21d |
| 182 | 2.7.1 | **Draft meeting notes from face-to-face (task 1.5)** | 22d | 2006-11-01 A | 2006-11-30 A |  | 100% |  |
| 183 |  | Developer draft | 12d | 2006-11-01 A | 2006-11-16 A |  | 100% |  |
| 184 |  | Adopter review | 5d | 2006-11-17 A | 2006-11-23 A | 183 | 100% |  |
| 185 |  | Developer update | 5d | 2006-11-24 A | 2006-11-30 A | 184 | 100% |  |
| 186 |  | Deliver to BAH | 0d | 2006-11-14 A | 2006-11-14 A | 185 | 100% |  |
| 187 |  | BAH review | 10d | 2006-11-15 A | 2006-11-28 A | 186 | 100% |  |
| 188 | 2.7.2 | **Refine vision and scope document (task 1.8)** | 22d | 2006-11-01 A | 2006-11-30 A |  | 100% |  |
| 189 |  | Developer draft | 12d | 2006-11-01 A | 2006-11-16 A |  | 100% |  |
| 190 |  | Adopter review | 5d | 2006-11-24 A | 2006-11-30 A | 189 | 100% |  |
| 191 |  | Developer update | 5d | 2006-11-01 A | 2006-11-07 A | 190 | 100% |  |
| 192 |  | Deliver to BAH | 0d | 2006-11-01 A | 2006-11-01 A | 191 | 100% |  |
| 193 |  | BAH review | 10d | 2006-11-01 A | 2006-11-14 A | 192 | 100% |  |
| 194 | 2.7.3 | **Draft level 1 use cases and requirements** | 2d | 2006-11-01 A | 2006-11-02 A |  | 100% |  |
| 195 |  | Developer draft | 2d | 2006-11-01 A | 2006-11-02 A |  | 100% |  |
| 196 | 2.7.4 | **Draft use case document (task 2.1.1)** | 32d | 2006-11-01 A | 2006-12-14 A |  | 100% |  |
| 197 |  | Integrate level 1 use cases | 2d | 2006-11-01 A | 2006-11-02 A | 194 | 100% |  |
| 198 |  | Draft protocol management use cases | 11d | 2006-11-02 A | 2006-11-16 A |  | 100% |  |
| 199 |  | Adopter review | 5d | 2006-11-17 A | 2006-11-23 A | 198 | 100% |  |
| 200 |  | Developer update | 5d | 2006-11-24 A | 2006-11-30 A | 199 | 100% |  |
| 201 |  | Deliver to BAH | 0d | 2006-11-30 A | 2006-11-30 A | 200 | 100% |  |
| 202 |  | BAH review | 10d | 2006-12-01 A | 2006-12-14 A | 201 | 100% |  |
| 203 | 2.7.5 | **SRS document (task 2.2.1)** | 96d | 2006-11-01 A | 2007-03-14 |  | 69% | 21d |
| 204 |  | Developer draft | 12d | 2006-11-01 A | 2006-11-16 A |  | 100% |  |
| 205 |  | Adopter review | 5d | 2006-11-17 A | 2006-11-23 A | 204 | 100% |  |
| 206 |  | Developer update | 5d | 2006-11-24 A | 2006-11-30 A | 205 | 100% |  |
| 207 |  | Deliver to BAH | 0d | 2006-11-30 A | 2006-11-30 A | 206 | 100% |  |
| 208 |  | BAH review | 10d | 2007-03-01 | 2007-03-14 | 207 |  | 21d |
| 209 | 2.8 | **Analysis and Design** | 32d | 2006-11-01 A | 2006-12-14 A | 2 | 100% |  |
| 210 | 2.8.1 | **Design document (task 2.4.1)** | 32d | 2006-11-01 A | 2006-12-14 A |  | 100% |  |
| 211 |  | Developer draft | 12d | 2006-11-01 A | 2006-11-16 A |  | 100% |  |
| 212 |  | Adopter review | 5d | 2006-11-17 A | 2006-11-23 A | 211 | 100% |  |
| 213 |  | Developer update | 5d | 2006-11-24 A | 2006-11-30 A | 212 | 100% |  |
| 214 |  | Deliver to BAH | 0d | 2006-11-30 A | 2006-11-30 A | 213 | 100% |  |
| 215 |  | BAH review | 10d | 2006-12-01 A | 2006-12-14 A | 214 | 100% |  |

| ID | WBS | Task | Duration | Start | Finish | Predecessors | Complete |
| --- | --- | --- | --- | --- | --- | --- | --- |
| 216 | 2.8.2 | **UML diagrams (task 2.3.1)** | 32d | 2006-11-01 A | 2006-12-14 A |  | 100% |
| 217 |  | Developer draft | 12d | 2006-11-01 A | 2006-11-16 A |  | 100% |
| 218 |  | Adopter review | 5d | 2006-11-17 A | 2006-11-23 A | 217 | 100% |
| 219 |  | Developer update | 5d | 2006-11-24 A | 2006-11-30 A | 218 | 100% |
| 220 |  | Deliver to BAH | 0d | 2006-11-30 A | 2006-11-30 A | 219 | 100% |
| 221 |  | BAH review | 10d | 2006-12-01 A | 2006-12-14 A | 220 | 100% |
| 222 | 2.8.3 | **ESB** | 5d | 2006-11-01 A | 2006-11-07 A |  | 100% |
| 223 |  | Evalutate technologies by prototyping | 5d | 2006-11-01 A | 2006-11-07 A |  | 100% |
| 224 | 2.8.4 | **Grid service** | 7d | 2006-11-01 A | 2006-11-09 A |  | 100% |
| 225 |  | Evaluate caGrid 1.0 service infrastructure | 7d | 2006-11-01 A | 2006-11-09 A |  | 100% |
| 226 | 2.8.5 | **Database** | 7d | 2006-11-01 A | 2006-11-09 A |  | 100% |
| 227 |  | First draft of protocol database structure | 7d | 2006-11-01 A | 2006-11-09 A |  | 100% |
| 228 | 2.8.6 | **Domain model** | 22d | 2006-11-01 A | 2006-11-30 A |  | 100% |
| 229 |  | Create protocol model harmonized with BRIDG | 10d | 2006-11-01 A | 2006-11-14 A | 194 | 100% |
| 230 |  | Create first draft of protocol model | 11d | 2006-11-16 A | 2006-11-30 A | 229 | 100% |
| 231 | 2.8.7 | **Security** | 22d | 2006-11-01 A | 2006-11-30 A |  | 100% |
| 232 |  | Evaluate caGrid 1.0 security infrastructure | 22d | 2006-11-01 A | 2006-11-30 A |  | 100% |
| 233 | 2.9 | **Implementation** | 32d | 2006-11-01 A | 2006-12-14 A | 2 | 100% |
| 234 | 2.9.1 | **Web interface** | 22d | 2006-11-01 A | 2006-11-30 A |  | 100% |
| 235 |  | Migrate v1 code into codebase | 22d | 2006-11-01 A | 2006-11-30 A |  | 100% |
| 236 | 2.9.2 | **Enterprise Service Bus** | 22d | 2006-11-01 A | 2006-11-30 A |  | 100% |
| 237 |  | Setup initial project | 22d | 2006-11-01 A | 2006-11-30 A |  | 100% |
| 238 | 2.9.3 | **Grid service** | 15d | 2006-11-10 A | 2006-11-30 A |  | 100% |
| 239 |  | Create grid service skeleton | 15d | 2006-11-10 A | 2006-11-30 A | 225, 194 | 100% |
| 240 | 2.9.4 | **Database** | 22d | 2006-11-01 A | 2006-11-30 A |  | 100% |
| 241 |  | Migrate v1 code into codebase | 22d | 2006-11-01 A | 2006-11-30 A |  | 100% |
| 242 |  | Implement protocol database structure | 22d | 2006-11-01 A | 2006-11-30 A | 194 | 100% |
| 243 | 2.9.5 | **Domain model** | 22d | 2006-11-01 A | 2006-11-30 A |  | 100% |
| 244 |  | Migrate v1 code into codebase | 22d | 2006-11-01 A | 2006-11-30 A |  | 100% |
| 245 |  | Implement protocol model | 15d | 2006-11-01 A | 2006-11-21 A | 194 | 100% |
| 246 |  | Create OR mapping for protocol model | 7d | 2006-11-22 A | 2006-11-30 A | 245 | 100% |
| 247 | 2.9.6 | **Business layer** | 22d | 2006-11-01 A | 2006-11-30 A |  | 100% |
| 248 |  | Migrate v1 code | 22d | 2006-11-01 A | 2006-11-30 A |  | 100% |
| 249 | 2.9.7 | **Prototype code (task 2.5.1)** | 32d | 2006-11-01 A | 2006-12-14 A |  | 100% |
| 250 |  | Developer Draft | 22d | 2006-11-01 A | 2006-11-30 A |  | 100% |
| 251 |  | Deliver to BAH | 0d | 2006-11-30 A | 2006-11-30 A | 250 | 100% |
| 252 |  | BAH review | 10d | 2006-12-01 A | 2006-12-14 A | 251 | 100% |
| 253 | 2.10 | **Testing** | 32d | 2006-11-01 A | 2006-12-14 A | 2 | 100% |
| 254 |  | Implement unit tests | 20d | 2006-11-01 A | 2006-11-28 A |  | 100% |
| 255 | 2.10.2 | **Test report (task 2.7.1)** | 12d | 2006-11-29 A | 2006-12-14 A |  | 100% |
| 256 |  | Developer draft | 2d | 2006-11-29 A | 2006-11-30 A | 254 | 100% |
| 257 |  | Deliver to BAH | 0d | 2006-11-30 A | 2006-11-30 A | 256 | 100% |
| 258 |  | BAH review | 10d | 2006-12-01 A | 2006-12-14 A | 257 | 100% |

## Version 2 (saved 2007-02-26)

Note of the change: added Documentation

Last finish 2007-04-12 → 2007-04-17 (+5d). Complete tasks 75 → 0.

Added:

| ID | Task | Duration | Start | Finish | Predecessors | Constraint |
| --- | --- | --- | --- | --- | --- | --- |
| 1 | **Template iteration (eligibility, study personnel, multi-site study)** | 34d | 2007-03-01 | 2007-04-17 |  |  |
| 2 | Iteration start | 0d | 2007-03-01 | 2007-03-01 |  | start no earlier than 2007-03-01 |
| 10 | Deliver project plan to BAH (task 1.1) | 0d | 2007-03-28 | 2007-03-28 | 9 |  |
| 11 | BAH review project plan (task 1.1) | 10d | 2007-03-29 | 2007-04-11 | 10 |  |
| 13 | Update risk matrix for week 1 | 5d | 2007-03-01 | 2007-03-07 |  |  |
| 14 | Update risk matrix for week 2 | 5d | 2007-03-08 | 2007-03-14 | 13 |  |
| 15 | Deliver risk matrix to BAH (task 1.3.1) | 0d | 2007-03-14 | 2007-03-14 | 14 |  |
| 16 | BAH review risk matrix (task 1.3.1) | 10d | 2007-03-15 | 2007-03-28 | 15 |  |
| 18 | Update risk matrix for week 3 | 5d | 2007-03-15 | 2007-03-21 |  |  |
| 19 | Update risk matrix for week 4 | 5d | 2007-03-22 | 2007-03-28 | 18 |  |
| 20 | Deliver monthly report and risk matrix to BAH (task 1.3.1) | 0d | 2007-03-28 | 2007-03-28 | 19 |  |
| 21 | BAH review monthly report and risk matrix (task 1.3.1) | 10d | 2007-03-29 | 2007-04-11 | 20 |  |
| 22 | **Requirements and use cases** | 30d | 2007-03-01 | 2007-04-11 | 2 |  |
| 23 | **Create level 1 use cases and requirements** | 2d | 2007-03-01 | 2007-03-02 |  |  |
| 24 | Use case document (task 3.1.1) | 1d | 2007-03-01 | 2007-03-01 |  |  |
| 25 | Requirements document (3.2.1) | 1d | 2007-03-02 | 2007-03-02 | 24 |  |
| 26 | **Update use case document (task 3.1.1, task 5.2.1)** | 9d | 2007-03-05 | 2007-03-15 | 23 |  |
| 27 | **Update eligibility use cases** | 9d | 2007-03-05 | 2007-03-15 |  |  |
| 31 | Adopter sign-off | 1d | 2007-03-15 | 2007-03-15 | 30 |  |
| 32 | **Update study personel use cases** | 9d | 2007-03-05 | 2007-03-15 |  |  |
| 36 | Adopter sign-off | 1d | 2007-03-15 | 2007-03-15 | 35 |  |
| 37 | **Update multi-site trial use cases** | 9d | 2007-03-05 | 2007-03-15 |  |  |
| 41 | Adopter sign-off | 1d | 2007-03-15 | 2007-03-15 | 40 |  |
| 42 | **Update requirements document (task 3.2.1, task 5.3.1)** | 9d | 2007-03-16 | 2007-03-28 | 26 |  |
| 43 | **Update eligibility requirements** | 9d | 2007-03-16 | 2007-03-28 |  |  |
| 46 | Developer update | 1d | 2007-03-27 | 2007-03-27 | 45 |  |
| 47 | Adopter sign-off | 1d | 2007-03-28 | 2007-03-28 | 46 |  |
| 48 | **Update study personel requirements** | 9d | 2007-03-16 | 2007-03-28 |  |  |
| 49 | Developer update | 2d | 2007-03-16 | 2007-03-19 |  |  |
| 51 | Developer update | 1d | 2007-03-27 | 2007-03-27 | 50 |  |
| 52 | Adopter sign-off | 1d | 2007-03-28 | 2007-03-28 | 51 |  |
| 53 | **Update multi-site trial requirements** | 9d | 2007-03-16 | 2007-03-28 |  |  |
| 54 | Developer update | 2d | 2007-03-16 | 2007-03-19 |  |  |
| 56 | Developer update | 1d | 2007-03-27 | 2007-03-27 | 55 |  |
| 57 | Adopter sign-off | 1d | 2007-03-28 | 2007-03-28 | 56 |  |
| 58 | Developer deliver use case document to BAH (task 3.1.1, task 5.2.1) | 0d | 2007-03-28 | 2007-03-28 | 42 |  |
| 59 | BAH review use case document (task 3.1.1, task 5.2.1) | 10d | 2007-03-29 | 2007-04-11 | 58 |  |
| 60 | Developer deliver requirements document to BAH (task 3.2.1, task 5.3.1) | 0d | 2007-03-28 | 2007-03-28 | 42 |  |
| 61 | BAH review requirements document (task 3.2.1, task 5.3.1) | 10d | 2007-03-29 | 2007-04-11 | 60 |  |
| 64 | Cursory BRIDG harmonization | 1d | 2007-03-05 | 2007-03-05 |  |  |
| 66 | Cursory system design | 2d | 2007-03-05 | 2007-03-06 |  |  |
| 67 | **Modeling (task 3.3.1)** | 27d | 2007-03-07 | 2007-04-12 | 63 |  |
| 68 | **Update model** | 6d | 2007-03-07 | 2007-03-14 |  |  |
| 69 | **BRIDG harmonization** | 3d | 2007-03-07 | 2007-03-09 | 63 |  |
| 70 | Harmonize Study model | 3d | 2007-03-07 | 2007-03-09 |  |  |
| 71 | Harmonize Personnel model | 3d | 2007-03-07 | 2007-03-09 |  |  |
| 72 | Harmonize Multi-site Study model | 3d | 2007-03-07 | 2007-03-09 |  |  |
| 73 | **Model implementation** | 3d | 2007-03-12 | 2007-03-14 | 69 |  |
| 74 | Implement Study model | 3d | 2007-03-12 | 2007-03-14 |  |  |
| 75 | Implement Personnel model | 3d | 2007-03-12 | 2007-03-14 |  |  |
| 76 | Implement Multi-site Study model | 3d | 2007-03-12 | 2007-03-14 |  |  |
| 78 | **Update model** | 6d | 2007-03-22 | 2007-03-29 | 77 |  |
| 79 | **BRIDG harmonization** | 3d | 2007-03-22 | 2007-03-26 | 77 |  |
| 80 | Harmonize Study model | 3d | 2007-03-22 | 2007-03-26 |  |  |
| 81 | Harmonize Personnel model | 3d | 2007-03-22 | 2007-03-26 |  |  |
| 82 | Harmonize Multi-site Study model | 3d | 2007-03-22 | 2007-03-26 |  |  |
| 83 | **Model implementation** | 3d | 2007-03-27 | 2007-03-29 | 79 |  |
| 84 | Implement Study model | 3d | 2007-03-27 | 2007-03-29 |  |  |
| 85 | Implement Personnel model | 3d | 2007-03-27 | 2007-03-29 |  |  |
| 86 | Implement Multi-site Study model | 3d | 2007-03-27 | 2007-03-29 |  |  |
| 87 | Developer deliver UML to BAH (task 3.3.1) | 0d | 2007-03-29 | 2007-03-29 | 78 |  |
| 88 | BAH review of UML (task 3.3.1) | 10d | 2007-03-30 | 2007-04-12 | 87 |  |
| 89 | **System design (task 3.4.1)** | 25d | 2007-03-07 | 2007-04-10 | 63 |  |
| 90 | **Design eligibility** | 15d | 2007-03-07 | 2007-03-27 |  |  |
| 91 | Draft UML | 5d | 2007-03-07 | 2007-03-13 |  |  |
| 92 | Team review | 5d | 2007-03-14 | 2007-03-20 | 91 |  |
| 93 | Update design document | 5d | 2007-03-21 | 2007-03-27 | 92 |  |
| 94 | **Design personnel** | 15d | 2007-03-07 | 2007-03-27 |  |  |
| 95 | Draft UML | 5d | 2007-03-07 | 2007-03-13 |  |  |
| 96 | Team review | 5d | 2007-03-14 | 2007-03-20 | 95 |  |
| 97 | Update design document | 5d | 2007-03-21 | 2007-03-27 | 96 |  |
| 98 | **Design multi-site study** | 15d | 2007-03-07 | 2007-03-27 |  |  |
| 99 | Draft UML | 5d | 2007-03-07 | 2007-03-13 |  |  |
| 100 | Team review | 5d | 2007-03-14 | 2007-03-20 | 99 |  |
| 101 | Update design document | 5d | 2007-03-21 | 2007-03-27 | 100 |  |
| 102 | Deliver design doc to BAH (task 3.4.1) | 0d | 2007-03-27 | 2007-03-27 | 90, 94, 98 |  |
| 103 | BAH review design doc (task 3.4.1) | 10d | 2007-03-28 | 2007-04-10 | 102 |  |
| 104 | **Implementation (task 3.5.1)** | 30d | 2007-03-07 | 2007-04-17 | 63 |  |
| 105 | Database | 20d | 2007-03-07 | 2007-04-03 |  |  |
| 106 | Deployment | 20d | 2007-03-07 | 2007-04-03 |  |  |
| 107 | Business layer | 20d | 2007-03-07 | 2007-04-03 |  |  |
| 108 | ESB | 20d | 2007-03-07 | 2007-04-03 |  |  |
| 109 | Web interface | 20d | 2007-03-07 | 2007-04-03 |  |  |
| 110 | Deliver codebase to BAH (task 3.5.1) | 0d | 2007-04-03 | 2007-04-03 | 105, 107, 108, 109 |  |
| 111 | BAH review codebase (task 3.5.1) | 10d | 2007-04-04 | 2007-04-17 | 110 |  |
| 113 | **Developer testing** | 30d | 2007-03-01 | 2007-04-11 |  |  |
| 114 | **Update developer test plan (task 3.6.1, task 5.4.1)** | 30d | 2007-03-01 | 2007-04-11 |  |  |
| 117 | Developer update | 5d | 2007-03-15 | 2007-03-21 | 116 |  |
| 118 | Adopter review and sign | 5d | 2007-03-22 | 2007-03-28 | 117 |  |
| 119 | Deliver signed test plan to BAH (task 3.6.1, task 5.4.1) | 0d | 2007-03-28 | 2007-03-28 | 118 |  |
| 120 | BAH review signed test plan (task 3.6.1, task 5.4.1) | 10d | 2007-03-29 | 2007-04-11 | 119 |  |
| 121 | **Integration and system testing (task 3.8.1)** | 10d | 2007-03-28 | 2007-04-10 | 110FS-5d, 115 |  |
| 122 | Generate test data | 1d | 2007-03-28 | 2007-03-28 |  |  |
| 123 | Write tests | 3d | 2007-03-28 | 2007-03-30 |  |  |
| 124 | Validate tests | 1d | 2007-04-02 | 2007-04-02 | 123 |  |
| 125 | Generate test report | 1d | 2007-04-03 | 2007-04-03 | 124 |  |
| 126 | Deliver test report to BAH (task 3.8.1) | 0d | 2007-03-28 | 2007-03-28 |  |  |
| 127 | BAH review test report (task 3.8.1) | 10d | 2007-03-28 | 2007-04-10 |  |  |
| 128 | **Adopter testing** | 30d | 2007-03-01 | 2007-04-11 |  |  |
| 129 | **Update adopter test plan (task 5.5.1)** | 30d | 2007-03-01 | 2007-04-11 |  |  |
| 130 | Adopter update test script | 5d | 2007-03-01 | 2007-03-07 |  |  |
| 131 | Adopter update test approach | 5d | 2007-03-08 | 2007-03-14 | 130 |  |
| 132 | Developer review | 5d | 2007-03-15 | 2007-03-21 | 131 |  |
| 133 | Adopter update | 5d | 2007-03-22 | 2007-03-28 | 132 |  |
| 134 | Developer deliver adopter test plan to BAH (task 5.5.1) | 0d | 2007-03-28 | 2007-03-28 | 133 |  |
| 135 | BAH review adopter test plan (task 5.5.1) | 10d | 2007-03-29 | 2007-04-11 | 134 |  |
| 136 | **QA testing (task 5.6.1)** | 22d | 2007-03-08 | 2007-04-06 | 130 |  |
| 137 | Adopter create test data | 5d | 2007-03-08 | 2007-03-14 |  |  |
| 138 | Adopter perform test script | 5d | 2007-03-15 | 2007-03-21 | 137 |  |
| 139 | Adopter document results | 2d | 2007-03-22 | 2007-03-23 | 138 |  |
| 140 | Adopter log bugs | 2d | 2007-03-26 | 2007-03-27 | 139 |  |
| 141 | Developer deliver adopter test report to BAH (task 5.6.1) | 0d | 2007-03-23 | 2007-03-23 | 139 |  |
| 142 | BAH review adopter test report (task 5.6.1) | 10d | 2007-03-26 | 2007-04-06 | 141 |  |
| 143 | **Documentation** | 15d | 2007-03-28 | 2007-04-17 |  |  |
| 144 | **Installation guide (task 3.10.1)** | 13d | 2007-03-30 | 2007-04-17 | 110FS-3d |  |
| 145 | Update installation guide | 3d | 2007-03-30 | 2007-04-03 |  |  |
| 146 | Deliver installation guide to BAH (task 3.10.1) | 0d | 2007-04-03 | 2007-04-03 | 145 |  |
| 147 | BAH review of installation guide (task 3.10.1) | 10d | 2007-04-04 | 2007-04-17 | 146 |  |
| 148 | **Administration guide (task 3.13.1)** | 13d | 2007-03-30 | 2007-04-17 | 110FS-3d |  |
| 149 | Update administration guide | 3d | 2007-03-30 | 2007-04-03 |  |  |
| 150 | Deliver administration guide to BAH (task 3.13.1) | 0d | 2007-04-03 | 2007-04-03 | 149 |  |
| 151 | BAH review of administration guide (task 3.13.1) | 10d | 2007-04-04 | 2007-04-17 | 150 |  |
| 152 | **Release notes (task 3.14.1)** | 13d | 2007-03-30 | 2007-04-17 | 110FS-3d |  |
| 153 | Update release notes | 3d | 2007-03-30 | 2007-04-03 |  |  |
| 154 | Deliver release notes to BAH (task 3.14.1) | 0d | 2007-04-03 | 2007-04-03 | 153 |  |
| 155 | BAH review of release notes (task 3.14.1) | 10d | 2007-04-04 | 2007-04-17 | 154 |  |
| 156 | **Adopter summary of C3PR (task 5.1.1)** | 15d | 2007-03-28 | 2007-04-17 | 110FS-5d |  |
| 157 | Adopter update summary | 3d | 2007-03-28 | 2007-03-30 |  |  |
| 158 | Developer review summary | 1d | 2007-04-02 | 2007-04-02 | 157 |  |
| 159 | Adopter update summary | 1d | 2007-04-03 | 2007-04-03 | 158 |  |
| 160 | Developer deliver C3PR summary to BAH (task 5.1.1) | 0d | 2007-04-03 | 2007-04-03 | 159 |  |
| 161 | BAH review of C3PR summary (task 5.1.1) | 10d | 2007-04-04 | 2007-04-17 | 160 |  |
| 233 | Harmonize Multi-site Study model | 3d | 2007-03-07 | 2007-03-09 |  |  |
| 237 | Implement Multi-site Study model | 3d | 2007-03-12 | 2007-03-14 |  |  |
| 243 | Harmonize Multi-site Study model | 3d | 2007-03-22 | 2007-03-26 |  |  |
| 247 | Implement Multi-site Study model | 3d | 2007-03-27 | 2007-03-29 |  |  |
| 267 | **Eligibility model** | 3d | 2007-03-07 | 2007-03-09 |  |  |
| 268 | Create DDLs | 1d | 2007-03-07 | 2007-03-07 |  |  |
| 269 | Apply to database | 1d | 2007-03-08 | 2007-03-08 | 268 |  |
| 270 | Create test data | 1d | 2007-03-09 | 2007-03-09 | 269 |  |
| 271 | **Study personnel** | 5d | 2007-03-07 | 2007-03-13 |  |  |
| 272 | Investigate how to implement Person with Role | 2d | 2007-03-07 | 2007-03-08 |  |  |
| 273 | Create DDLs | 1d | 2007-03-09 | 2007-03-09 | 272 |  |
| 274 | Apply to database | 1d | 2007-03-12 | 2007-03-12 | 273 |  |
| 275 | Create test data | 1d | 2007-03-13 | 2007-03-13 | 274 |  |
| 276 | **Multi-site** | 3d | 2007-03-07 | 2007-03-09 |  |  |
| 277 | Create DDLs | 1d | 2007-03-07 | 2007-03-07 |  |  |
| 278 | Apply to database | 1d | 2007-03-08 | 2007-03-08 | 277 |  |
| 279 | Create test data | 1d | 2007-03-09 | 2007-03-09 | 278 |  |
| 280 | **Deployment** | 2d | 2007-03-12 | 2007-03-13 |  |  |
| 281 | Deploy a second C3PR for multi-site testing | 2d | 2007-03-12 | 2007-03-13 | 276 |  |
| 283 | **Implement C3PR registration APIs** | 6d | 2007-03-14 | 2007-03-21 | 281 |  |
| 284 | Design APIs | 2d | 2007-03-14 | 2007-03-15 |  |  |
| 285 | Implement APIs | 3d | 2007-03-16 | 2007-03-20 | 284 |  |
| 286 | Deploy APIs | 1d | 2007-03-21 | 2007-03-21 | 285 |  |
| 288 | Implement inbound-binding component for C3PR registration | 5d | 2007-03-22 | 2007-03-28 | 283 |  |
| 290 | **Modify study management interface** | 5d | 2007-03-07 | 2007-03-13 |  |  |
| 291 | Manage eligibility criteria | 5d | 2007-03-07 | 2007-03-13 |  |  |
| 292 | Manage multi-site study | 5d | 2007-03-07 | 2007-03-13 |  |  |
| 293 | **Modify study personnel management interface** | 5d | 2007-03-07 | 2007-03-13 |  |  |
| 294 | Manage study personnel | 5d | 2007-03-07 | 2007-03-13 |  |  |
| 295 | **Modify registration interface** | 5d | 2007-03-07 | 2007-03-13 |  |  |
| 296 | Check eligibility | 5d | 2007-03-07 | 2007-03-13 |  |  |
| 330 | **Documentation** | 15d | 2007-03-26 | 2007-04-13 |  |  |
| 331 | **Installation guide (task 3.10.1)** | 13d | 2007-03-28 | 2007-04-13 | 297FS-3d |  |
| 332 | Update installation guide | 3d | 2007-03-28 | 2007-03-30 |  |  |
| 333 | Deliver installation guide to BAH (task 3.10.1) | 0d | 2007-03-30 | 2007-03-30 | 332 |  |
| 334 | BAH review of installation guide (task 3.10.1) | 10d | 2007-04-02 | 2007-04-13 | 333 |  |
| 335 | **Administration guide (task 3.13.1)** | 13d | 2007-03-28 | 2007-04-13 | 297FS-3d |  |
| 336 | Update administration guide | 3d | 2007-03-28 | 2007-03-30 |  |  |
| 337 | Deliver administration guide to BAH (task 3.13.1) | 0d | 2007-03-30 | 2007-03-30 | 336 |  |
| 338 | BAH review of administration guide (task 3.13.1) | 10d | 2007-04-02 | 2007-04-13 | 337 |  |
| 339 | **Release notes (task 3.14.1)** | 13d | 2007-03-28 | 2007-04-13 | 297FS-3d |  |
| 340 | Update release notes | 3d | 2007-03-28 | 2007-03-30 |  |  |
| 341 | Deliver release notes to BAH (task 3.14.1) | 0d | 2007-03-30 | 2007-03-30 | 340 |  |
| 342 | BAH review of release notes (task 3.14.1) | 10d | 2007-04-02 | 2007-04-13 | 341 |  |
| 343 | **Adopter summary of C3PR (task 5.1.1)** | 15d | 2007-03-26 | 2007-04-13 | 297FS-5d |  |
| 344 | Adopter update summary | 3d | 2007-03-26 | 2007-03-28 |  |  |
| 345 | Developer review summary | 1d | 2007-03-29 | 2007-03-29 | 344 |  |
| 346 | Adopter update summary | 1d | 2007-03-30 | 2007-03-30 | 345 |  |
| 347 | Developer deliver C3PR summary to BAH (task 5.1.1) | 0d | 2007-03-30 | 2007-03-30 | 346 |  |
| 348 | BAH review of C3PR summary (task 5.1.1) | 10d | 2007-04-02 | 2007-04-13 | 347 |  |
| 350 | **Iteration 2 (eligibility, study personnel, multi-site study)** | 108d? | 2006-11-01 | 2007-03-30 |  |  |
| 351 | **caDSR integration** | 10d | 2007-03-19 | 2007-03-30 | 356 |  |
| 352 | Review C3PR Release 1 code | 5d | 2007-03-19 | 2007-03-23 |  |  |
| 353 | Implement import eligibility criteria from caDSR | 5d | 2007-03-26 | 2007-03-30 | 352 |  |
| 355 | Business logic | 1d? | 2006-11-01 | 2006-11-01 |  |  |
| 356 | Implement import eligibility criteria from file | 5d | 2007-03-12 | 2007-03-16 | 267 |  |

Removed: 104 Grid services; 145 Perform cursory BRIDG harmonization; 147 Update design document (task 3.4.1); 155 Deliver to BAH; 157 Draft communication plan (task 1.2); 161 Deliver to BAH; 162 BAH review; 163 Draft risk matrix (task 1.4.1); 164 Developer draft; 165 Deliver to BAH; 166 BAH review; 168 Developer draft; 169 Deliver to BAH; 170 BAH review; 172 Developer draft; 173 Deliver to BAH; 174 BAH review; 175 Test plan document (task 2.6.1); 176 Developer draft; 179 Deliver to BAH; 180 BAH review; 181 Requirements; 182 Draft meeting notes from face-to-face (task 1.5); 183 Developer draft; 186 Deliver to BAH; 187 BAH review; 188 Refine vision and scope document (task 1.8); 189 Developer draft; 192 Deliver to BAH; 193 BAH review; 194 Draft level 1 use cases and requirements; 195 Developer draft; 196 Draft use case document (task 2.1.1); 197 Integrate level 1 use cases; 198 Draft protocol management use cases; 201 Deliver to BAH; 202 BAH review; 203 SRS document (task 2.2.1); 204 Developer draft; 207 Deliver to BAH; 208 BAH review; 209 Analysis and Design; 210 Design document (task 2.4.1); 211 Developer draft; 214 Deliver to BAH; 215 BAH review; 216 UML diagrams (task 2.3.1); 217 Developer draft; 220 Deliver to BAH; 221 BAH review; 222 ESB; 223 Evalutate technologies by prototyping; 224 Grid service; 225 Evaluate caGrid 1.0 service infrastructure; 226 Database; 227 First draft of protocol database structure; 228 Domain model; 229 Create protocol model harmonized with BRIDG; 230 Create first draft of protocol model; 231 Security; 232 Evaluate caGrid 1.0 security infrastructure; 233 Implementation; 234 Web interface; 235 Migrate v1 code into codebase; 236 Enterprise Service Bus; 237 Setup initial project; 238 Grid service; 239 Create grid service skeleton; 240 Database; 241 Migrate v1 code into codebase; 242 Implement protocol database structure; 243 Domain model; 244 Migrate v1 code into codebase; 245 Implement protocol model; 246 Create OR mapping for protocol model; 247 Business layer; 248 Migrate v1 code; 249 Prototype code (task 2.5.1); 250 Developer Draft; 251 Deliver to BAH; 252 BAH review; 254 Implement unit tests; 255 Test report (task 2.7.1); 256 Developer draft; 257 Deliver to BAH; 258 BAH review

Changed:

| ID | Task | Start | Finish | Duration | Complete | Total float | Predecessors | Other |
| --- | --- | --- | --- | --- | --- | --- | --- | --- |
| 3 | **Project Management** | 2006-11-01 A → 2007-03-01 (+120d) | 2007-03-14 → 2007-04-11 (+28d) | 96d → 30d | 95% → 0% | 21d → 4d | none → 2 |  |
| 4 | **Draft project plan (task 1.1)** | 2006-11-01 A → 2007-03-01 (+120d) | 2006-11-28 → 2007-04-11 (+134d) | 20d → 30d | 50% → 0% | 97d → 4d |  |  |
| 5 | Developer draft | 2006-11-01 A → 2007-03-01 (+120d) | 2006-11-07 A → 2007-03-07 (+120d) |  | 100% → 0% | none → 4d |  |  |
| 6 | BAH review | 2006-11-15 → 2007-03-08 (+113d) | 2006-11-28 → 2007-03-14 (+106d) | 10d → 5d |  | 97d → 4d | Deliver to BAH → 5 |  |
| 7 | Developer update | 2006-11-13 A → 2007-03-15 (+122d) | 2006-11-14 A → 2007-03-21 (+127d) | 2d → 5d | 100% → 0% | none → 4d | 8 → 6 |  |
| 8 | Adopter review | 2006-11-08 A → 2007-03-22 (+134d) | 2006-11-10 A → 2007-03-26 (+136d) |  | 100% → 0% | none → 4d | 5 → 7 |  |
| 9 | Developer update | 2006-11-24 A → 2007-03-27 (+123d) | 2006-11-30 A → 2007-03-28 (+118d) | 5d → 2d | 100% → 0% | none → 4d | 29 → 8 |  |
| 12 | **Update risk matrix (task 1.3.1)** | 2006-11-17 A → 2007-03-01 (+104d) | 2006-12-14 A → 2007-03-28 (+104d) |  | 100% → 0% | none → 4d |  |  |
| 17 | **Monthly report (task 1.3.1)** | 2006-11-01 A → 2007-03-15 (+134d) | 2006-12-14 A → 2007-04-11 (+118d) | 32d → 20d | 100% → 0% | none → 4d | none → 15 |  |
| 28 | Developer update | 2006-11-24 A → 2007-03-05 (+101d) | 2006-11-30 A → 2007-03-06 (+96d) | 5d → 2d | 100% → 0% | none → 4d | 34 → none |  |
| 29 | Adopter review | 2006-11-17 A → 2007-03-07 (+110d) | 2006-11-23 A → 2007-03-13 (+110d) |  | 100% → 0% | none → 4d | 115 → 28 |  |
| 30 | Developer update | 2006-11-24 A → 2007-03-14 (+110d) | 2006-11-30 A → 2007-03-14 (+104d) | 5d → 1d | 100% → 0% | none → 4d | 39 → 29 |  |
| 33 | Developer update | 2006-11-01 A → 2007-03-05 (+124d) | 2006-11-07 A → 2007-03-06 (+119d) | 5d → 2d | 100% → 0% | none → 4d | 45 → none |  |
| 34 | Adopter review | 2006-11-17 A → 2007-03-07 (+110d) | 2006-11-23 A → 2007-03-13 (+110d) |  | 100% → 0% | none → 4d | Developer draft → 33 |  |
| 35 | Developer update | 2006-11-24 A → 2007-03-14 (+110d) | 2006-11-30 A → 2007-03-14 (+104d) | 5d → 1d | 100% → 0% | none → 4d | 50 → 34 |  |
| 38 | Developer update | 2006-11-24 A → 2007-03-05 (+101d) | 2006-11-30 A → 2007-03-06 (+96d) | 5d → 2d | 100% → 0% | none → 4d | 55 → none |  |
| 39 | Adopter review | 2006-11-17 A → 2007-03-07 (+110d) | 2006-11-23 A → 2007-03-13 (+110d) |  | 100% → 0% | none → 4d | Developer draft → 38 |  |
| 40 | Developer update | 2006-11-24 A → 2007-03-14 (+110d) | 2006-11-30 A → 2007-03-14 (+104d) | 5d → 1d | 100% → 0% | none → 4d | 77 → 39 |  |
| 44 | Developer update | 2006-11-24 A → 2007-03-16 (+112d) | 2006-11-30 A → 2007-03-19 (+109d) | 5d → 2d | 100% → 0% | none → 4d | 116 → none |  |
| 45 | Adopter review | 2006-11-24 A → 2007-03-20 (+116d) | 2006-11-30 A → 2007-03-26 (+116d) |  | 100% → 0% | none → 4d | Developer draft → 44 |  |
| 50 | Adopter review | 2006-11-17 A → 2007-03-20 (+123d) | 2006-11-23 A → 2007-03-26 (+123d) |  | 100% → 0% | none → 4d | Draft protocol management use cases → 49 |  |
| 55 | Adopter review | 2006-11-17 A → 2007-03-20 (+123d) | 2006-11-23 A → 2007-03-26 (+123d) |  | 100% → 0% | none → 4d | Developer draft → 54 |  |
| 62 | **Analysis and Design** | 2006-11-01 → 2007-03-05 (+124d) | 2006-11-01 → 2007-04-12 (+162d) | 1d? → 29d |  | 116d → 0d | none → 23 |  |
| 63 | **Perform level 1 design** | 2006-11-01 → 2007-03-05 (+124d) | 2006-11-01 → 2007-03-06 (+125d) | 1d → 2d |  | 116d → 0d |  |  |
| 65 | Update implementation model | 2006-11-01 → 2007-03-06 (+125d) | 2006-11-01 → 2007-03-06 (+125d) |  |  | 116d → 0d | none → 64 |  |
| 77 | Adopter review | 2006-11-17 A → 2007-03-15 (+118d) | 2006-11-23 A → 2007-03-21 (+118d) |  | 100% → 0% | none → 3d | Developer draft → 68 |  |
| 112 | **Testing** | 2006-11-01 A → 2007-03-01 (+120d) | 2006-12-14 A → 2007-04-11 (+118d) | 32d → 30d | 100% → 0% | none → 4d | 163 → 2 |  |
| 115 | Developer draft | 2006-11-01 A → 2007-03-01 (+120d) | 2006-11-16 A → 2007-03-07 (+111d) | 12d → 5d | 100% → 0% | none → 4d |  |  |
| 116 | Adopter review | 2006-11-17 A → 2007-03-08 (+111d) | 2006-11-23 A → 2007-03-14 (+111d) |  | 100% → 0% | none → 4d | Developer draft → 115 |  |
| 162 | **Iteration 1 (eligibility, study personnel, multi-site study)** | 2006-11-01 → 2007-03-01 (+120d) | 2007-04-12 → 2007-04-13 (+1d) | 117d? → 32d |  | 0d → 2d |  | was named Iteration 1 |
| 164 | **Project Management** | 2006-11-01 → 2007-03-01 (+120d) | 2006-12-12 → 2007-04-11 (+120d) |  |  | 87d → 4d | none → 163 |  |
| 165 | **Draft project plan (task 1.1)** | 2006-11-01 → 2007-03-01 (+120d) | 2006-12-12 → 2007-04-11 (+120d) |  |  | 87d → 4d |  |  |
| 166 | Developer draft | 2006-11-01 → 2007-03-01 (+120d) | 2006-11-07 → 2007-03-07 (+120d) |  |  | 87d → 4d |  |  |
| 167 | BAH review | 2006-11-08 → 2007-03-08 (+120d) | 2006-11-14 → 2007-03-14 (+120d) |  |  | 87d → 4d |  |  |
| 168 | Developer update | 2006-11-15 → 2007-03-15 (+120d) | 2006-11-21 → 2007-03-21 (+120d) |  |  | 87d → 4d |  |  |
| 169 | Adopter review | 2006-11-22 → 2007-03-22 (+120d) | 2006-11-24 → 2007-03-26 (+122d) |  |  | 87d → 4d |  |  |
| 170 | Developer update | 2006-11-27 → 2007-03-27 (+120d) | 2006-11-28 → 2007-03-28 (+120d) |  |  | 87d → 4d |  |  |
| 171 | Deliver project plan to BAH (task 1.1) | 2006-11-28 → 2007-03-28 (+120d) | 2006-11-28 → 2007-03-28 (+120d) |  |  | 87d → 4d |  |  |
| 172 | BAH review project plan (task 1.1) | 2006-11-29 → 2007-03-29 (+120d) | 2006-12-12 → 2007-04-11 (+120d) |  |  | 87d → 4d |  |  |
| 173 | **Update risk matrix (task 1.3.1)** | 2006-11-01 → 2007-03-01 (+120d) | 2006-11-28 → 2007-03-28 (+120d) |  |  | 87d → 4d |  |  |
| 174 | Update risk matrix for week 1 | 2006-11-01 → 2007-03-01 (+120d) | 2006-11-07 → 2007-03-07 (+120d) |  |  | 87d → 4d |  |  |
| 175 | Update risk matrix for week 2 | 2006-11-08 → 2007-03-08 (+120d) | 2006-11-14 → 2007-03-14 (+120d) |  |  | 87d → 4d |  |  |
| 176 | Deliver risk matrix to BAH (task 1.3.1) | 2006-11-14 → 2007-03-14 (+120d) | 2006-11-14 → 2007-03-14 (+120d) |  |  | 87d → 4d |  |  |
| 177 | BAH review risk matrix (task 1.3.1) | 2006-11-15 → 2007-03-15 (+120d) | 2006-11-28 → 2007-03-28 (+120d) |  |  | 97d → 14d |  |  |
| 178 | **Monthly report (task 1.3.1)** | 2006-11-15 → 2007-03-15 (+120d) | 2006-12-12 → 2007-04-11 (+120d) |  |  | 87d → 4d |  |  |
| 179 | Update risk matrix for week 3 | 2006-11-15 → 2007-03-15 (+120d) | 2006-11-21 → 2007-03-21 (+120d) |  |  | 87d → 4d |  |  |
| 180 | Update risk matrix for week 4 | 2006-11-22 → 2007-03-22 (+120d) | 2006-11-28 → 2007-03-28 (+120d) |  |  | 87d → 4d |  |  |
| 181 | Deliver monthly report and risk matrix to BAH (task 1.3.1) | 2006-11-28 → 2007-03-28 (+120d) | 2006-11-28 → 2007-03-28 (+120d) |  |  | 87d → 4d |  |  |
| 182 | BAH review monthly report and risk matrix (task 1.3.1) | 2006-11-29 → 2007-03-29 (+120d) | 2006-12-12 → 2007-04-11 (+120d) |  |  | 87d → 4d |  |  |
| 265 | **Implementation (task 3.5.1)** |  | 2007-03-21 → 2007-04-13 (+23d) | 11d? → 28d |  | 11d → 2d |  |  |
| 266 | **Database** |  | 2007-03-07 → 2007-03-13 (+6d) | 1d? → 5d |  | 16d → 2d |  |  |
| 282 | **Business layer** | 2007-03-07 → 2007-03-14 (+7d) | 2007-03-07 → 2007-03-21 (+14d) | 1d? → 6d |  | 16d → 4d |  |  |
| 287 | **ESB** | 2007-03-07 → 2007-03-22 (+15d) | 2007-03-07 → 2007-03-28 (+21d) | 1d? → 5d |  | 16d → 4d |  |  |
| 289 | **Web interface** |  | 2007-03-07 → 2007-03-13 (+6d) | 1d? → 5d |  | 16d → 15d |  |  |
| 297 | Deliver codebase to BAH (task 3.5.1) | 2007-03-07 → 2007-03-30 (+23d) | 2007-03-07 → 2007-03-30 (+23d) |  |  | 16d → 2d | 266, 282, 287, Grid services, 289, 354 → 266, 282, 287, 289, 351 |  |
| 298 | BAH review codebase (task 3.5.1) | 2007-03-08 → 2007-04-02 (+25d) | 2007-03-21 → 2007-04-13 (+23d) |  |  | 16d → 2d |  |  |
| 308 | **Integration and system testing (task 3.8.1)** | 2007-03-15 → 2007-03-26 (+11d) | 2007-03-28 → 2007-04-06 (+9d) |  |  | 11d → 7d | 265FS-5d, 302 → 302, 297FS-5d |  |
| 309 | Generate test data | 2007-03-15 → 2007-03-26 (+11d) | 2007-03-15 → 2007-03-26 (+11d) |  |  | 20d → 16d |  |  |
| 310 | Write tests | 2007-03-15 → 2007-03-26 (+11d) | 2007-03-19 → 2007-03-28 (+9d) |  |  | 16d → 12d |  |  |
| 311 | Validate tests | 2007-03-20 → 2007-03-29 (+9d) | 2007-03-20 → 2007-03-29 (+9d) |  |  | 16d → 12d |  |  |
| 312 | Generate test report | 2007-03-21 → 2007-03-30 (+9d) | 2007-03-21 → 2007-03-30 (+9d) |  |  | 16d → 12d |  |  |
| 313 | Deliver test report to BAH (task 3.8.1) | 2007-03-15 → 2007-03-26 (+11d) | 2007-03-15 → 2007-03-26 (+11d) |  |  | 21d → 17d |  |  |
| 314 | BAH review test report (task 3.8.1) | 2007-03-15 → 2007-03-26 (+11d) | 2007-03-28 → 2007-04-06 (+9d) |  |  | 11d → 7d |  |  |
| 354 | Security | 2007-03-07 → 2006-11-01 (-126d) | 2007-03-07 → 2006-11-01 (-126d) |  |  | 16d → 119d |  |  |

## Version 3 (saved 2007-02-27)

Note of the change: updated with resources

Last finish 2007-04-17 → 2007-10-01 (+167d).

Added:

| ID | Task | Duration | Start | Finish | Predecessors | Constraint | Resources |
| --- | --- | --- | --- | --- | --- | --- | --- |
| 122 | **Implement eligibility APIs** | 7d | 2007-03-12 | 2007-03-20 | 106 |  | Kruttik; Priyatam |
| 123 | Design APIs | 2d | 2007-03-12 | 2007-03-13 |  |  | Kruttik; Priyatam |
| 124 | Implement APIs | 3d | 2007-03-14 | 2007-03-16 | 123 |  | Kruttik; Priyatam |
| 125 | Deploy APIs | 2d | 2007-03-19 | 2007-03-20 | 124 |  | Kruttik; Priyatam |
| 126 | **Implement study personnel APIs** | 6d | 2007-03-14 | 2007-03-21 | 110 |  | Ramakrishna |
| 127 | Design APIs | 2d | 2007-03-14 | 2007-03-15 |  |  | Ramakrishna |
| 128 | Implement APIs | 3d | 2007-03-16 | 2007-03-20 | 127 |  | Ramakrishna |
| 129 | Deploy APIs | 1d | 2007-03-21 | 2007-03-21 | 128 |  | Ramakrishna |
| 204 | **Iteration 3 (stratification, security, multi-site study)** | 0d | 2007-05-02 | 2007-05-02 |  |  |  |
| 205 | Iteration start | 0d | 2007-05-02 | 2007-05-02 |  | start no earlier than 2007-05-02 |  |
| 206 | **Iteration 4 (stratification, randomization, reporting, legacy systems)** | 0d | 2007-06-01 | 2007-06-01 |  |  |  |
| 207 | Iteration start | 0d | 2007-06-01 | 2007-06-01 |  | start no earlier than 2007-06-01 |  |
| 208 | **Iteration 5 (randomization, reporting, legacy systems)** | 0d | 2007-07-02 | 2007-07-02 |  |  |  |
| 209 | Iteration start | 0d | 2007-07-02 | 2007-07-02 |  | start no earlier than 2007-07-02 |  |
| 210 | **Iteration 6 (randomization, installer)** | 0d | 2007-08-01 | 2007-08-01 |  |  |  |
| 211 | Iteration start | 0d | 2007-08-01 | 2007-08-01 |  | start no earlier than 2007-08-01 |  |
| 212 | **Iteration 7** | 0d | 2007-09-03 | 2007-09-03 |  |  |  |
| 213 | Iteration start | 0d | 2007-09-03 | 2007-09-03 |  | start no earlier than 2007-09-03 |  |
| 214 | **Iteration 8** | 0d | 2007-10-01 | 2007-10-01 |  |  |  |
| 215 | Iteration start | 0d | 2007-10-01 | 2007-10-01 |  | start no earlier than 2007-10-01 |  |

Removed: 1 Template iteration (eligibility, study personnel, multi-site study); 3 Project Management; 4 Draft project plan (task 1.1); 5 Developer draft; 6 BAH review; 7 Developer update; 8 Adopter review; 9 Developer update; 10 Deliver project plan to BAH (task 1.1); 11 BAH review project plan (task 1.1); 12 Update risk matrix (task 1.3.1); 13 Update risk matrix for week 1; 14 Update risk matrix for week 2; 15 Deliver risk matrix to BAH (task 1.3.1); 16 BAH review risk matrix (task 1.3.1); 17 Monthly report (task 1.3.1); 18 Update risk matrix for week 3; 19 Update risk matrix for week 4; 20 Deliver monthly report and risk matrix to BAH (task 1.3.1); 21 BAH review monthly report and risk matrix (task 1.3.1); 22 Requirements and use cases; 23 Create level 1 use cases and requirements; 24 Use case document (task 3.1.1); 25 Requirements document (3.2.1); 26 Update use case document (task 3.1.1, task 5.2.1); 27 Update eligibility use cases; 28 Developer update; 29 Adopter review; 30 Developer update; 31 Adopter sign-off; 32 Update study personel use cases; 33 Developer update; 34 Adopter review; 35 Developer update; 36 Adopter sign-off; 37 Update multi-site trial use cases; 38 Developer update; 39 Adopter review; 40 Developer update; 41 Adopter sign-off; 42 Update requirements document (task 3.2.1, task 5.3.1); 43 Update eligibility requirements; 44 Developer update; 45 Adopter review; 46 Developer update; 47 Adopter sign-off; 48 Update study personel requirements; 49 Developer update; 50 Adopter review; 51 Developer update; 52 Adopter sign-off; 53 Update multi-site trial requirements; 54 Developer update; 55 Adopter review; 56 Developer update; 57 Adopter sign-off; 58 Developer deliver use case document to BAH (task 3.1.1, task 5.2.1); 59 BAH review use case document (task 3.1.1, task 5.2.1); 60 Developer deliver requirements document to BAH (task 3.2.1, task 5.3.1); 61 BAH review requirements document (task 3.2.1, task 5.3.1); 62 Analysis and Design; 63 Perform level 1 design; 64 Cursory BRIDG harmonization; 65 Update implementation model; 66 Cursory system design; 67 Modeling (task 3.3.1); 68 Update model; 69 BRIDG harmonization; 70 Harmonize Study model; 71 Harmonize Personnel model; 72 Harmonize Multi-site Study model; 73 Model implementation; 74 Implement Study model; 75 Implement Personnel model; 76 Implement Multi-site Study model; 77 Adopter review; 78 Update model; 79 BRIDG harmonization; 80 Harmonize Study model; 81 Harmonize Personnel model; 82 Harmonize Multi-site Study model; 83 Model implementation; 84 Implement Study model; 85 Implement Personnel model; 86 Implement Multi-site Study model; 87 Developer deliver UML to BAH (task 3.3.1); 88 BAH review of UML (task 3.3.1); 89 System design (task 3.4.1); 90 Design eligibility; 91 Draft UML; 92 Team review; 93 Update design document; 94 Design personnel; 95 Draft UML; 96 Team review; 97 Update design document; 98 Design multi-site study; 99 Draft UML; 100 Team review; 101 Update design document; 102 Deliver design doc to BAH (task 3.4.1); 103 BAH review design doc (task 3.4.1); 105 Database; 106 Deployment; 107 Business layer; 108 ESB; 109 Web interface; 110 Deliver codebase to BAH (task 3.5.1); 111 BAH review codebase (task 3.5.1); 112 Testing; 113 Developer testing; 114 Update developer test plan (task 3.6.1, task 5.4.1); 115 Developer draft; 116 Adopter review; 117 Developer update; 118 Adopter review and sign; 119 Deliver signed test plan to BAH (task 3.6.1, task 5.4.1); 120 BAH review signed test plan (task 3.6.1, task 5.4.1); 121 Integration and system testing (task 3.8.1); 122 Generate test data; 123 Write tests; 124 Validate tests; 125 Generate test report; 126 Deliver test report to BAH (task 3.8.1); 127 BAH review test report (task 3.8.1); 128 Adopter testing; 129 Update adopter test plan (task 5.5.1); 130 Adopter update test script; 131 Adopter update test approach; 132 Developer review; 133 Adopter update; 134 Developer deliver adopter test plan to BAH (task 5.5.1); 135 BAH review adopter test plan (task 5.5.1); 136 QA testing (task 5.6.1); 137 Adopter create test data; 138 Adopter perform test script; 139 Adopter document results; 140 Adopter log bugs; 141 Developer deliver adopter test report to BAH (task 5.6.1); 142 BAH review adopter test report (task 5.6.1); 143 Documentation; 144 Installation guide (task 3.10.1); 145 Update installation guide; 146 Deliver installation guide to BAH (task 3.10.1); 147 BAH review of installation guide (task 3.10.1); 148 Administration guide (task 3.13.1); 149 Update administration guide; 150 Deliver administration guide to BAH (task 3.13.1); 151 BAH review of administration guide (task 3.13.1); 152 Release notes (task 3.14.1); 153 Update release notes; 154 Deliver release notes to BAH (task 3.14.1); 155 BAH review of release notes (task 3.14.1); 156 Adopter summary of C3PR (task 5.1.1); 157 Adopter update summary; 158 Developer review summary; 159 Adopter update summary; 160 Developer deliver C3PR summary to BAH (task 5.1.1); 161 BAH review of C3PR summary (task 5.1.1); 355 Business logic

Changed:

| ID | Task | Finish | Duration | Total float | Predecessors | Other |
| --- | --- | --- | --- | --- | --- | --- |
| 1 | **Iteration 1 (eligibility, study personnel, multi-site study)** | 2007-04-13 → 2007-05-04 (+21d) | 32d → 47d | 2d → 105d |  |  |
| 3 | **Project Management** |  |  | 4d → 122d |  | resources none → Patrick; Adopters; BAH |
| 4 | **Draft project plan (task 1.1)** |  |  | 4d → 122d |  | resources none → Patrick; Adopters; BAH |
| 5 | Developer draft |  |  | 4d → 122d |  | resources none → Patrick |
| 6 | BAH review |  |  | 4d → 122d |  | resources none → BAH |
| 7 | Developer update |  |  | 4d → 122d |  | resources none → Patrick |
| 8 | Adopter review |  |  | 4d → 122d |  | resources none → Adopters |
| 9 | Developer update |  |  | 4d → 122d |  | resources none → Patrick |
| 10 | Deliver project plan to BAH (task 1.1) |  |  | 4d → 122d |  | resources none → Patrick |
| 11 | BAH review project plan (task 1.1) |  |  | 4d → 122d |  | resources none → BAH |
| 12 | **Update risk matrix (task 1.3.1)** |  |  | 4d → 122d |  | resources none → Patrick; BAH |
| 13 | Update risk matrix for week 1 |  |  | 4d → 122d |  | resources none → Patrick |
| 14 | Update risk matrix for week 2 |  |  | 4d → 122d |  | resources none → Patrick |
| 15 | Deliver risk matrix to BAH (task 1.3.1) |  |  | 4d → 122d |  | resources none → Patrick |
| 16 | BAH review risk matrix (task 1.3.1) |  |  | 14d → 132d |  | resources none → BAH |
| 17 | **Monthly report (task 1.3.1)** |  |  | 4d → 122d |  | resources none → Patrick; BAH |
| 18 | Update risk matrix for week 3 |  |  | 4d → 122d |  | resources none → Patrick |
| 19 | Update risk matrix for week 4 |  |  | 4d → 122d |  | resources none → Patrick |
| 20 | Deliver monthly report and risk matrix to BAH (task 1.3.1) |  |  | 4d → 122d |  | resources none → Patrick |
| 21 | BAH review monthly report and risk matrix (task 1.3.1) |  |  | 4d → 122d |  | resources none → BAH |
| 22 | **Requirements and use cases** |  |  | 2d → 120d |  | resources none → Developers; Adopters; BAH |
| 23 | **Create level 1 use cases and requirements** |  |  | 2d → 120d |  | resources none → Developers |
| 24 | Use case document (task 3.1.1) |  |  | 2d → 120d |  | resources none → Developers |
| 25 | Requirements document (3.2.1) |  |  | 2d → 120d |  | resources none → Developers |
| 26 | **Update use case document (task 3.1.1, task 5.2.1)** |  |  | 4d → 122d |  | resources none → Developers; Adopters |
| 27 | **Update eligibility use cases** |  |  | 4d → 122d |  | resources none → Kruttik; Priyatam; Adopters |
| 28 | Developer update |  |  | 4d → 122d |  | resources none → Kruttik; Priyatam |
| 29 | Adopter review |  |  | 4d → 122d |  | resources none → Adopters |
| 30 | Developer update |  |  | 4d → 122d |  | resources none → Kruttik; Priyatam |
| 31 | Adopter sign-off |  |  | 4d → 122d |  | resources none → Adopters |
| 32 | **Update study personel use cases** |  |  | 4d → 122d |  | resources none → Ramakrishna; Adopters |
| 33 | Developer update |  |  | 4d → 122d |  | resources none → Ramakrishna |
| 34 | Adopter review |  |  | 4d → 122d |  | resources none → Adopters |
| 35 | Developer update |  |  | 4d → 122d |  | resources none → Ramakrishna |
| 36 | Adopter sign-off |  |  | 4d → 122d |  | resources none → Adopters |
| 37 | **Update multi-site trial use cases** |  |  | 4d → 122d |  | resources none → Manav; Adopters |
| 38 | Developer update |  |  | 4d → 122d |  | resources none → Manav |
| 39 | Adopter review |  |  | 4d → 122d |  | resources none → Adopters |
| 40 | Developer update |  |  | 4d → 122d |  | resources none → Manav |
| 41 | Adopter sign-off |  |  | 4d → 122d |  | resources none → Adopters |
| 42 | **Update requirements document (task 3.2.1, task 5.3.1)** |  |  | 4d → 122d |  | resources none → Developers; Adopters |
| 43 | **Update eligibility requirements** |  |  | 4d → 122d |  | resources none → Kruttik; Priyatam; Adopters |
| 44 | Developer update |  |  | 4d → 122d |  | resources none → Kruttik; Priyatam |
| 45 | Adopter review |  |  | 4d → 122d |  | resources none → Adopters |
| 46 | Developer update |  |  | 4d → 122d |  | resources none → Kruttik; Priyatam |
| 47 | Adopter sign-off |  |  | 4d → 122d |  | resources none → Adopters |
| 48 | **Update study personel requirements** |  |  | 4d → 122d |  | resources none → Ramakrishna; Adopters |
| 49 | Developer update |  |  | 4d → 122d |  | resources none → Ramakrishna |
| 50 | Adopter review |  |  | 4d → 122d |  | resources none → Adopters |
| 51 | Developer update |  |  | 4d → 122d |  | resources none → Ramakrishna |
| 52 | Adopter sign-off |  |  | 4d → 122d |  | resources none → Adopters |
| 53 | **Update multi-site trial requirements** |  |  | 4d → 122d |  | resources none → Manav; Adopters |
| 54 | Developer update |  |  | 4d → 122d |  | resources none → Manav |
| 55 | Adopter review |  |  | 4d → 122d |  | resources none → Adopters |
| 56 | Developer update |  |  | 4d → 122d |  | resources none → Manav |
| 57 | Adopter sign-off |  |  | 4d → 122d |  | resources none → Adopters |
| 58 | Developer deliver use case document to BAH (task 3.1.1, task 5.2.1) |  |  | 4d → 122d |  | resources none → Patrick |
| 59 | BAH review use case document (task 3.1.1, task 5.2.1) |  |  | 4d → 122d |  | resources none → BAH |
| 60 | Developer deliver requirements document to BAH (task 3.2.1, task 5.3.1) |  |  | 4d → 122d |  | resources none → Patrick |
| 61 | BAH review requirements document (task 3.2.1, task 5.3.1) |  |  | 4d → 122d |  | resources none → BAH |
| 62 | **Analysis and Design** |  |  | 2d → 120d | 23 → 23, 2 | resources none → Developers; Adopters; BAH |
| 63 | **Perform level 1 design** |  |  | 2d → 120d |  | resources none → Developers |
| 64 | Cursory BRIDG harmonization |  |  | 2d → 120d |  | resources none → Developers |
| 65 | Update implementation model |  |  | 2d → 120d |  | resources none → Developers |
| 66 | Cursory system design |  |  | 2d → 120d |  | resources none → Developers |
| 67 | **Modeling (task 3.3.1)** |  |  | 3d → 121d |  | resources none → Developers; Adopters |
| 68 | **Update model** |  |  | 3d → 121d |  | resources none → Developers |
| 70 | Harmonize Study model | 2007-03-09 → 2007-03-08 (-1d) | 3d → 2d | 3d → 122d |  | resources none → Kruttik; Priyatam; Manav |
| 71 | Harmonize Personnel model |  |  | 3d → 121d |  | resources none → Ramakrishna |
| 72 | Harmonize Multi-site Study model |  |  | 3d → 121d |  | resources none → Manav |

| ID | Task | Start | Finish | Duration | Total float | Predecessors | Other |
| --- | --- | --- | --- | --- | --- | --- | --- |
| 74 | Implement Study model |  |  |  | 3d → 121d |  | resources none → Kruttik; Priyatam; Manav |
| 75 | Implement Personnel model |  |  |  | 3d → 121d |  | resources none → Ramakrishna |
| 76 | Implement Multi-site Study model |  |  |  | 3d → 121d |  | resources none → Manav |
| 77 | Adopter review |  |  |  | 3d → 121d |  | resources none → Adopters |
| 78 | **Update model** |  |  |  | 3d → 121d |  | resources none → Developers |
| 80 | Harmonize Study model |  |  |  | 3d → 121d |  | resources none → Kruttik; Priyatam; Manav |
| 81 | Harmonize Personnel model |  |  |  | 3d → 121d |  | resources none → Ramakrishna |
| 82 | Harmonize Multi-site Study model |  |  |  | 3d → 121d |  | resources none → Manav |
| 84 | Implement Study model |  |  |  | 3d → 121d |  | resources none → Kruttik; Priyatam; Manav |
| 85 | Implement Personnel model |  |  |  | 3d → 121d |  | resources none → Ramakrishna |
| 86 | Implement Multi-site Study model |  |  |  | 3d → 121d |  | resources none → Manav |
| 87 | Developer deliver UML to BAH (task 3.3.1) |  |  |  | 3d → 121d |  | resources none → Patrick |
| 88 | BAH review of UML (task 3.3.1) |  |  |  | 3d → 121d |  | resources none → BAH |
| 89 | **System design (task 3.4.1)** |  |  |  | 5d → 123d |  | resources none → Developers; BAH |
| 90 | **Design eligibility** |  |  |  | 5d → 123d |  | resources none → Kruttik; Priyatam |
| 91 | Draft UML |  |  |  | 5d → 123d |  | resources none → Kruttik; Priyatam |
| 92 | Team review |  |  |  | 5d → 123d |  | resources none → Kruttik; Priyatam |
| 93 | Update design document |  |  |  | 5d → 123d |  | resources none → Kruttik; Priyatam |
| 94 | **Design personnel** |  |  |  | 5d → 123d |  | resources none → Ramakrishna |
| 95 | Draft UML |  |  |  | 5d → 123d |  | resources none → Ramakrishna |
| 96 | Team review |  |  |  | 5d → 123d |  | resources none → Ramakrishna |
| 97 | Update design document |  |  |  | 5d → 123d |  | resources none → Ramakrishna |
| 98 | **Design multi-site study** |  |  |  | 5d → 123d |  | resources none → Manav |
| 99 | Draft UML |  |  |  | 5d → 123d |  | resources none → Manav |
| 100 | Team review |  |  |  | 5d → 123d |  | resources none → Manav |
| 101 | Update design document |  |  |  | 5d → 123d |  | resources none → Manav |
| 102 | Deliver design doc to BAH (task 3.4.1) |  |  |  | 5d → 123d |  | resources none → Patrick |
| 103 | BAH review design doc (task 3.4.1) |  |  |  | 5d → 123d |  | resources none → BAH |
| 104 | **Implementation (task 3.5.1)** |  | 2007-04-13 → 2007-05-04 (+21d) | 28d → 43d | 2d → 105d | 63 → 63, 2 | resources none → Developers; BAH |
| 105 | **Database** |  |  |  | 2d → 120d |  | resources none → Developers |
| 106 | **Eligibility model** |  |  |  | 2d → 120d |  | resources none → Kruttik; Priyatam |
| 107 | Create DDLs |  |  |  | 2d → 120d |  | resources none → Kruttik; Priyatam |
| 108 | Apply to database |  |  |  | 2d → 120d |  | resources none → Kruttik; Priyatam |
| 109 | Create test data |  |  |  | 2d → 120d |  | resources none → Kruttik; Priyatam |
| 110 | **Study personnel** |  |  |  | 13d → 122d |  | resources none → Ramakrishna |
| 111 | Investigate how to implement Person with Role |  |  |  | 13d → 122d |  | resources none → Ramakrishna |
| 112 | Create DDLs |  |  |  | 13d → 122d |  | resources none → Ramakrishna |
| 113 | Apply to database |  |  |  | 13d → 122d |  | resources none → Ramakrishna |
| 114 | Create test data |  |  |  | 13d → 122d |  | resources none → Ramakrishna |
| 115 | **Multi-site** |  |  |  | 4d → 124d |  | resources none → Manav |
| 116 | Create DDLs |  |  |  | 4d → 124d |  | resources none → Manav |
| 117 | Apply to database |  |  |  | 4d → 124d |  | resources none → Manav |
| 118 | Create test data |  |  |  | 4d → 124d |  | resources none → Manav |
| 119 | **Deployment** |  |  |  | 4d → 143d |  | resources none → Manav |
| 120 | Deploy a second C3PR for multi-site testing |  |  |  | 4d → 143d |  | resources none → Manav |
| 121 | **Business layer** | 2007-03-14 → 2007-03-12 (-2d) |  | 6d → 8d | 4d → 122d |  | resources none → Developers |
| 130 | **Implement C3PR registration APIs** | 2007-03-14 → 2007-03-12 (-2d) | 2007-03-21 → 2007-03-19 (-2d) |  | 4d → 124d | 120 → 115 | resources none → Manav |
| 131 | Design APIs | 2007-03-14 → 2007-03-12 (-2d) | 2007-03-15 → 2007-03-13 (-2d) |  | 4d → 124d |  | resources none → Manav |
| 132 | Implement APIs | 2007-03-16 → 2007-03-14 (-2d) | 2007-03-20 → 2007-03-16 (-4d) |  | 4d → 124d |  | resources none → Manav |
| 133 | Deploy APIs | 2007-03-21 → 2007-03-19 (-2d) | 2007-03-21 → 2007-03-19 (-2d) |  | 4d → 124d |  | resources none → Manav |
| 134 | **ESB** | 2007-03-22 → 2007-03-20 (-2d) | 2007-03-28 → 2007-03-26 (-2d) |  | 4d → 124d |  | resources none → Manav |
| 135 | Implement inbound-binding component for C3PR registration | 2007-03-22 → 2007-03-20 (-2d) | 2007-03-28 → 2007-03-26 (-2d) |  | 4d → 124d |  | resources none → Manav |
| 136 | **Web interface** | 2007-03-07 → 2007-03-20 (+13d) | 2007-03-13 → 2007-03-28 (+15d) | 5d → 7d | 15d → 122d |  | resources none → Developers |
| 137 | **Modify study management interface** | 2007-03-07 → 2007-03-20 (+13d) | 2007-03-13 → 2007-03-27 (+14d) | 5d → 6d | 15d → 123d |  | resources none → Kruttik; Priyatam; Manav |
| 138 | Manage eligibility criteria | 2007-03-07 → 2007-03-21 (+14d) | 2007-03-13 → 2007-03-27 (+14d) |  | 15d → 123d | none → 122 | resources none → Kruttik; Priyatam; Manav |
| 139 | Manage multi-site study | 2007-03-07 → 2007-03-20 (+13d) | 2007-03-13 → 2007-03-26 (+13d) |  | 15d → 124d | none → 130 | resources none → Kruttik; Priyatam; Manav |
| 140 | **Modify study personnel management interface** | 2007-03-07 → 2007-03-22 (+15d) | 2007-03-13 → 2007-03-28 (+15d) |  | 15d → 122d |  | resources none → Ramakrishna |
| 141 | Manage study personnel | 2007-03-07 → 2007-03-22 (+15d) | 2007-03-13 → 2007-03-28 (+15d) |  | 15d → 122d | none → 126 | resources none → Ramakrishna |
| 142 | **Modify registration interface** | 2007-03-07 → 2007-03-21 (+14d) | 2007-03-13 → 2007-03-27 (+14d) |  | 15d → 123d |  | resources none → Kruttik; Priyatam |
| 143 | Check eligibility | 2007-03-07 → 2007-03-21 (+14d) | 2007-03-13 → 2007-03-27 (+14d) |  | 15d → 123d | none → 122 | resources none → Kruttik; Priyatam |
| 144 | Deliver codebase to BAH (task 3.5.1) | 2007-03-30 → 2007-04-20 (+21d) | 2007-03-30 → 2007-04-20 (+21d) |  | 2d → 105d |  | resources none → Patrick |
| 145 | BAH review codebase (task 3.5.1) | 2007-04-02 → 2007-04-23 (+21d) | 2007-04-13 → 2007-05-04 (+21d) |  | 2d → 105d |  | resources none → BAH |
| 146 | **Testing** |  | 2007-04-11 → 2007-04-27 (+16d) | 30d → 42d | 4d → 110d |  | resources none → Developers; Adopters; BAH |
| 147 | **Developer testing** |  | 2007-04-11 → 2007-04-27 (+16d) | 30d → 42d | 4d → 110d |  | resources none → BAH; Adopters; Developers |
| 148 | **Update developer test plan (task 3.6.1, task 5.4.1)** |  |  |  | 4d → 122d |  | resources none → Developers; Adopters; BAH |
| 149 | Developer draft |  |  |  | 4d → 122d |  | resources none → Developers |
| 150 | Adopter review |  |  |  | 4d → 122d |  | resources none → Adopters |
| 151 | Developer update |  |  |  | 4d → 122d |  | resources none → Developers |
| 152 | Adopter review and sign |  |  |  | 4d → 122d |  | resources none → Adopters |
| 153 | Deliver signed test plan to BAH (task 3.6.1, task 5.4.1) |  |  |  | 4d → 122d |  | resources none → Patrick |

| ID | Task | Start | Finish | Duration | Total float | Predecessors | Other |
| --- | --- | --- | --- | --- | --- | --- | --- |
| 154 | BAH review signed test plan (task 3.6.1, task 5.4.1) |  |  |  | 4d → 122d |  | resources none → BAH |
| 155 | **Integration and system testing (task 3.8.1)** | 2007-03-26 → 2007-04-16 (+21d) | 2007-04-06 → 2007-04-27 (+21d) |  | 7d → 110d |  | resources none → Developers; BAH |
| 156 | Generate test data | 2007-03-26 → 2007-04-16 (+21d) | 2007-03-26 → 2007-04-16 (+21d) |  | 16d → 119d |  | resources none → Developers |
| 157 | Write tests | 2007-03-26 → 2007-04-16 (+21d) | 2007-03-28 → 2007-04-18 (+21d) |  | 12d → 115d |  | resources none → Developers |
| 158 | Validate tests | 2007-03-29 → 2007-04-19 (+21d) | 2007-03-29 → 2007-04-19 (+21d) |  | 12d → 115d |  | resources none → Developers |
| 159 | Generate test report | 2007-03-30 → 2007-04-20 (+21d) | 2007-03-30 → 2007-04-20 (+21d) |  | 12d → 115d |  | resources none → Developers |
| 160 | Deliver test report to BAH (task 3.8.1) | 2007-03-26 → 2007-04-16 (+21d) | 2007-03-26 → 2007-04-16 (+21d) |  | 17d → 120d |  | resources none → Patrick |
| 161 | BAH review test report (task 3.8.1) | 2007-03-26 → 2007-04-16 (+21d) | 2007-04-06 → 2007-04-27 (+21d) |  | 7d → 110d |  | resources none → BAH |
| 162 | **Adopter testing** |  |  |  | 4d → 122d |  | resources none → Adopters; Developers; BAH |
| 163 | **Update adopter test plan (task 5.5.1)** |  |  |  | 4d → 122d |  | resources none → Adopters; Developers; BAH |
| 164 | Adopter update test script |  |  |  | 4d → 122d |  | resources none → Adopters |
| 165 | Adopter update test approach |  |  |  | 4d → 122d |  | resources none → Adopters |
| 166 | Developer review |  |  |  | 4d → 122d |  | resources none → Patrick; Ram |
| 167 | Adopter update |  |  |  | 4d → 122d |  | resources none → Adopters |
| 168 | Developer deliver adopter test plan to BAH (task 5.5.1) |  |  |  | 4d → 122d |  | resources none → Patrick |
| 169 | BAH review adopter test plan (task 5.5.1) |  |  |  | 4d → 122d |  | resources none → BAH |
| 170 | **QA testing (task 5.6.1)** |  |  |  | 7d → 125d |  | resources none → Adopters; BAH |
| 171 | Adopter create test data |  |  |  | 7d → 125d |  | resources none → Adopters |
| 172 | Adopter perform test script |  |  |  | 7d → 125d |  | resources none → Adopters |
| 173 | Adopter document results |  |  |  | 7d → 125d |  | resources none → Adopters |
| 174 | Adopter log bugs |  |  |  | 15d → 133d |  | resources none → Adopters |
| 175 | Developer deliver adopter test report to BAH (task 5.6.1) |  |  |  | 7d → 125d |  | resources none → Patrick |
| 176 | BAH review adopter test report (task 5.6.1) |  |  |  | 7d → 125d |  | resources none → BAH |
| 177 | **Documentation** | 2007-03-26 → 2007-04-16 (+21d) | 2007-04-13 → 2007-05-04 (+21d) |  | 2d → 105d | none → 2 | resources none → Developers; Adopters; BAH |
| 178 | **Installation guide (task 3.10.1)** | 2007-03-28 → 2007-04-18 (+21d) | 2007-04-13 → 2007-05-04 (+21d) |  | 2d → 105d |  | resources none → Developers; BAH |
| 179 | Update installation guide | 2007-03-28 → 2007-04-18 (+21d) | 2007-03-30 → 2007-04-20 (+21d) |  | 2d → 105d |  | resources none → Developers |
| 180 | Deliver installation guide to BAH (task 3.10.1) | 2007-03-30 → 2007-04-20 (+21d) | 2007-03-30 → 2007-04-20 (+21d) |  | 2d → 105d |  | resources none → Patrick |
| 181 | BAH review of installation guide (task 3.10.1) | 2007-04-02 → 2007-04-23 (+21d) | 2007-04-13 → 2007-05-04 (+21d) |  | 2d → 105d |  | resources none → BAH |
| 182 | **Administration guide (task 3.13.1)** | 2007-03-28 → 2007-04-18 (+21d) | 2007-04-13 → 2007-05-04 (+21d) |  | 2d → 105d |  | resources none → Developers; BAH |
| 183 | Update administration guide | 2007-03-28 → 2007-04-18 (+21d) | 2007-03-30 → 2007-04-20 (+21d) |  | 2d → 105d |  | resources none → Developers |
| 184 | Deliver administration guide to BAH (task 3.13.1) | 2007-03-30 → 2007-04-20 (+21d) | 2007-03-30 → 2007-04-20 (+21d) |  | 2d → 105d |  | resources none → Patrick |
| 185 | BAH review of administration guide (task 3.13.1) | 2007-04-02 → 2007-04-23 (+21d) | 2007-04-13 → 2007-05-04 (+21d) |  | 2d → 105d |  | resources none → BAH |
| 186 | **Release notes (task 3.14.1)** | 2007-03-28 → 2007-04-18 (+21d) | 2007-04-13 → 2007-05-04 (+21d) |  | 2d → 105d |  | resources none → Developers; BAH |
| 187 | Update release notes | 2007-03-28 → 2007-04-18 (+21d) | 2007-03-30 → 2007-04-20 (+21d) |  | 2d → 105d |  | resources none → Developers |
| 188 | Deliver release notes to BAH (task 3.14.1) | 2007-03-30 → 2007-04-20 (+21d) | 2007-03-30 → 2007-04-20 (+21d) |  | 2d → 105d |  | resources none → Patrick |
| 189 | BAH review of release notes (task 3.14.1) | 2007-04-02 → 2007-04-23 (+21d) | 2007-04-13 → 2007-05-04 (+21d) |  | 2d → 105d |  | resources none → BAH |
| 190 | **Adopter summary of C3PR (task 5.1.1)** | 2007-03-26 → 2007-04-16 (+21d) | 2007-04-13 → 2007-05-04 (+21d) |  | 2d → 105d |  | resources none → Adopters; BAH |
| 191 | Adopter update summary | 2007-03-26 → 2007-04-16 (+21d) | 2007-03-28 → 2007-04-18 (+21d) |  | 2d → 105d |  | resources none → Adopters |
| 192 | Developer review summary | 2007-03-29 → 2007-04-19 (+21d) | 2007-03-29 → 2007-04-19 (+21d) |  | 2d → 105d |  | resources none → Adopters |
| 193 | Adopter update summary | 2007-03-30 → 2007-04-20 (+21d) | 2007-03-30 → 2007-04-20 (+21d) |  | 2d → 105d |  | resources none → Adopters |
| 194 | Developer deliver C3PR summary to BAH (task 5.1.1) | 2007-03-30 → 2007-04-20 (+21d) | 2007-03-30 → 2007-04-20 (+21d) |  | 2d → 105d |  | resources none → Patrick |
| 195 | BAH review of C3PR summary (task 5.1.1) | 2007-04-02 → 2007-04-23 (+21d) | 2007-04-13 → 2007-05-04 (+21d) |  | 2d → 105d |  | resources none → BAH |
| 196 | **Iteration 2 (eligibility, study personnel, security, multi-site study)** | 2006-11-01 → 2007-04-02 (+152d) | 2007-03-30 → 2007-04-27 (+28d) | 108d? → 20d | 12d → 105d |  | was named Iteration 2 (eligibility, study personnel, multi-site study) |
| 197 | Iteration start | 2007-03-01 → 2007-04-02 (+32d) | 2007-03-01 → 2007-04-02 (+32d) |  | 0d → 105d |  | constraint start no earlier than 2007-03-01 → start no earlier than 2007-04-02 |
| 198 | **Implementation (task 3.5.1)** | 2007-03-07 → 2007-04-02 (+26d) | 2007-04-17 → 2007-04-27 (+10d) | 30d → 20d | 0d → 105d | Perform level 1 design → 197 |  |
| 199 | Implement import eligibility criteria from file | 2007-03-12 → 2007-04-02 (+21d) | 2007-03-16 → 2007-04-06 (+21d) |  | 2d → 105d |  |  |
| 200 | **caDSR integration** | 2007-03-19 → 2007-04-09 (+21d) | 2007-03-30 → 2007-04-20 (+21d) |  | 2d → 105d |  |  |
| 201 | Review C3PR Release 1 code | 2007-03-19 → 2007-04-09 (+21d) | 2007-03-23 → 2007-04-13 (+21d) |  | 2d → 105d |  |  |
| 202 | Implement import eligibility criteria from caDSR | 2007-03-26 → 2007-04-16 (+21d) | 2007-03-30 → 2007-04-20 (+21d) |  | 2d → 105d |  |  |
| 203 | Security | 2006-11-01 → 2007-04-02 (+152d) | 2006-11-01 → 2007-04-27 (+177d) | 1d? → 20d | 119d → 110d |  |  |

## Version 4 (saved 2007-02-28)

Note of the change: iteration 2 draft

Last finish stays 2007-10-01.

Added:

| ID | Task | Duration | Start | Finish | Predecessors | Resources |
| --- | --- | --- | --- | --- | --- | --- |
| 198 | **Project Management** | 30d | 2007-04-02 | 2007-05-11 | 197 | Patrick; Adopters; BAH |
| 199 | **Draft project plan (task 1.1)** | 30d | 2007-04-02 | 2007-05-11 |  | Patrick; Adopters; BAH |
| 200 | Developer draft | 5d | 2007-04-02 | 2007-04-06 |  | Patrick |
| 201 | BAH review | 5d | 2007-04-09 | 2007-04-13 | 200 | BAH |
| 202 | Developer update | 5d | 2007-04-16 | 2007-04-20 | 201 | Patrick |
| 203 | Adopter review | 3d | 2007-04-23 | 2007-04-25 | 202 | Adopters |
| 204 | Developer update | 2d | 2007-04-26 | 2007-04-27 | 203 | Patrick |
| 205 | Deliver project plan to BAH (task 1.1) | 0d | 2007-04-27 | 2007-04-27 | 204 | Patrick |
| 206 | BAH review project plan (task 1.1) | 10d | 2007-04-30 | 2007-05-11 | 205 | BAH |
| 207 | **Update risk matrix (task 1.3.1)** | 20d | 2007-04-02 | 2007-04-27 |  | Patrick; BAH |
| 208 | Update risk matrix for week 1 | 5d | 2007-04-02 | 2007-04-06 |  | Patrick |
| 209 | Update risk matrix for week 2 | 5d | 2007-04-09 | 2007-04-13 | 208 | Patrick |
| 210 | Deliver risk matrix to BAH (task 1.3.1) | 0d | 2007-04-13 | 2007-04-13 | 209 | Patrick |
| 211 | BAH review risk matrix (task 1.3.1) | 10d | 2007-04-16 | 2007-04-27 | 210 | BAH |
| 212 | **Monthly report (task 1.3.1)** | 20d | 2007-04-16 | 2007-05-11 | 210 | Patrick; BAH |
| 213 | Update risk matrix for week 3 | 5d | 2007-04-16 | 2007-04-20 |  | Patrick |
| 214 | Update risk matrix for week 4 | 5d | 2007-04-23 | 2007-04-27 | 213 | Patrick |
| 215 | Deliver monthly report and risk matrix to BAH (task 1.3.1) | 0d | 2007-04-27 | 2007-04-27 | 214 | Patrick |
| 216 | BAH review monthly report and risk matrix (task 1.3.1) | 10d | 2007-04-30 | 2007-05-11 | 215 | BAH |
| 217 | **Requirements and use cases** | 30d | 2007-04-02 | 2007-05-11 | 197 | Developers; Adopters; BAH |
| 218 | **Create level 1 use cases and requirements** | 2d | 2007-04-02 | 2007-04-03 |  | Developers |
| 219 | Use case document (task 3.1.1) | 1d | 2007-04-02 | 2007-04-02 |  | Developers |
| 220 | Requirements document (3.2.1) | 1d | 2007-04-03 | 2007-04-03 | 219 | Developers |
| 221 | **Update use case document (task 3.1.1, task 5.2.1)** | 9d | 2007-04-04 | 2007-04-16 | 218 | Developers; Adopters |
| 222 | **Update eligibility use cases** | 9d | 2007-04-04 | 2007-04-16 |  | Kruttik; Priyatam; Adopters |
| 223 | Developer update | 2d | 2007-04-04 | 2007-04-05 |  | Kruttik; Priyatam |
| 224 | Adopter review | 5d | 2007-04-06 | 2007-04-12 | 223 | Adopters |
| 225 | Developer update | 1d | 2007-04-13 | 2007-04-13 | 224 | Kruttik; Priyatam |
| 226 | Adopter sign-off | 1d | 2007-04-16 | 2007-04-16 | 225 | Adopters |
| 227 | **Update study personel use cases** | 9d | 2007-04-04 | 2007-04-16 |  | Ramakrishna; Adopters |
| 228 | Developer update | 2d | 2007-04-04 | 2007-04-05 |  | Ramakrishna |
| 229 | Adopter review | 5d | 2007-04-06 | 2007-04-12 | 228 | Adopters |
| 230 | Developer update | 1d | 2007-04-13 | 2007-04-13 | 229 | Ramakrishna |
| 231 | Adopter sign-off | 1d | 2007-04-16 | 2007-04-16 | 230 | Adopters |
| 232 | **Update multi-site trial use cases** | 9d | 2007-04-04 | 2007-04-16 |  | Manav; Adopters |
| 233 | Developer update | 2d | 2007-04-04 | 2007-04-05 |  | Manav |
| 234 | Adopter review | 5d | 2007-04-06 | 2007-04-12 | 233 | Adopters |
| 235 | Developer update | 1d | 2007-04-13 | 2007-04-13 | 234 | Manav |
| 236 | Adopter sign-off | 1d | 2007-04-16 | 2007-04-16 | 235 | Adopters |
| 237 | **Update requirements document (task 3.2.1, task 5.3.1)** | 9d | 2007-04-17 | 2007-04-27 | 221, 218 | Developers; Adopters |
| 238 | **Update eligibility requirements** | 9d | 2007-04-17 | 2007-04-27 |  | Kruttik; Priyatam; Adopters |
| 239 | Developer update | 2d | 2007-04-17 | 2007-04-18 |  | Kruttik; Priyatam |
| 240 | Adopter review | 5d | 2007-04-19 | 2007-04-25 | 239 | Adopters |
| 241 | Developer update | 1d | 2007-04-26 | 2007-04-26 | 240 | Kruttik; Priyatam |
| 242 | Adopter sign-off | 1d | 2007-04-27 | 2007-04-27 | 241 | Adopters |
| 243 | **Update study personel requirements** | 9d | 2007-04-17 | 2007-04-27 |  | Ramakrishna; Adopters |
| 244 | Developer update | 2d | 2007-04-17 | 2007-04-18 |  | Ramakrishna |
| 245 | Adopter review | 5d | 2007-04-19 | 2007-04-25 | 244 | Adopters |
| 246 | Developer update | 1d | 2007-04-26 | 2007-04-26 | 245 | Ramakrishna |
| 247 | Adopter sign-off | 1d | 2007-04-27 | 2007-04-27 | 246 | Adopters |
| 248 | **Update multi-site trial requirements** | 9d | 2007-04-17 | 2007-04-27 |  | Manav; Adopters |
| 249 | Developer update | 2d | 2007-04-17 | 2007-04-18 |  | Manav |
| 250 | Adopter review | 5d | 2007-04-19 | 2007-04-25 | 249 | Adopters |
| 251 | Developer update | 1d | 2007-04-26 | 2007-04-26 | 250 | Manav |
| 252 | Adopter sign-off | 1d | 2007-04-27 | 2007-04-27 | 251 | Adopters |
| 253 | Developer deliver use case document to BAH (task 3.1.1, task 5.2.1) | 0d | 2007-04-27 | 2007-04-27 | 237 | Patrick |
| 254 | BAH review use case document (task 3.1.1, task 5.2.1) | 10d | 2007-04-30 | 2007-05-11 | 253 | BAH |
| 255 | Developer deliver requirements document to BAH (task 3.2.1, task 5.3.1) | 0d | 2007-04-27 | 2007-04-27 | 237 | Patrick |
| 256 | BAH review requirements document (task 3.2.1, task 5.3.1) | 10d | 2007-04-30 | 2007-05-11 | 255 | BAH |
| 257 | **Analysis and Design** | 31d | 2007-04-04 | 2007-05-16 | 218, 197 | Developers; Adopters; BAH |
| 258 | **Perform level 1 design** | 4d | 2007-04-04 | 2007-04-09 |  | Developers |
| 259 | Cursory BRIDG harmonization | 1d | 2007-04-04 | 2007-04-04 |  | Developers |
| 260 | Update implementation model | 1d | 2007-04-05 | 2007-04-05 | 259 | Developers |
| 261 | Cursory system design | 2d | 2007-04-06 | 2007-04-09 | 260 | Developers |
| 262 | **Modeling (task 3.3.1)** | 27d | 2007-04-10 | 2007-05-16 | 258 | Developers; Adopters |
| 263 | **Update model** | 6d | 2007-04-10 | 2007-04-17 |  | Developers |
| 264 | **BRIDG harmonization** | 3d | 2007-04-10 | 2007-04-12 | 258 |  |
| 265 | Harmonize Study model | 2d | 2007-04-10 | 2007-04-11 |  | Kruttik; Priyatam; Manav |
| 266 | Harmonize Personnel model | 3d | 2007-04-10 | 2007-04-12 |  | Ramakrishna |
| 267 | Harmonize Multi-site Study model | 3d | 2007-04-10 | 2007-04-12 |  | Manav |
| 268 | **Model implementation** | 3d | 2007-04-13 | 2007-04-17 | 264 |  |
| 269 | Implement Study model | 2d | 2007-04-13 | 2007-04-16 |  | Kruttik; Priyatam; Manav |
| 270 | Implement Personnel model | 3d | 2007-04-13 | 2007-04-17 |  | Ramakrishna |
| 271 | Implement Multi-site Study model | 3d | 2007-04-13 | 2007-04-17 |  | Manav |
| 272 | Adopter review | 5d | 2007-04-18 | 2007-04-24 | 263 | Adopters |
| 273 | **Update model** | 6d | 2007-04-25 | 2007-05-02 | 272 | Developers |
| 274 | **BRIDG harmonization** | 3d | 2007-04-25 | 2007-04-27 | 272 |  |
| 275 | Harmonize Study model | 3d | 2007-04-25 | 2007-04-27 |  | Kruttik; Priyatam; Manav |
| 276 | Harmonize Personnel model | 3d | 2007-04-25 | 2007-04-27 |  | Ramakrishna |
| 277 | Harmonize Multi-site Study model | 3d | 2007-04-25 | 2007-04-27 |  | Manav |
| 278 | **Model implementation** | 3d | 2007-04-30 | 2007-05-02 | 274, 277 |  |
| 279 | Implement Study model | 3d | 2007-04-30 | 2007-05-02 |  | Kruttik; Priyatam; Manav |
| 280 | Implement Personnel model | 3d | 2007-04-30 | 2007-05-02 |  | Ramakrishna |
| 281 | Implement Multi-site Study model | 3d | 2007-04-30 | 2007-05-02 |  | Manav |
| 282 | Developer deliver UML to BAH (task 3.3.1) | 0d | 2007-05-02 | 2007-05-02 | 273, 281 | Patrick |
| 283 | BAH review of UML (task 3.3.1) | 10d | 2007-05-03 | 2007-05-16 | 282 | BAH |
| 284 | **System design (task 3.4.1)** | 25d | 2007-04-10 | 2007-05-14 | 258 | Developers; BAH |
| 285 | **Design eligibility** | 15d | 2007-04-10 | 2007-04-30 |  | Kruttik; Priyatam |
| 286 | Draft UML | 5d | 2007-04-10 | 2007-04-16 |  | Kruttik; Priyatam |
| 287 | Team review | 5d | 2007-04-17 | 2007-04-23 | 286 | Kruttik; Priyatam |
| 288 | Update design document | 5d | 2007-04-24 | 2007-04-30 | 287 | Kruttik; Priyatam |
| 289 | **Design personnel** | 15d | 2007-04-10 | 2007-04-30 |  | Ramakrishna |
| 290 | Draft UML | 5d | 2007-04-10 | 2007-04-16 |  | Ramakrishna |
| 291 | Team review | 5d | 2007-04-17 | 2007-04-23 | 290 | Ramakrishna |
| 292 | Update design document | 5d | 2007-04-24 | 2007-04-30 | 291 | Ramakrishna |
| 293 | **Design multi-site study** | 15d | 2007-04-10 | 2007-04-30 |  | Manav |
| 294 | Draft UML | 5d | 2007-04-10 | 2007-04-16 |  | Manav |
| 295 | Team review | 5d | 2007-04-17 | 2007-04-23 | 294 | Manav |
| 296 | Update design document | 5d | 2007-04-24 | 2007-04-30 | 295 | Manav |
| 297 | Deliver design doc to BAH (task 3.4.1) | 0d | 2007-04-30 | 2007-04-30 | 285, 289, 293, 296 | Patrick |
| 298 | BAH review design doc (task 3.4.1) | 10d | 2007-05-01 | 2007-05-14 | 297 | BAH |
| 300 | **Database** | 3d | 2007-04-10 | 2007-04-12 |  | Developers |
| 301 | **Eligibility model** | 3d | 2007-04-10 | 2007-04-12 |  | Kruttik; Priyatam |
| 302 | Update DDLs | 1d | 2007-04-10 | 2007-04-10 |  | Kruttik; Priyatam |
| 303 | Apply to database | 1d | 2007-04-11 | 2007-04-11 | 302 | Kruttik; Priyatam |
| 304 | Create test data | 1d | 2007-04-12 | 2007-04-12 | 303 | Kruttik; Priyatam |
| 305 | **Study personnel** | 3d | 2007-04-10 | 2007-04-12 |  | Ramakrishna |
| 306 | Update DDLs | 1d | 2007-04-10 | 2007-04-10 |  | Ramakrishna |
| 307 | Apply to database | 1d | 2007-04-11 | 2007-04-11 | 306 | Ramakrishna |
| 308 | Create test data | 1d | 2007-04-12 | 2007-04-12 | 307 | Ramakrishna |
| 309 | **Multi-site** | 3d | 2007-04-10 | 2007-04-12 |  | Manav |
| 310 | Update DDLs | 1d | 2007-04-10 | 2007-04-10 |  | Manav |
| 311 | Apply to database | 1d | 2007-04-11 | 2007-04-11 | 310 | Manav |
| 312 | Create test data | 1d | 2007-04-12 | 2007-04-12 | 311 | Manav |
| 313 | **Business layer** | 10d | 2007-04-13 | 2007-04-26 |  | Developers |
| 314 | **Implement eligibility APIs** | 7d | 2007-04-13 | 2007-04-23 | 301 | Kruttik; Priyatam |
| 315 | Update APIs | 2d | 2007-04-13 | 2007-04-16 |  | Kruttik; Priyatam |
| 316 | Implement APIs | 3d | 2007-04-17 | 2007-04-19 | 315 | Kruttik; Priyatam |
| 317 | Deploy APIs | 2d | 2007-04-20 | 2007-04-23 | 316 | Kruttik; Priyatam |
| 318 | **Implement study personnel APIs** | 6d | 2007-04-13 | 2007-04-20 | 305 | Ramakrishna |
| 319 | Update APIs | 2d | 2007-04-13 | 2007-04-16 |  | Ramakrishna |
| 320 | Implement APIs | 3d | 2007-04-17 | 2007-04-19 | 319 | Ramakrishna |
| 321 | Deploy APIs | 1d | 2007-04-20 | 2007-04-20 | 320 | Ramakrishna |
| 322 | **Implement C3PR registration APIs** | 6d | 2007-04-13 | 2007-04-20 | 309 | Manav |
| 323 | Update APIs | 2d | 2007-04-13 | 2007-04-16 |  | Manav |
| 324 | Implement APIs | 3d | 2007-04-17 | 2007-04-19 | 323 | Manav |
| 325 | Deploy APIs | 1d | 2007-04-20 | 2007-04-20 | 324 | Manav |
| 326 | **Implement import eligibility** | 10d | 2007-04-13 | 2007-04-26 | 301 | Kruttik; Priyatam |
| 327 | Import eligibility from a file | 5d | 2007-04-13 | 2007-04-19 |  | Kruttik; Priyatam |
| 328 | Import eligibility from the caDSR | 5d | 2007-04-20 | 2007-04-26 | 327 | Kruttik; Priyatam |
| 329 | **Security** | 5d | 2007-04-10 | 2007-04-16 |  | Ramakrishna; Manav |
| 330 | Connect C3PR roles to GridGrouper groups | 5d | 2007-04-10 | 2007-04-16 |  | Ramakrishna; Manav |
| 331 | Hook groups into authorization | 5d | 2007-04-10 | 2007-04-16 |  | Ramakrishna; Manav |
| 332 | **Web interface** | 6d | 2007-04-23 | 2007-04-30 |  | Developers |
| 333 | **Modify study management interface** | 6d | 2007-04-23 | 2007-04-30 |  | Kruttik; Priyatam; Manav |
| 334 | Manage eligibility criteria | 5d | 2007-04-24 | 2007-04-30 | 314 | Kruttik; Priyatam; Manav |
| 335 | Manage multi-site study | 5d | 2007-04-23 | 2007-04-27 | 322 | Kruttik; Priyatam; Manav |
| 336 | **Modify study personnel management interface** | 5d | 2007-04-23 | 2007-04-27 |  | Ramakrishna |
| 337 | Manage study personnel | 5d | 2007-04-23 | 2007-04-27 | 318 | Ramakrishna |
| 338 | **Modify registration interface** | 5d | 2007-04-24 | 2007-04-30 |  | Kruttik; Priyatam |
| 339 | Check eligibility | 5d | 2007-04-24 | 2007-04-30 | 314 | Kruttik; Priyatam |
| 340 | Deliver codebase to BAH (task 3.5.1) | 0d | 2007-04-30 | 2007-04-30 | 300, 332, 339 | Patrick |
| 341 | BAH review codebase (task 3.5.1) | 10d | 2007-05-01 | 2007-05-14 | 340 | BAH |
| 342 | **Testing** | 32d | 2007-04-02 | 2007-05-15 | 197 | Developers; Adopters; BAH |
| 343 | **Developer testing** | 32d | 2007-04-02 | 2007-05-15 |  | BAH; Adopters; Developers |
| 344 | **Update developer test plan (task 3.6.1, task 5.4.1)** | 30d | 2007-04-02 | 2007-05-11 |  | Developers; Adopters; BAH |
| 345 | Developer draft | 5d | 2007-04-02 | 2007-04-06 |  | Developers |
| 346 | Adopter review | 5d | 2007-04-09 | 2007-04-13 | 345 | Adopters |
| 347 | Developer update | 5d | 2007-04-16 | 2007-04-20 | 346 | Developers |
| 348 | Adopter review and sign | 5d | 2007-04-23 | 2007-04-27 | 347 | Adopters |
| 349 | Deliver signed test plan to BAH (task 3.6.1, task 5.4.1) | 0d | 2007-04-27 | 2007-04-27 | 348 | Patrick |
| 350 | BAH review signed test plan (task 3.6.1, task 5.4.1) | 10d | 2007-04-30 | 2007-05-11 | 349 | BAH |
| 351 | **Integration and system testing (task 3.8.1)** | 16d | 2007-04-24 | 2007-05-15 | 340FS-5d | Developers; BAH |
| 352 | Generate test data | 1d | 2007-04-24 | 2007-04-24 |  | Developers |
| 353 | Write tests | 3d | 2007-04-25 | 2007-04-27 | 352 | Developers |
| 354 | Validate tests | 1d | 2007-04-30 | 2007-04-30 | 353 | Developers |
| 355 | Generate test report | 1d | 2007-05-01 | 2007-05-01 | 354 | Developers |
| 356 | Deliver test report to BAH (task 3.8.1) | 0d | 2007-05-01 | 2007-05-01 | 355 | Patrick |
| 357 | BAH review test report (task 3.8.1) | 10d | 2007-05-02 | 2007-05-15 | 356 | BAH |
| 358 | **Adopter testing** | 30d | 2007-04-02 | 2007-05-11 | 357 | Adopters; Developers; BAH |
| 359 | **Update adopter test plan (task 5.5.1)** | 30d | 2007-04-02 | 2007-05-11 |  | Adopters; Developers; BAH |
| 360 | Adopter update test script | 5d | 2007-04-02 | 2007-04-06 |  | Adopters |
| 361 | Adopter update test approach | 5d | 2007-04-09 | 2007-04-13 | 360 | Adopters |
| 362 | Developer review | 5d | 2007-04-16 | 2007-04-20 | 361 | Patrick; Ram |
| 363 | Adopter update | 5d | 2007-04-23 | 2007-04-27 | 362 | Adopters |
| 364 | Developer deliver adopter test plan to BAH (task 5.5.1) | 0d | 2007-04-27 | 2007-04-27 | 363 | Patrick |
| 365 | BAH review adopter test plan (task 5.5.1) | 10d | 2007-04-30 | 2007-05-11 | 364 | BAH |
| 366 | **QA testing (task 5.6.1)** | 24d | 2007-04-09 | 2007-05-10 | 360, 365 | Adopters; BAH |
| 367 | Adopter create test data | 5d | 2007-04-09 | 2007-04-13 |  | Adopters |
| 368 | Adopter perform test script | 5d | 2007-04-16 | 2007-04-20 | 367 | Adopters |
| 369 | Adopter document results | 2d | 2007-04-23 | 2007-04-24 | 368 | Adopters |
| 370 | Adopter log bugs | 2d | 2007-04-25 | 2007-04-26 | 369 | Adopters |
| 371 | Developer deliver adopter test report to BAH (task 5.6.1) | 0d | 2007-04-26 | 2007-04-26 | 369, 370 | Patrick |
| 372 | BAH review adopter test report (task 5.6.1) | 10d | 2007-04-27 | 2007-05-10 | 371 | BAH |
| 373 | **Documentation** | 15d | 2007-04-24 | 2007-05-14 | 197 | Developers; Adopters; BAH |
| 374 | **Installation guide (task 3.10.1)** | 13d | 2007-04-26 | 2007-05-14 | 340FS-3d | Developers; BAH |
| 375 | Update installation guide | 3d | 2007-04-26 | 2007-04-30 |  | Developers |
| 376 | Deliver installation guide to BAH (task 3.10.1) | 0d | 2007-04-30 | 2007-04-30 | 375 | Patrick |
| 377 | BAH review of installation guide (task 3.10.1) | 10d | 2007-05-01 | 2007-05-14 | 376 | BAH |
| 378 | **Administration guide (task 3.13.1)** | 13d | 2007-04-26 | 2007-05-14 | 340FS-3d | Developers; BAH |
| 379 | Update administration guide | 3d | 2007-04-26 | 2007-04-30 |  | Developers |
| 380 | Deliver administration guide to BAH (task 3.13.1) | 0d | 2007-04-30 | 2007-04-30 | 379 | Patrick |
| 381 | BAH review of administration guide (task 3.13.1) | 10d | 2007-05-01 | 2007-05-14 | 380 | BAH |
| 382 | **Release notes (task 3.14.1)** | 13d | 2007-04-26 | 2007-05-14 | 340FS-3d | Developers; BAH |
| 383 | Update release notes | 3d | 2007-04-26 | 2007-04-30 |  | Developers |
| 384 | Deliver release notes to BAH (task 3.14.1) | 0d | 2007-04-30 | 2007-04-30 | 383 | Patrick |
| 385 | BAH review of release notes (task 3.14.1) | 10d | 2007-05-01 | 2007-05-14 | 384 | BAH |
| 386 | **Adopter summary of C3PR (task 5.1.1)** | 15d | 2007-04-24 | 2007-05-14 | 340FS-5d | Adopters; BAH |
| 387 | Adopter update summary | 3d | 2007-04-24 | 2007-04-26 |  | Adopters |
| 388 | Developer review summary | 1d | 2007-04-27 | 2007-04-27 | 387 | Adopters |
| 389 | Adopter update summary | 1d | 2007-04-30 | 2007-04-30 | 388 | Adopters |
| 390 | Developer deliver C3PR summary to BAH (task 5.1.1) | 0d | 2007-04-30 | 2007-04-30 | 389 | Patrick |
| 391 | BAH review of C3PR summary (task 5.1.1) | 10d | 2007-05-01 | 2007-05-14 | 390 | BAH |

Removed: 199 Implement import eligibility criteria from file; 200 caDSR integration; 201 Review C3PR Release 1 code; 202 Implement import eligibility criteria from caDSR; 203 Security

Changed:

| ID | Task | Start | Finish | Duration | Total float | Predecessors | Other |
| --- | --- | --- | --- | --- | --- | --- | --- |
| 1 | **Iteration 1 (eligibility, study personnel, multi-site study)** |  | 2007-05-04 → 2007-04-12 (-22d) | 47d → 31d | 105d → 121d |  |  |
| 104 | **Implementation (task 3.5.1)** |  | 2007-05-04 → 2007-04-11 (-23d) | 43d → 26d | 105d → 122d |  |  |
| 144 | Deliver codebase to BAH (task 3.5.1) | 2007-04-20 → 2007-03-28 (-23d) | 2007-04-20 → 2007-03-28 (-23d) |  | 105d → 150d | 105, 121, 134, 136, caDSR integration → 105, 134, 136, 119 |  |
| 145 | BAH review codebase (task 3.5.1) | 2007-04-23 → 2007-03-29 (-25d) | 2007-05-04 → 2007-04-11 (-23d) |  | 105d → 150d |  |  |
| 146 | **Testing** |  | 2007-04-27 → 2007-04-11 (-16d) | 42d → 30d | 110d → 122d |  |  |
| 147 | **Developer testing** |  | 2007-04-27 → 2007-04-11 (-16d) | 42d → 30d | 110d → 122d |  |  |
| 155 | **Integration and system testing (task 3.8.1)** | 2007-04-16 → 2007-03-22 (-25d) | 2007-04-27 → 2007-04-04 (-23d) |  | 110d → 127d |  |  |
| 156 | Generate test data | 2007-04-16 → 2007-03-22 (-25d) | 2007-04-16 → 2007-03-22 (-25d) |  | 119d → 164d |  |  |
| 157 | Write tests | 2007-04-16 → 2007-03-22 (-25d) | 2007-04-18 → 2007-03-26 (-23d) |  | 115d → 160d |  |  |
| 158 | Validate tests | 2007-04-19 → 2007-03-27 (-23d) | 2007-04-19 → 2007-03-27 (-23d) |  | 115d → 160d |  |  |
| 159 | Generate test report | 2007-04-20 → 2007-03-28 (-23d) | 2007-04-20 → 2007-03-28 (-23d) |  | 115d → 160d |  |  |
| 160 | Deliver test report to BAH (task 3.8.1) | 2007-04-16 → 2007-03-22 (-25d) | 2007-04-16 → 2007-03-22 (-25d) |  | 120d → 165d |  |  |
| 161 | BAH review test report (task 3.8.1) | 2007-04-16 → 2007-03-22 (-25d) | 2007-04-27 → 2007-04-04 (-23d) |  | 110d → 155d |  |  |
| 177 | **Documentation** | 2007-04-16 → 2007-03-22 (-25d) | 2007-05-04 → 2007-04-11 (-23d) |  | 105d → 122d |  |  |
| 178 | **Installation guide (task 3.10.1)** | 2007-04-18 → 2007-03-26 (-23d) | 2007-05-04 → 2007-04-11 (-23d) |  | 105d → 122d |  |  |
| 179 | Update installation guide | 2007-04-18 → 2007-03-26 (-23d) | 2007-04-20 → 2007-03-28 (-23d) |  | 105d → 150d |  |  |
| 180 | Deliver installation guide to BAH (task 3.10.1) | 2007-04-20 → 2007-03-28 (-23d) | 2007-04-20 → 2007-03-28 (-23d) |  | 105d → 150d |  |  |
| 181 | BAH review of installation guide (task 3.10.1) | 2007-04-23 → 2007-03-29 (-25d) | 2007-05-04 → 2007-04-11 (-23d) |  | 105d → 150d |  |  |
| 182 | **Administration guide (task 3.13.1)** | 2007-04-18 → 2007-03-26 (-23d) | 2007-05-04 → 2007-04-11 (-23d) |  | 105d → 122d |  |  |
| 183 | Update administration guide | 2007-04-18 → 2007-03-26 (-23d) | 2007-04-20 → 2007-03-28 (-23d) |  | 105d → 150d |  |  |
| 184 | Deliver administration guide to BAH (task 3.13.1) | 2007-04-20 → 2007-03-28 (-23d) | 2007-04-20 → 2007-03-28 (-23d) |  | 105d → 150d |  |  |
| 185 | BAH review of administration guide (task 3.13.1) | 2007-04-23 → 2007-03-29 (-25d) | 2007-05-04 → 2007-04-11 (-23d) |  | 105d → 150d |  |  |
| 186 | **Release notes (task 3.14.1)** | 2007-04-18 → 2007-03-26 (-23d) | 2007-05-04 → 2007-04-11 (-23d) |  | 105d → 122d |  |  |
| 187 | Update release notes | 2007-04-18 → 2007-03-26 (-23d) | 2007-04-20 → 2007-03-28 (-23d) |  | 105d → 150d |  |  |
| 188 | Deliver release notes to BAH (task 3.14.1) | 2007-04-20 → 2007-03-28 (-23d) | 2007-04-20 → 2007-03-28 (-23d) |  | 105d → 150d |  |  |
| 189 | BAH review of release notes (task 3.14.1) | 2007-04-23 → 2007-03-29 (-25d) | 2007-05-04 → 2007-04-11 (-23d) |  | 105d → 150d |  |  |
| 190 | **Adopter summary of C3PR (task 5.1.1)** | 2007-04-16 → 2007-03-22 (-25d) | 2007-05-04 → 2007-04-11 (-23d) |  | 105d → 122d |  |  |
| 191 | Adopter update summary | 2007-04-16 → 2007-03-22 (-25d) | 2007-04-18 → 2007-03-26 (-23d) |  | 105d → 150d |  |  |
| 192 | Developer review summary | 2007-04-19 → 2007-03-27 (-23d) | 2007-04-19 → 2007-03-27 (-23d) |  | 105d → 150d |  |  |
| 193 | Adopter update summary | 2007-04-20 → 2007-03-28 (-23d) | 2007-04-20 → 2007-03-28 (-23d) |  | 105d → 150d |  |  |
| 194 | Developer deliver C3PR summary to BAH (task 5.1.1) | 2007-04-20 → 2007-03-28 (-23d) | 2007-04-20 → 2007-03-28 (-23d) |  | 105d → 150d |  |  |
| 195 | BAH review of C3PR summary (task 5.1.1) | 2007-04-23 → 2007-03-29 (-25d) | 2007-05-04 → 2007-04-11 (-23d) |  | 105d → 150d |  |  |
| 196 | **Iteration 2 (eligibility, study personnel, security, multi-site study)** |  | 2007-04-27 → 2007-05-16 (+19d) | 20d → 33d | 105d → 97d |  |  |
| 299 | **Implementation (task 3.5.1)** | 2007-04-02 → 2007-04-10 (+8d) | 2007-04-27 → 2007-05-14 (+17d) | 20d → 25d | 105d → 98d | 197 → 258, 197 | resources none → Developers; BAH |

## Version 5 (saved 2007-03-05)

Note of the change: added use case details

Last finish stays 2007-10-01.

Added:

| ID | Task | Duration | Start | Finish | Predecessors | Resources |
| --- | --- | --- | --- | --- | --- | --- |
| 24 | **Level 1 use cases for eligibility** | 2d | 2007-03-01 | 2007-03-02 |  | Kruttik; Priyatam |
| 27 | **Level 1 use cases for study personnel** | 2d | 2007-03-01 | 2007-03-02 |  | Priyatam; Kula |
| 30 | **Level 1 use cases for registration management** | 2d | 2007-03-01 | 2007-03-02 |  | Ramakrishna |
| 31 | Use case document (task 3.1.1) | 1d | 2007-03-01 | 2007-03-01 |  | Ramakrishna |
| 32 | Requirements document (3.2.1) | 1d | 2007-03-02 | 2007-03-02 | 31 | Ramakrishna |
| 33 | **Level 1 use cases for multi-site study** | 4d | 2007-03-01 | 2007-03-06 |  | Manav |
| 34 | Use case document (task 3.1.1) | 2d | 2007-03-01 | 2007-03-02 |  | Manav |
| 35 | Requirements document (3.2.1) | 2d | 2007-03-05 | 2007-03-06 | 34 | Manav |
| 36 | **Level 1 use cases for C3D integration** | 2d | 2007-03-01 | 2007-03-02 |  | Manav |
| 37 | Use case document (task 3.1.1) | 1d | 2007-03-01 | 2007-03-01 |  | Manav |
| 38 | Requirements document (3.2.1) | 1d | 2007-03-02 | 2007-03-02 | 37 | Manav |
| 50 | **Update registration management use cases** | 9d | 2007-03-07 | 2007-03-19 |  | Ramakrishna; Adopters |
| 60 | **Update C3D integration use cases** | 9d | 2007-03-07 | 2007-03-19 |  | Manav; Adopters |
| 76 | **Update registration management requirements** | 9d | 2007-03-20 | 2007-03-30 |  | Ramakrishna; Adopters |
| 86 | **Update C3D integration requirements** | 9d | 2007-03-20 | 2007-03-30 |  | Manav; Adopters |
| 131 | **Design registration management** | 15d | 2007-03-09 | 2007-03-29 |  | Ramakrishna |
| 139 | **Design C3D integration** | 15d | 2007-03-30 | 2007-04-19 | 135 | Manav |
| 145 | **Research** | 10d | 2007-03-09 | 2007-03-22 | 96 | Manav |
| 146 | **Investigate C3D integration** | 10d | 2007-03-09 | 2007-03-22 | 96 | Manav |
| 147 | Review release 1 code | 5d | 2007-03-09 | 2007-03-15 |  | Manav |
| 148 | Review release 1 security model | 5d | 2007-03-16 | 2007-03-22 | 147 | Manav |
| 155 | Create data access objects (DAOs) | 1d | 2007-03-14 | 2007-03-14 | 154 |  |
| 161 | Create data access objects (DAOs) | 1d | 2007-03-16 | 2007-03-16 | 160 |  |
| 166 | Create data access objects (DAOs) | 1d | 2007-03-14 | 2007-03-14 | 165 |  |
| 167 | Unit testing | 4d | 2007-03-09 | 2007-03-14 |  | Developers |
| 183 | Unit testing | 6d | 2007-03-23 | 2007-03-30 | 179 | Developers |
| 186 | Unit testing | 5d | 2007-03-23 | 2007-03-29 |  | Developers |
| 195 | **Modify registration management interface** | 5d | 2007-03-09 | 2007-03-15 |  | Ramakrishna |
| 196 | Manage study subject registration | 5d | 2007-03-09 | 2007-03-15 |  | Ramakrishna |
| 197 | Unit testing | 5d | 2007-03-09 | 2007-03-15 |  | Developers |
| 273 | **Level 1 use cases for eligibility** | 2d | 2007-04-02 | 2007-04-03 |  | Kruttik; Priyatam |
| 274 | Use case document (task 3.1.1) | 1d | 2007-04-02 | 2007-04-02 |  | Kruttik; Priyatam |
| 275 | Requirements document (3.2.1) | 1d | 2007-04-03 | 2007-04-03 | 274 | Kruttik; Priyatam |
| 276 | **Level 1 use cases for study personnel** | 2d | 2007-04-02 | 2007-04-03 |  | Priyatam; Kula |
| 277 | Use case document (task 3.1.1) | 1d | 2007-04-02 | 2007-04-02 |  | Priyatam; Kula |
| 278 | Requirements document (3.2.1) | 1d | 2007-04-03 | 2007-04-03 | 277 | Priyatam; Kula |
| 279 | **Level 1 use cases for registration management** | 2d | 2007-04-02 | 2007-04-03 |  | Ramakrishna |
| 280 | Use case document (task 3.1.1) | 1d | 2007-04-02 | 2007-04-02 |  | Ramakrishna |
| 281 | Requirements document (3.2.1) | 1d | 2007-04-03 | 2007-04-03 | 280 | Ramakrishna |
| 282 | **Level 1 use cases for multi-site study** | 4d | 2007-04-02 | 2007-04-05 |  | Manav |
| 283 | Use case document (task 3.1.1) | 2d | 2007-04-02 | 2007-04-03 |  | Manav |
| 284 | Requirements document (3.2.1) | 2d | 2007-04-04 | 2007-04-05 | 283 | Manav |
| 285 | **Level 1 use cases for C3D integration** | 2d | 2007-04-02 | 2007-04-03 |  | Manav |
| 286 | Use case document (task 3.1.1) | 1d | 2007-04-02 | 2007-04-02 |  | Manav |
| 287 | Requirements document (3.2.1) | 1d | 2007-04-03 | 2007-04-03 | 286 | Manav |
| 294 | **Update study personnel use cases** | 9d | 2007-04-06 | 2007-04-18 |  | Priyatam; Adopters; Kula |
| 299 | **Update registration management use cases** | 9d | 2007-04-06 | 2007-04-18 |  | Ramakrishna; Adopters |
| 300 | Developer update | 2d | 2007-04-06 | 2007-04-09 |  | Ramakrishna |
| 301 | Adopter review | 5d | 2007-04-10 | 2007-04-16 | 300 | Adopters |
| 302 | Developer update | 1d | 2007-04-17 | 2007-04-17 | 301 | Ramakrishna |
| 303 | Adopter sign-off | 1d | 2007-04-18 | 2007-04-18 | 302 | Adopters |
| 305 | Developer update | 2d | 2007-04-06 | 2007-04-09 |  | Manav |
| 306 | Adopter review | 5d | 2007-04-10 | 2007-04-16 | 305 | Adopters |
| 307 | Developer update | 1d | 2007-04-17 | 2007-04-17 | 306 | Manav |
| 308 | Adopter sign-off | 1d | 2007-04-18 | 2007-04-18 | 307 | Adopters |
| 309 | **Update C3D integration use cases** | 9d | 2007-04-06 | 2007-04-18 |  | Manav; Adopters |
| 310 | Developer update | 2d | 2007-04-06 | 2007-04-09 |  | Manav |
| 311 | Adopter review | 5d | 2007-04-10 | 2007-04-16 | 310 | Adopters |
| 312 | Developer update | 1d | 2007-04-17 | 2007-04-17 | 311 | Manav |
| 313 | Adopter sign-off | 1d | 2007-04-18 | 2007-04-18 | 312 | Adopters |
| 316 | Developer update | 2d | 2007-04-19 | 2007-04-20 |  | Kruttik; Priyatam |
| 317 | Adopter review | 5d | 2007-04-23 | 2007-04-27 | 316 | Adopters |
| 318 | Developer update | 1d | 2007-04-30 | 2007-04-30 | 317 | Kruttik; Priyatam |
| 319 | Adopter sign-off | 1d | 2007-05-01 | 2007-05-01 | 318 | Adopters |
| 321 | Developer update | 2d | 2007-04-19 | 2007-04-20 |  | Priyatam; Kula |
| 322 | Adopter review | 5d | 2007-04-23 | 2007-04-27 | 321 | Adopters |
| 323 | Developer update | 1d | 2007-04-30 | 2007-04-30 | 322 | Priyatam; Kula |
| 324 | Adopter sign-off | 1d | 2007-05-01 | 2007-05-01 | 323 | Adopters |
| 325 | **Update registration management requirements** | 9d | 2007-04-19 | 2007-05-01 |  | Ramakrishna; Adopters |
| 326 | Developer update | 2d | 2007-04-19 | 2007-04-20 |  | Ramakrishna |
| 327 | Adopter review | 5d | 2007-04-23 | 2007-04-27 | 326 | Adopters |
| 328 | Developer update | 1d | 2007-04-30 | 2007-04-30 | 327 | Ramakrishna |
| 329 | Adopter sign-off | 1d | 2007-05-01 | 2007-05-01 | 328 | Adopters |
| 331 | Developer update | 2d | 2007-04-19 | 2007-04-20 |  | Manav |
| 332 | Adopter review | 5d | 2007-04-23 | 2007-04-27 | 331 | Adopters |
| 333 | Developer update | 1d | 2007-04-30 | 2007-04-30 | 332 | Manav |
| 334 | Adopter sign-off | 1d | 2007-05-01 | 2007-05-01 | 333 | Adopters |
| 335 | **Update C3D integration requirements** | 9d | 2007-04-19 | 2007-05-01 |  | Manav; Adopters |
| 336 | Developer update | 2d | 2007-04-19 | 2007-04-20 |  | Manav |
| 337 | Adopter review | 5d | 2007-04-23 | 2007-04-27 | 336 | Adopters |
| 338 | Developer update | 1d | 2007-04-30 | 2007-04-30 | 337 | Manav |
| 339 | Adopter sign-off | 1d | 2007-05-01 | 2007-05-01 | 338 | Adopters |
| 377 | Draft UML | 5d | 2007-04-12 | 2007-04-18 |  | Priyatam; Kula |
| 378 | Team review | 5d | 2007-04-19 | 2007-04-25 | 377 | Priyatam; Kula |
| 379 | Update design document | 5d | 2007-04-26 | 2007-05-02 | 378 | Priyatam; Kula |
| 380 | **Design registration management** | 15d | 2007-04-12 | 2007-05-02 |  | Ramakrishna |
| 381 | Draft UML | 5d | 2007-04-12 | 2007-04-18 |  | Ramakrishna |
| 382 | Team review | 5d | 2007-04-19 | 2007-04-25 | 381 | Ramakrishna |
| 383 | Update design document | 5d | 2007-04-26 | 2007-05-02 | 382 | Ramakrishna |
| 385 | Draft UML | 5d | 2007-04-12 | 2007-04-18 |  | Manav |
| 386 | Team review | 5d | 2007-04-19 | 2007-04-25 | 385 | Manav |
| 387 | Update design document | 5d | 2007-04-26 | 2007-05-02 | 386 | Manav |
| 388 | **Design C3D integration** | 15d | 2007-04-12 | 2007-05-02 |  | Manav |
| 389 | Draft UML | 5d | 2007-04-12 | 2007-04-18 |  | Manav |
| 390 | Team review | 5d | 2007-04-19 | 2007-04-25 | 389 | Manav |
| 391 | Update design document | 5d | 2007-04-26 | 2007-05-02 | 390 | Manav |
| 424 | **ESB** | 5d | 2007-04-17 | 2007-04-23 | 395 | Manav |
| 425 | Implement binding components for C3D | 5d | 2007-04-17 | 2007-04-23 |  | Manav |
| 437 | **Modify registration management interface** | 5d | 2007-04-12 | 2007-04-18 |  | Ramakrishna |
| 438 | Manage study subject registration | 5d | 2007-04-12 | 2007-04-18 |  | Ramakrishna |
| 493 | **Stratification** | 22d | 2007-05-02 | 2007-05-31 | 492 |  |
| 494 | First pass at stratification implementation | 22d | 2007-05-02 | 2007-05-31 |  |  |
| 495 | **Security** | 22d | 2007-05-02 | 2007-05-31 | 492 |  |
| 496 | Complete security implementation | 22d | 2007-05-02 | 2007-05-31 |  |  |
| 497 | **Enrollment** | 22d | 2007-05-02 | 2007-05-31 | 492 |  |
| 498 | **Enrollment details** | 22d | 2007-05-02 | 2007-05-31 | 492 |  |
| 499 | Treating MD | 22d | 2007-05-02 | 2007-05-31 |  |  |
| 500 | Disease | 22d | 2007-05-02 | 2007-05-31 |  |  |
| 501 | Compassionate | 22d | 2007-05-02 | 2007-05-31 |  |  |
| 502 | **Enrollment business rules** | 22d | 2007-05-02 | 2007-05-31 |  |  |
| 503 | Accrual ceilings | 22d | 2007-05-02 | 2007-05-31 |  |  |
| 504 | Notifications | 22d | 2007-05-02 | 2007-05-31 |  |  |
| 505 | **Multi-site study** | 22d | 2007-05-02 | 2007-05-31 | 492 |  |
| 506 | Complete multi-site study implementation | 22d | 2007-05-02 | 2007-05-31 |  |  |
| 507 | **Registration management** | 22d | 2007-05-02 | 2007-05-31 | 492 |  |
| 508 | Off study | 22d | 2007-05-02 | 2007-05-31 |  |  |
| 511 | **Stratification** | 21d | 2007-06-01 | 2007-06-29 | 510 |  |
| 512 | Finalize stratification implementation | 21d | 2007-06-01 | 2007-06-29 |  |  |
| 513 | **Enrollment** | 21d | 2007-06-01 | 2007-06-29 | 510 |  |
| 514 | **Enrollment details** | 21d | 2007-06-01 | 2007-06-29 |  |  |
| 515 | Finalize enrollment details | 21d | 2007-06-01 | 2007-06-29 |  |  |
| 516 | **Enrollment business rules** | 21d | 2007-06-01 | 2007-06-29 |  |  |
| 517 | Finalize enrollment business rules | 21d | 2007-06-01 | 2007-06-29 |  |  |
| 518 | **Randomization** | 21d | 2007-06-01 | 2007-06-29 | 510 |  |
| 519 | Randomization book | 21d | 2007-06-01 | 2007-06-29 |  |  |
| 520 | **Reporting** | 21d | 2007-06-01 | 2007-06-29 | 510 |  |
| 521 | Reporting interface | 21d | 2007-06-01 | 2007-06-29 |  |  |
| 522 | **Legacy systems** | 21d | 2007-06-01 | 2007-06-29 | 510 |  |
| 523 | Investigate legacy systems at Adopter sites | 21d | 2007-06-01 | 2007-06-29 |  |  |
| 524 | Investigate support of legacy systems (APIs, files, etc.) | 21d | 2007-06-01 | 2007-06-29 |  |  |
| 527 | **Randomization** | 22d | 2007-07-02 | 2007-07-31 | 526 |  |
| 528 | Randomization email | 22d | 2007-07-02 | 2007-07-31 |  |  |
| 529 | **Reporting** | 22d | 2007-07-02 | 2007-07-31 | 526 |  |
| 530 | Storing reports | 22d | 2007-07-02 | 2007-07-31 |  |  |
| 531 | **Legacy systems** | 22d | 2007-07-02 | 2007-07-31 | 526 |  |
| 532 | Implement legacy support for adopters | 22d | 2007-07-02 | 2007-07-31 |  |  |
| 533 | Implement generic support for legacy systems | 22d | 2007-07-02 | 2007-07-31 |  |  |
| 536 | **Randomization** | 23d | 2007-08-01 | 2007-08-31 | 535 |  |
| 537 | Randomization call-out | 23d | 2007-08-01 | 2007-08-31 |  |  |
| 538 | **Reporting** | 23d | 2007-08-01 | 2007-08-31 | 535 |  |
| 539 | Finalize reporting | 23d | 2007-08-01 | 2007-08-31 |  |  |
| 540 | **Legacy systems** | 23d | 2007-08-01 | 2007-08-31 | 535 |  |
| 541 | Finalize legacy systems | 23d | 2007-08-01 | 2007-08-31 |  |  |

Removed: 227 Update study personel use cases

Changed:

| ID | Task | Start | Finish | Duration | Total float | Other |
| --- | --- | --- | --- | --- | --- | --- |
| 1 | **Iteration 1 (eligibility, study personnel, registration management, multi-site study)** |  | 2007-04-12 → 2007-05-03 (+21d) | 31d → 46d | 121d → 106d | was named Iteration 1 (eligibility, study personnel, multi-site study) |
| 22 | **Requirements and use cases** |  | 2007-04-11 → 2007-04-13 (+2d) | 30d → 32d | 121d → 106d |  |
| 23 | **Create level 1 use cases and requirements** |  | 2007-03-02 → 2007-03-06 (+4d) | 2d → 4d | 121d → 106d |  |
| 25 | Use case document (task 3.1.1) |  |  |  | 149d → 121d | resources Developers → Kruttik; Priyatam |
| 26 | Requirements document (3.2.1) |  |  |  | 149d → 121d | resources Developers → Kruttik; Priyatam |
| 28 | Use case document (task 3.1.1) | 2007-04-02 → 2007-03-01 (-32d) | 2007-04-02 → 2007-03-01 (-32d) |  | 2d → 121d | resources Developers → Priyatam; Kula |
| 29 | Requirements document (3.2.1) | 2007-04-03 → 2007-03-02 (-32d) | 2007-04-03 → 2007-03-02 (-32d) |  | 2d → 121d | resources Developers → Priyatam; Kula |
| 39 | **Update use case document (task 3.1.1, task 5.2.1)** | 2007-03-05 → 2007-03-07 (+2d) | 2007-03-15 → 2007-03-19 (+4d) |  | 122d → 120d |  |
| 40 | **Update eligibility use cases** | 2007-03-05 → 2007-03-07 (+2d) | 2007-03-15 → 2007-03-19 (+4d) |  | 122d → 120d | resources Kruttik; Priyatam; Adopters → Kruttik; Adopters; Priyatam |
| 41 | Developer update | 2007-03-05 → 2007-03-07 (+2d) | 2007-03-06 → 2007-03-08 (+2d) |  | 150d → 120d |  |
| 42 | Adopter review | 2007-03-07 → 2007-03-09 (+2d) | 2007-03-13 → 2007-03-15 (+2d) |  | 150d → 120d |  |
| 43 | Developer update | 2007-03-14 → 2007-03-16 (+2d) | 2007-03-14 → 2007-03-16 (+2d) |  | 150d → 120d |  |
| 44 | Adopter sign-off | 2007-03-15 → 2007-03-19 (+4d) | 2007-03-15 → 2007-03-19 (+4d) |  | 150d → 120d |  |
| 45 | **Update study personnel use cases** | 2007-03-05 → 2007-03-07 (+2d) | 2007-03-15 → 2007-03-19 (+4d) |  | 122d → 120d | was named Update study personel use cases; resources Ramakrishna; Adopters → Priyatam; Adopters; Kula |
| 46 | Developer update | 2007-03-05 → 2007-03-07 (+2d) | 2007-03-06 → 2007-03-08 (+2d) |  | 150d → 120d | resources Ramakrishna → Priyatam; Kula |
| 47 | Adopter review | 2007-03-07 → 2007-03-09 (+2d) | 2007-03-13 → 2007-03-15 (+2d) |  | 150d → 120d |  |
| 48 | Developer update | 2007-03-14 → 2007-03-16 (+2d) | 2007-03-14 → 2007-03-16 (+2d) |  | 150d → 120d | resources Ramakrishna → Priyatam; Kula |
| 49 | Adopter sign-off | 2007-03-15 → 2007-03-19 (+4d) | 2007-03-15 → 2007-03-19 (+4d) |  | 150d → 120d |  |
| 51 | Developer update | 2007-04-04 → 2007-03-07 (-28d) | 2007-04-05 → 2007-03-08 (-28d) |  | 119d → 120d | resources Kruttik; Priyatam → Ramakrishna |
| 52 | Adopter review | 2007-04-06 → 2007-03-09 (-28d) | 2007-04-12 → 2007-03-15 (-28d) |  | 119d → 120d |  |
| 53 | Developer update | 2007-04-13 → 2007-03-16 (-28d) | 2007-04-13 → 2007-03-16 (-28d) |  | 119d → 120d | resources Kruttik; Priyatam → Ramakrishna |
| 54 | Adopter sign-off | 2007-04-16 → 2007-03-19 (-28d) | 2007-04-16 → 2007-03-19 (-28d) |  | 119d → 120d |  |
| 55 | **Update multi-site trial use cases** | 2007-03-05 → 2007-03-07 (+2d) | 2007-03-15 → 2007-03-19 (+4d) |  | 122d → 120d |  |
| 56 | Developer update | 2007-03-05 → 2007-03-07 (+2d) | 2007-03-06 → 2007-03-08 (+2d) |  | 150d → 120d |  |
| 57 | Adopter review | 2007-03-07 → 2007-03-09 (+2d) | 2007-03-13 → 2007-03-15 (+2d) |  | 150d → 120d |  |
| 58 | Developer update | 2007-03-14 → 2007-03-16 (+2d) | 2007-03-14 → 2007-03-16 (+2d) |  | 150d → 120d |  |
| 59 | Adopter sign-off | 2007-03-15 → 2007-03-19 (+4d) | 2007-03-15 → 2007-03-19 (+4d) |  | 150d → 120d |  |
| 61 | Developer update | 2007-04-04 → 2007-03-07 (-28d) | 2007-04-05 → 2007-03-08 (-28d) |  | 119d → 120d | resources Ramakrishna → Manav |
| 62 | Adopter review | 2007-04-06 → 2007-03-09 (-28d) | 2007-04-12 → 2007-03-15 (-28d) |  | 119d → 120d |  |
| 63 | Developer update | 2007-04-13 → 2007-03-16 (-28d) | 2007-04-13 → 2007-03-16 (-28d) |  | 119d → 120d | resources Ramakrishna → Manav |
| 64 | Adopter sign-off | 2007-04-16 → 2007-03-19 (-28d) | 2007-04-16 → 2007-03-19 (-28d) |  | 119d → 120d |  |
| 65 | **Update requirements document (task 3.2.1, task 5.3.1)** | 2007-03-16 → 2007-03-20 (+4d) | 2007-03-28 → 2007-03-30 (+2d) |  | 122d → 120d |  |
| 66 | **Update eligibility requirements** | 2007-03-16 → 2007-03-20 (+4d) | 2007-03-28 → 2007-03-30 (+2d) |  | 122d → 120d |  |
| 67 | Developer update | 2007-03-16 → 2007-03-20 (+4d) | 2007-03-19 → 2007-03-21 (+2d) |  | 122d → 120d |  |
| 68 | Adopter review | 2007-03-20 → 2007-03-22 (+2d) | 2007-03-26 → 2007-03-28 (+2d) |  | 122d → 120d |  |
| 69 | Developer update | 2007-03-27 → 2007-03-29 (+2d) | 2007-03-27 → 2007-03-29 (+2d) |  | 122d → 120d |  |
| 70 | Adopter sign-off | 2007-03-28 → 2007-03-30 (+2d) | 2007-03-28 → 2007-03-30 (+2d) |  | 122d → 120d |  |
| 71 | **Update study personel requirements** | 2007-03-16 → 2007-03-20 (+4d) | 2007-03-28 → 2007-03-30 (+2d) |  | 122d → 120d | resources Ramakrishna; Adopters → Priyatam; Adopters; Kula |
| 72 | Developer update | 2007-03-16 → 2007-03-20 (+4d) | 2007-03-19 → 2007-03-21 (+2d) |  | 122d → 120d | resources Ramakrishna → Priyatam; Kula |
| 73 | Adopter review | 2007-03-20 → 2007-03-22 (+2d) | 2007-03-26 → 2007-03-28 (+2d) |  | 122d → 120d |  |
| 74 | Developer update | 2007-03-27 → 2007-03-29 (+2d) | 2007-03-27 → 2007-03-29 (+2d) |  | 122d → 120d | resources Ramakrishna → Priyatam; Kula |
| 75 | Adopter sign-off | 2007-03-28 → 2007-03-30 (+2d) | 2007-03-28 → 2007-03-30 (+2d) |  | 122d → 120d |  |
| 77 | Developer update | 2007-04-04 → 2007-03-20 (-15d) | 2007-04-05 → 2007-03-21 (-15d) |  | 119d → 120d | resources Manav → Ramakrishna |
| 78 | Adopter review | 2007-04-06 → 2007-03-22 (-15d) | 2007-04-12 → 2007-03-28 (-15d) |  | 119d → 120d |  |
| 79 | Developer update | 2007-04-13 → 2007-03-29 (-15d) | 2007-04-13 → 2007-03-29 (-15d) |  | 119d → 120d | resources Manav → Ramakrishna |
| 80 | Adopter sign-off | 2007-04-16 → 2007-03-30 (-17d) | 2007-04-16 → 2007-03-30 (-17d) |  | 119d → 120d |  |
| 81 | **Update multi-site trial requirements** | 2007-03-16 → 2007-03-20 (+4d) | 2007-03-28 → 2007-03-30 (+2d) |  | 122d → 120d |  |
| 82 | Developer update | 2007-03-16 → 2007-03-20 (+4d) | 2007-03-19 → 2007-03-21 (+2d) |  | 122d → 120d |  |
| 83 | Adopter review | 2007-03-20 → 2007-03-22 (+2d) | 2007-03-26 → 2007-03-28 (+2d) |  | 122d → 120d |  |
| 84 | Developer update | 2007-03-27 → 2007-03-29 (+2d) | 2007-03-27 → 2007-03-29 (+2d) |  | 122d → 120d |  |
| 85 | Adopter sign-off | 2007-03-28 → 2007-03-30 (+2d) | 2007-03-28 → 2007-03-30 (+2d) |  | 122d → 120d |  |
| 87 | Developer update | 2007-04-17 → 2007-03-20 (-28d) | 2007-04-18 → 2007-03-21 (-28d) |  | 100d → 120d | resources Kruttik; Priyatam → Manav |
| 88 | Adopter review | 2007-04-19 → 2007-03-22 (-28d) | 2007-04-25 → 2007-03-28 (-28d) |  | 100d → 120d |  |
| 89 | Developer update | 2007-04-26 → 2007-03-29 (-28d) | 2007-04-26 → 2007-03-29 (-28d) |  | 100d → 120d | resources Kruttik; Priyatam → Manav |
| 90 | Adopter sign-off | 2007-04-27 → 2007-03-30 (-28d) | 2007-04-27 → 2007-03-30 (-28d) |  | 100d → 120d |  |
| 91 | Developer deliver use case document to BAH (task 3.1.1, task 5.2.1) | 2007-03-28 → 2007-03-30 (+2d) | 2007-03-28 → 2007-03-30 (+2d) |  | 122d → 120d |  |
| 92 | BAH review use case document (task 3.1.1, task 5.2.1) | 2007-03-29 → 2007-04-02 (+4d) | 2007-04-11 → 2007-04-13 (+2d) |  | 122d → 120d |  |
| 93 | Developer deliver requirements document to BAH (task 3.2.1, task 5.3.1) | 2007-03-28 → 2007-03-30 (+2d) | 2007-03-28 → 2007-03-30 (+2d) |  | 122d → 120d |  |
| 94 | BAH review requirements document (task 3.2.1, task 5.3.1) | 2007-03-29 → 2007-04-02 (+4d) | 2007-04-11 → 2007-04-13 (+2d) |  | 122d → 120d |  |
| 95 | **Analysis and Design** | 2007-03-05 → 2007-03-07 (+2d) | 2007-04-12 → 2007-05-03 (+21d) | 29d → 42d | 121d → 106d |  |
| 96 | **Perform level 1 design** | 2007-03-05 → 2007-03-07 (+2d) | 2007-03-06 → 2007-03-08 (+2d) |  | 121d → 106d |  |
| 97 | Cursory BRIDG harmonization | 2007-03-05 → 2007-03-07 (+2d) | 2007-03-05 → 2007-03-07 (+2d) |  | 149d → 115d |  |
| 98 | Update implementation model | 2007-03-06 → 2007-03-08 (+2d) | 2007-03-06 → 2007-03-08 (+2d) |  | 149d → 115d |  |
| 99 | Cursory system design | 2007-03-05 → 2007-03-07 (+2d) | 2007-03-06 → 2007-03-08 (+2d) |  | 149d → 115d |  |
| 100 | **Modeling (task 3.3.1)** | 2007-03-07 → 2007-03-09 (+2d) | 2007-04-12 → 2007-04-16 (+4d) |  | 121d → 119d |  |
| 101 | **Update model** | 2007-03-07 → 2007-03-09 (+2d) | 2007-03-14 → 2007-03-16 (+2d) |  | 121d → 119d |  |
| 102 | **BRIDG harmonization** | 2007-03-07 → 2007-03-09 (+2d) | 2007-03-09 → 2007-03-13 (+4d) |  | 121d → 119d |  |
| 103 | Harmonize Study model | 2007-03-07 → 2007-03-09 (+2d) | 2007-03-08 → 2007-03-12 (+4d) |  | 122d → 120d |  |
| 104 | Harmonize Personnel model | 2007-03-07 → 2007-03-09 (+2d) | 2007-03-09 → 2007-03-13 (+4d) |  | 121d → 119d |  |
| 105 | Harmonize Multi-site Study model | 2007-03-07 → 2007-03-09 (+2d) | 2007-03-09 → 2007-03-13 (+4d) |  | 121d → 119d |  |

| ID | Task | Start | Finish | Duration | Total float | Predecessors | Other |
| --- | --- | --- | --- | --- | --- | --- | --- |
| 106 | **Model implementation** | 2007-03-12 → 2007-03-14 (+2d) | 2007-03-14 → 2007-03-16 (+2d) |  | 121d → 119d |  |  |
| 107 | Implement Study model | 2007-03-12 → 2007-03-14 (+2d) | 2007-03-14 → 2007-03-16 (+2d) |  | 121d → 119d |  |  |
| 108 | Implement Personnel model | 2007-03-12 → 2007-03-14 (+2d) | 2007-03-14 → 2007-03-16 (+2d) |  | 121d → 119d |  |  |
| 109 | Implement Multi-site Study model | 2007-03-12 → 2007-03-14 (+2d) | 2007-03-14 → 2007-03-16 (+2d) |  | 121d → 119d |  |  |
| 110 | Adopter review | 2007-03-15 → 2007-03-19 (+4d) | 2007-03-21 → 2007-03-23 (+2d) |  | 121d → 119d |  |  |
| 111 | **Update model** | 2007-03-22 → 2007-03-26 (+4d) | 2007-03-29 → 2007-04-02 (+4d) |  | 121d → 119d |  |  |
| 112 | **BRIDG harmonization** | 2007-03-22 → 2007-03-26 (+4d) | 2007-03-26 → 2007-03-28 (+2d) |  | 121d → 119d |  |  |
| 113 | Harmonize Study model | 2007-03-22 → 2007-03-26 (+4d) | 2007-03-26 → 2007-03-28 (+2d) |  | 149d → 119d |  |  |
| 114 | Harmonize Personnel model | 2007-03-22 → 2007-03-26 (+4d) | 2007-03-26 → 2007-03-28 (+2d) |  | 149d → 119d |  |  |
| 115 | Harmonize Multi-site Study model | 2007-03-22 → 2007-03-26 (+4d) | 2007-03-26 → 2007-03-28 (+2d) |  | 149d → 119d |  |  |
| 116 | **Model implementation** | 2007-03-27 → 2007-03-29 (+2d) | 2007-03-29 → 2007-04-02 (+4d) |  | 121d → 119d |  |  |
| 117 | Implement Study model | 2007-03-27 → 2007-03-29 (+2d) | 2007-03-29 → 2007-04-02 (+4d) |  | 149d → 119d |  |  |
| 118 | Implement Personnel model | 2007-03-27 → 2007-03-29 (+2d) | 2007-03-29 → 2007-04-02 (+4d) |  | 149d → 119d |  |  |
| 119 | Implement Multi-site Study model | 2007-03-27 → 2007-03-29 (+2d) | 2007-03-29 → 2007-04-02 (+4d) |  | 149d → 119d |  |  |
| 120 | Developer deliver UML to BAH (task 3.3.1) | 2007-03-29 → 2007-04-02 (+4d) | 2007-03-29 → 2007-04-02 (+4d) |  | 121d → 119d |  |  |
| 121 | BAH review of UML (task 3.3.1) | 2007-03-30 → 2007-04-03 (+4d) | 2007-04-12 → 2007-04-16 (+4d) |  | 121d → 119d |  |  |
| 122 | **System design (task 3.4.1)** | 2007-03-07 → 2007-03-09 (+2d) | 2007-04-10 → 2007-05-03 (+23d) | 25d → 40d | 123d → 106d |  |  |
| 123 | **Design eligibility** | 2007-03-07 → 2007-03-09 (+2d) | 2007-03-27 → 2007-03-29 (+2d) |  | 123d → 121d |  |  |
| 124 | Draft UML | 2007-03-07 → 2007-03-09 (+2d) | 2007-03-13 → 2007-03-15 (+2d) |  | 123d → 121d |  |  |
| 125 | Team review | 2007-03-14 → 2007-03-16 (+2d) | 2007-03-20 → 2007-03-22 (+2d) |  | 123d → 121d |  |  |
| 126 | Update design document | 2007-03-21 → 2007-03-23 (+2d) | 2007-03-27 → 2007-03-29 (+2d) |  | 123d → 121d |  |  |
| 127 | **Design personnel** | 2007-03-07 → 2007-03-09 (+2d) | 2007-03-27 → 2007-03-29 (+2d) |  | 123d → 121d |  | resources Ramakrishna → Priyatam; Kula |
| 128 | Draft UML | 2007-03-07 → 2007-03-09 (+2d) | 2007-03-13 → 2007-03-15 (+2d) |  | 123d → 121d |  | resources Ramakrishna → Priyatam; Kula |
| 129 | Team review | 2007-03-14 → 2007-03-16 (+2d) | 2007-03-20 → 2007-03-22 (+2d) |  | 123d → 121d |  | resources Ramakrishna → Priyatam; Kula |
| 130 | Update design document | 2007-03-21 → 2007-03-23 (+2d) | 2007-03-27 → 2007-03-29 (+2d) |  | 123d → 121d |  | resources Ramakrishna → Priyatam; Kula |
| 132 | Draft UML | 2007-04-10 → 2007-03-09 (-32d) | 2007-04-16 → 2007-03-15 (-32d) |  | 99d → 131d |  | resources Kruttik; Priyatam → Ramakrishna |
| 133 | Team review | 2007-04-17 → 2007-03-16 (-32d) | 2007-04-23 → 2007-03-22 (-32d) |  | 99d → 131d |  | resources Kruttik; Priyatam → Ramakrishna |
| 134 | Update design document | 2007-04-24 → 2007-03-23 (-32d) | 2007-04-30 → 2007-03-29 (-32d) |  | 99d → 131d |  | resources Kruttik; Priyatam → Ramakrishna |
| 135 | **Design multi-site study** | 2007-03-07 → 2007-03-09 (+2d) | 2007-03-27 → 2007-03-29 (+2d) |  | 123d → 106d |  |  |
| 136 | Draft UML | 2007-03-07 → 2007-03-09 (+2d) | 2007-03-13 → 2007-03-15 (+2d) |  | 123d → 106d |  |  |
| 137 | Team review | 2007-03-14 → 2007-03-16 (+2d) | 2007-03-20 → 2007-03-22 (+2d) |  | 123d → 106d |  |  |
| 138 | Update design document | 2007-03-21 → 2007-03-23 (+2d) | 2007-03-27 → 2007-03-29 (+2d) |  | 123d → 106d |  |  |
| 140 | Draft UML | 2007-04-10 → 2007-03-30 (-11d) | 2007-04-16 → 2007-04-05 (-11d) |  | 99d → 106d |  | resources Ramakrishna → Manav |
| 141 | Team review | 2007-04-17 → 2007-04-06 (-11d) | 2007-04-23 → 2007-04-12 (-11d) |  | 99d → 106d |  | resources Ramakrishna → Manav |
| 142 | Update design document | 2007-04-24 → 2007-04-13 (-11d) | 2007-04-30 → 2007-04-19 (-11d) |  | 99d → 106d |  | resources Ramakrishna → Manav |
| 143 | Deliver design doc to BAH (task 3.4.1) | 2007-03-27 → 2007-04-19 (+23d) | 2007-03-27 → 2007-04-19 (+23d) |  | 123d → 106d | 123, 127, 135 → 123, 127, 139 |  |
| 144 | BAH review design doc (task 3.4.1) | 2007-03-28 → 2007-04-20 (+23d) | 2007-04-10 → 2007-05-03 (+23d) |  | 123d → 106d |  |  |
| 149 | **Implementation (task 3.5.1)** | 2007-03-07 → 2007-03-09 (+2d) | 2007-04-11 → 2007-04-12 (+1d) | 26d → 25d | 122d → 121d |  |  |
| 150 | **Database layer** | 2007-03-07 → 2007-03-09 (+2d) | 2007-03-13 → 2007-03-16 (+3d) | 5d → 6d | 122d → 121d |  | was named Database |
| 151 | **Eligibility model** | 2007-03-07 → 2007-03-09 (+2d) | 2007-03-09 → 2007-03-14 (+5d) | 3d → 4d | 123d → 130d |  |  |
| 152 | Create DDLs | 2007-03-07 → 2007-03-09 (+2d) | 2007-03-07 → 2007-03-09 (+2d) |  | 151d → 130d |  |  |
| 153 | Apply to database | 2007-03-08 → 2007-03-12 (+4d) | 2007-03-08 → 2007-03-12 (+4d) |  | 151d → 130d |  |  |
| 154 | Create test data | 2007-03-09 → 2007-03-13 (+4d) | 2007-03-09 → 2007-03-13 (+4d) |  | 151d → 130d |  |  |
| 156 | **Study personnel** | 2007-03-07 → 2007-03-09 (+2d) | 2007-03-13 → 2007-03-16 (+3d) | 5d → 6d | 122d → 129d |  | resources Ramakrishna → Priyatam; Kula |
| 157 | Investigate how to implement Person with Role | 2007-03-07 → 2007-03-09 (+2d) | 2007-03-08 → 2007-03-12 (+4d) |  | 150d → 129d |  | resources Ramakrishna → Priyatam; Kula |
| 158 | Create DDLs | 2007-03-09 → 2007-03-13 (+4d) | 2007-03-09 → 2007-03-13 (+4d) |  | 150d → 129d |  | resources Ramakrishna → Priyatam; Kula |
| 159 | Apply to database | 2007-03-12 → 2007-03-14 (+2d) | 2007-03-12 → 2007-03-14 (+2d) |  | 150d → 129d |  | resources Ramakrishna → Priyatam; Kula |
| 160 | Create test data | 2007-03-13 → 2007-03-15 (+2d) | 2007-03-13 → 2007-03-15 (+2d) |  | 150d → 129d |  | resources Ramakrishna → Priyatam; Kula |
| 162 | **Multi-site** | 2007-03-07 → 2007-03-09 (+2d) | 2007-03-09 → 2007-03-14 (+5d) | 3d → 4d | 124d → 121d |  |  |
| 163 | Create DDLs | 2007-03-07 → 2007-03-09 (+2d) | 2007-03-07 → 2007-03-09 (+2d) |  | 152d → 121d |  |  |
| 164 | Apply to database | 2007-03-08 → 2007-03-12 (+4d) | 2007-03-08 → 2007-03-12 (+4d) |  | 152d → 121d |  |  |
| 165 | Create test data | 2007-03-09 → 2007-03-13 (+4d) | 2007-03-09 → 2007-03-13 (+4d) |  | 152d → 121d |  |  |
| 168 | **Deployment** | 2007-03-12 → 2007-03-15 (+3d) | 2007-03-13 → 2007-03-16 (+3d) |  | 133d → 130d |  |  |
| 169 | Deploy a second C3PR for multi-site testing | 2007-03-12 → 2007-03-15 (+3d) | 2007-03-13 → 2007-03-16 (+3d) |  | 161d → 130d |  |  |
| 170 | **Business layer** | 2007-03-12 → 2007-03-15 (+3d) | 2007-03-21 → 2007-03-30 (+9d) | 8d → 12d | 122d → 121d |  |  |
| 171 | **Implement eligibility APIs** | 2007-03-12 → 2007-03-15 (+3d) | 2007-03-20 → 2007-03-23 (+3d) |  | 123d → 130d |  |  |
| 172 | Design APIs | 2007-03-12 → 2007-03-15 (+3d) | 2007-03-13 → 2007-03-16 (+3d) |  | 151d → 130d |  |  |
| 173 | Implement APIs | 2007-03-14 → 2007-03-19 (+5d) | 2007-03-16 → 2007-03-21 (+5d) |  | 151d → 130d |  |  |
| 174 | Deploy APIs | 2007-03-19 → 2007-03-22 (+3d) | 2007-03-20 → 2007-03-23 (+3d) |  | 151d → 130d |  |  |
| 175 | **Implement study personnel APIs** | 2007-03-14 → 2007-03-19 (+5d) | 2007-03-21 → 2007-03-26 (+5d) |  | 122d → 129d |  |  |
| 176 | Design APIs | 2007-03-14 → 2007-03-19 (+5d) | 2007-03-15 → 2007-03-20 (+5d) |  | 150d → 129d |  |  |
| 177 | Implement APIs | 2007-03-16 → 2007-03-21 (+5d) | 2007-03-20 → 2007-03-23 (+3d) |  | 150d → 129d |  |  |
| 178 | Deploy APIs | 2007-03-21 → 2007-03-26 (+5d) | 2007-03-21 → 2007-03-26 (+5d) |  | 150d → 129d |  |  |
| 179 | **Implement C3PR registration APIs** | 2007-03-12 → 2007-03-15 (+3d) | 2007-03-19 → 2007-03-22 (+3d) |  | 124d → 121d |  |  |
| 180 | Design APIs | 2007-03-12 → 2007-03-15 (+3d) | 2007-03-13 → 2007-03-16 (+3d) |  | 152d → 121d |  |  |
| 181 | Implement APIs | 2007-03-14 → 2007-03-19 (+5d) | 2007-03-16 → 2007-03-21 (+5d) |  | 152d → 121d |  |  |
| 182 | Deploy APIs | 2007-03-19 → 2007-03-22 (+3d) | 2007-03-19 → 2007-03-22 (+3d) |  | 152d → 121d |  |  |
| 184 | **ESB** | 2007-03-20 → 2007-03-23 (+3d) | 2007-03-26 → 2007-03-29 (+3d) |  | 124d → 121d | none → 179 |  |
| 185 | Implement inbound-binding component for C3PR registration | 2007-03-20 → 2007-03-23 (+3d) | 2007-03-26 → 2007-03-29 (+3d) |  | 152d → 121d | 179 → none |  |
| 187 | **Web interface** | 2007-03-20 → 2007-03-09 (-11d) | 2007-03-28 → 2007-04-02 (+5d) | 7d → 17d | 122d → 129d |  |  |

| ID | Task | Start | Finish | Duration | Total float | Predecessors | Other |
| --- | --- | --- | --- | --- | --- | --- | --- |
| 188 | **Modify study management interface** | 2007-03-20 → 2007-03-23 (+3d) | 2007-03-27 → 2007-03-30 (+3d) |  | 123d → 130d |  |  |
| 189 | Manage eligibility criteria | 2007-03-21 → 2007-03-26 (+5d) | 2007-03-27 → 2007-03-30 (+3d) |  | 151d → 130d |  |  |
| 190 | Manage multi-site study | 2007-03-20 → 2007-03-23 (+3d) | 2007-03-26 → 2007-03-29 (+3d) |  | 152d → 131d |  |  |
| 191 | **Modify study personnel management interface** | 2007-03-22 → 2007-03-27 (+5d) | 2007-03-28 → 2007-04-02 (+5d) |  | 122d → 129d |  | resources Ramakrishna → Priyatam; Kula |
| 192 | Manage study personnel | 2007-03-22 → 2007-03-27 (+5d) | 2007-03-28 → 2007-04-02 (+5d) |  | 150d → 129d |  | resources Ramakrishna → Priyatam; Kula |
| 193 | **Modify registration interface** | 2007-03-21 → 2007-03-26 (+5d) | 2007-03-27 → 2007-03-30 (+3d) |  | 123d → 130d |  |  |
| 194 | Check eligibility | 2007-03-21 → 2007-03-26 (+5d) | 2007-03-27 → 2007-03-30 (+3d) |  | 151d → 130d |  |  |
| 198 | Deliver codebase to BAH (task 3.5.1) | 2007-03-28 → 2007-03-29 (+1d) | 2007-03-28 → 2007-03-29 (+1d) |  | 150d → 121d | 150, 184, 187, 168 → 150, 184, 168 |  |
| 199 | BAH review codebase (task 3.5.1) | 2007-03-29 → 2007-03-30 (+1d) | 2007-04-11 → 2007-04-12 (+1d) |  | 150d → 121d |  |  |
| 209 | **Integration and system testing (task 3.8.1)** | 2007-03-22 → 2007-03-23 (+1d) | 2007-04-04 → 2007-04-05 (+1d) |  | 127d → 126d |  |  |
| 210 | Generate test data | 2007-03-22 → 2007-03-23 (+1d) | 2007-03-22 → 2007-03-23 (+1d) |  | 164d → 135d |  |  |
| 211 | Write tests | 2007-03-22 → 2007-03-23 (+1d) | 2007-03-26 → 2007-03-27 (+1d) |  | 160d → 131d |  |  |
| 212 | Validate tests | 2007-03-27 → 2007-03-28 (+1d) | 2007-03-27 → 2007-03-28 (+1d) |  | 160d → 131d |  |  |
| 213 | Generate test report | 2007-03-28 → 2007-03-29 (+1d) | 2007-03-28 → 2007-03-29 (+1d) |  | 160d → 131d |  |  |
| 214 | Deliver test report to BAH (task 3.8.1) | 2007-03-22 → 2007-03-23 (+1d) | 2007-03-22 → 2007-03-23 (+1d) |  | 165d → 136d |  |  |
| 215 | BAH review test report (task 3.8.1) | 2007-03-22 → 2007-03-23 (+1d) | 2007-04-04 → 2007-04-05 (+1d) |  | 155d → 126d |  |  |
| 224 | **Functional testing (task 5.6.1)** |  |  |  |  |  | was named QA testing (task 5.6.1) |
| 231 | **Documentation** | 2007-03-22 → 2007-03-23 (+1d) | 2007-04-11 → 2007-04-12 (+1d) |  | 122d → 121d |  |  |
| 232 | **Installation guide (task 3.10.1)** | 2007-03-26 → 2007-03-27 (+1d) | 2007-04-11 → 2007-04-12 (+1d) |  | 122d → 121d |  |  |
| 233 | Update installation guide | 2007-03-26 → 2007-03-27 (+1d) | 2007-03-28 → 2007-03-29 (+1d) |  | 150d → 121d |  |  |
| 234 | Deliver installation guide to BAH (task 3.10.1) | 2007-03-28 → 2007-03-29 (+1d) | 2007-03-28 → 2007-03-29 (+1d) |  | 150d → 121d |  |  |
| 235 | BAH review of installation guide (task 3.10.1) | 2007-03-29 → 2007-03-30 (+1d) | 2007-04-11 → 2007-04-12 (+1d) |  | 150d → 121d |  |  |
| 236 | **Administration guide (task 3.13.1)** | 2007-03-26 → 2007-03-27 (+1d) | 2007-04-11 → 2007-04-12 (+1d) |  | 122d → 121d |  |  |
| 237 | Update administration guide | 2007-03-26 → 2007-03-27 (+1d) | 2007-03-28 → 2007-03-29 (+1d) |  | 150d → 121d |  |  |
| 238 | Deliver administration guide to BAH (task 3.13.1) | 2007-03-28 → 2007-03-29 (+1d) | 2007-03-28 → 2007-03-29 (+1d) |  | 150d → 121d |  |  |
| 239 | BAH review of administration guide (task 3.13.1) | 2007-03-29 → 2007-03-30 (+1d) | 2007-04-11 → 2007-04-12 (+1d) |  | 150d → 121d |  |  |
| 240 | **Release notes (task 3.14.1)** | 2007-03-26 → 2007-03-27 (+1d) | 2007-04-11 → 2007-04-12 (+1d) |  | 122d → 121d |  |  |
| 241 | Update release notes | 2007-03-26 → 2007-03-27 (+1d) | 2007-03-28 → 2007-03-29 (+1d) |  | 150d → 121d |  |  |
| 242 | Deliver release notes to BAH (task 3.14.1) | 2007-03-28 → 2007-03-29 (+1d) | 2007-03-28 → 2007-03-29 (+1d) |  | 150d → 121d |  |  |
| 243 | BAH review of release notes (task 3.14.1) | 2007-03-29 → 2007-03-30 (+1d) | 2007-04-11 → 2007-04-12 (+1d) |  | 150d → 121d |  |  |
| 244 | **Adopter summary of C3PR (task 5.1.1)** | 2007-03-22 → 2007-03-23 (+1d) | 2007-04-11 → 2007-04-12 (+1d) |  | 122d → 121d |  |  |
| 245 | Adopter update summary | 2007-03-22 → 2007-03-23 (+1d) | 2007-03-26 → 2007-03-27 (+1d) |  | 150d → 121d |  |  |
| 246 | Developer review summary | 2007-03-27 → 2007-03-28 (+1d) | 2007-03-27 → 2007-03-28 (+1d) |  | 150d → 121d |  | resources Adopters → Developers |
| 247 | Adopter update summary | 2007-03-28 → 2007-03-29 (+1d) | 2007-03-28 → 2007-03-29 (+1d) |  | 150d → 121d |  |  |
| 248 | Developer deliver C3PR summary to BAH (task 5.1.1) | 2007-03-28 → 2007-03-29 (+1d) | 2007-03-28 → 2007-03-29 (+1d) |  | 150d → 121d |  |  |
| 249 | BAH review of C3PR summary (task 5.1.1) | 2007-03-29 → 2007-03-30 (+1d) | 2007-04-11 → 2007-04-12 (+1d) |  | 150d → 121d |  |  |
| 250 | **Iteration 2 (eligibility, study personnel/security, C3D integration, multi-site study)** |  | 2007-05-16 → 2007-05-18 (+2d) | 33d → 35d | 97d → 95d |  | was named Iteration 2 (eligibility, study personnel, security, multi-site study) |
| 271 | **Requirements and use cases** |  | 2007-05-11 → 2007-05-15 (+4d) | 30d → 32d | 97d → 95d |  |  |
| 272 | **Create level 1 use cases and requirements** |  | 2007-04-03 → 2007-04-05 (+2d) | 2d → 4d | 97d → 95d |  |  |
| 288 | **Update use case document (task 3.1.1, task 5.2.1)** | 2007-04-04 → 2007-04-06 (+2d) | 2007-04-16 → 2007-04-18 (+2d) |  | 100d → 98d |  |  |
| 289 | **Update eligibility use cases** | 2007-04-04 → 2007-04-06 (+2d) | 2007-04-16 → 2007-04-18 (+2d) |  | 100d → 98d |  | resources Kruttik; Priyatam; Adopters → Kruttik; Adopters; Priyatam |
| 290 | Developer update | 2007-04-17 → 2007-04-06 (-11d) | 2007-04-18 → 2007-04-09 (-9d) |  | 100d → 98d |  | resources Ramakrishna → Kruttik; Priyatam |
| 291 | Adopter review | 2007-04-19 → 2007-04-10 (-9d) | 2007-04-25 → 2007-04-16 (-9d) |  | 100d → 98d |  |  |
| 292 | Developer update | 2007-04-26 → 2007-04-17 (-9d) | 2007-04-26 → 2007-04-17 (-9d) |  | 100d → 98d |  | resources Ramakrishna → Kruttik; Priyatam |
| 293 | Adopter sign-off | 2007-04-27 → 2007-04-18 (-9d) | 2007-04-27 → 2007-04-18 (-9d) |  | 100d → 98d |  |  |
| 295 | Developer update | 2007-04-17 → 2007-04-06 (-11d) | 2007-04-18 → 2007-04-09 (-9d) |  | 100d → 98d |  | resources Manav → Priyatam; Kula |
| 296 | Adopter review | 2007-04-19 → 2007-04-10 (-9d) | 2007-04-25 → 2007-04-16 (-9d) |  | 100d → 98d |  |  |
| 297 | Developer update | 2007-04-26 → 2007-04-17 (-9d) | 2007-04-26 → 2007-04-17 (-9d) |  | 100d → 98d |  | resources Manav → Priyatam; Kula |
| 298 | Adopter sign-off | 2007-04-27 → 2007-04-18 (-9d) | 2007-04-27 → 2007-04-18 (-9d) |  | 100d → 98d |  |  |
| 304 | **Update multi-site trial use cases** | 2007-04-04 → 2007-04-06 (+2d) | 2007-04-16 → 2007-04-18 (+2d) |  | 100d → 98d |  |  |
| 314 | **Update requirements document (task 3.2.1, task 5.3.1)** | 2007-04-17 → 2007-04-19 (+2d) | 2007-04-27 → 2007-05-01 (+4d) |  | 100d → 98d | 288, 272 → 288 |  |
| 315 | **Update eligibility requirements** | 2007-04-17 → 2007-04-19 (+2d) | 2007-04-27 → 2007-05-01 (+4d) |  | 100d → 98d |  |  |
| 320 | **Update study personel requirements** | 2007-04-17 → 2007-04-19 (+2d) | 2007-04-27 → 2007-05-01 (+4d) |  | 100d → 98d |  | resources Ramakrishna; Adopters → Priyatam; Adopters; Kula |
| 330 | **Update multi-site trial requirements** | 2007-04-17 → 2007-04-19 (+2d) | 2007-04-27 → 2007-05-01 (+4d) |  | 100d → 98d |  |  |
| 340 | Developer deliver use case document to BAH (task 3.1.1, task 5.2.1) | 2007-04-27 → 2007-05-01 (+4d) | 2007-04-27 → 2007-05-01 (+4d) |  | 100d → 98d |  |  |
| 341 | BAH review use case document (task 3.1.1, task 5.2.1) | 2007-04-30 → 2007-05-02 (+2d) | 2007-05-11 → 2007-05-15 (+4d) |  | 100d → 98d |  |  |
| 342 | Developer deliver requirements document to BAH (task 3.2.1, task 5.3.1) | 2007-04-27 → 2007-05-01 (+4d) | 2007-04-27 → 2007-05-01 (+4d) |  | 100d → 98d |  |  |
| 343 | BAH review requirements document (task 3.2.1, task 5.3.1) | 2007-04-30 → 2007-05-02 (+2d) | 2007-05-11 → 2007-05-15 (+4d) |  | 100d → 98d |  |  |
| 344 | **Analysis and Design** | 2007-04-04 → 2007-04-06 (+2d) | 2007-05-16 → 2007-05-18 (+2d) |  | 97d → 95d |  |  |
| 345 | **Perform level 1 design** | 2007-04-04 → 2007-04-06 (+2d) | 2007-04-09 → 2007-04-11 (+2d) |  | 97d → 95d |  |  |
| 346 | Cursory BRIDG harmonization | 2007-04-04 → 2007-04-06 (+2d) | 2007-04-04 → 2007-04-06 (+2d) |  | 2d → 95d |  |  |
| 347 | Update implementation model | 2007-04-05 → 2007-04-09 (+4d) | 2007-04-05 → 2007-04-09 (+4d) |  | 2d → 95d |  |  |
| 348 | Cursory system design | 2007-04-06 → 2007-04-10 (+4d) | 2007-04-09 → 2007-04-11 (+2d) |  | 2d → 95d |  |  |
| 349 | **Modeling (task 3.3.1)** | 2007-04-10 → 2007-04-12 (+2d) | 2007-05-16 → 2007-05-18 (+2d) |  | 97d → 95d |  |  |
| 350 | **Update model** | 2007-04-10 → 2007-04-12 (+2d) | 2007-04-17 → 2007-04-19 (+2d) |  | 97d → 95d |  |  |
| 351 | **BRIDG harmonization** | 2007-04-10 → 2007-04-12 (+2d) | 2007-04-12 → 2007-04-16 (+4d) |  | 97d → 95d |  |  |
| 352 | Harmonize Study model | 2007-04-10 → 2007-04-12 (+2d) | 2007-04-11 → 2007-04-13 (+2d) |  | 92d → 96d |  |  |
| 353 | Harmonize Personnel model | 2007-04-10 → 2007-04-12 (+2d) | 2007-04-12 → 2007-04-16 (+4d) |  | 91d → 95d |  |  |
| 354 | Harmonize Multi-site Study model | 2007-04-10 → 2007-04-12 (+2d) | 2007-04-12 → 2007-04-16 (+4d) |  | 91d → 95d |  |  |
| 355 | **Model implementation** | 2007-04-13 → 2007-04-17 (+4d) | 2007-04-17 → 2007-04-19 (+2d) |  | 97d → 95d |  |  |

| ID | Task | Start | Finish | Duration | Total float | Predecessors | Other |
| --- | --- | --- | --- | --- | --- | --- | --- |
| 356 | Implement Study model | 2007-04-13 → 2007-04-17 (+4d) | 2007-04-16 → 2007-04-18 (+2d) |  | 92d → 96d |  |  |
| 357 | Implement Personnel model | 2007-04-13 → 2007-04-17 (+4d) | 2007-04-17 → 2007-04-19 (+2d) |  | 91d → 95d |  |  |
| 358 | Implement Multi-site Study model | 2007-04-13 → 2007-04-17 (+4d) | 2007-04-17 → 2007-04-19 (+2d) |  | 91d → 95d |  |  |
| 359 | Adopter review | 2007-04-18 → 2007-04-20 (+2d) | 2007-04-24 → 2007-04-26 (+2d) |  | 91d → 95d |  |  |
| 360 | **Update model** | 2007-04-25 → 2007-04-27 (+2d) | 2007-05-02 → 2007-05-04 (+2d) |  | 97d → 95d |  |  |
| 361 | **BRIDG harmonization** | 2007-04-25 → 2007-04-27 (+2d) | 2007-04-27 → 2007-05-01 (+4d) |  | 97d → 95d |  |  |
| 362 | Harmonize Study model | 2007-04-25 → 2007-04-27 (+2d) | 2007-04-27 → 2007-05-01 (+4d) |  | 91d → 95d |  |  |
| 363 | Harmonize Personnel model | 2007-04-25 → 2007-04-27 (+2d) | 2007-04-27 → 2007-05-01 (+4d) |  | 91d → 95d |  |  |
| 364 | Harmonize Multi-site Study model | 2007-04-25 → 2007-04-27 (+2d) | 2007-04-27 → 2007-05-01 (+4d) |  | 97d → 95d |  |  |
| 365 | **Model implementation** | 2007-04-30 → 2007-05-02 (+2d) | 2007-05-02 → 2007-05-04 (+2d) |  | 97d → 95d |  |  |
| 366 | Implement Study model | 2007-04-30 → 2007-05-02 (+2d) | 2007-05-02 → 2007-05-04 (+2d) |  | 97d → 95d |  |  |
| 367 | Implement Personnel model | 2007-04-30 → 2007-05-02 (+2d) | 2007-05-02 → 2007-05-04 (+2d) |  | 97d → 95d |  |  |
| 368 | Implement Multi-site Study model | 2007-04-30 → 2007-05-02 (+2d) | 2007-05-02 → 2007-05-04 (+2d) |  | 97d → 95d |  |  |
| 369 | Developer deliver UML to BAH (task 3.3.1) | 2007-05-02 → 2007-05-04 (+2d) | 2007-05-02 → 2007-05-04 (+2d) |  | 97d → 95d |  |  |
| 370 | BAH review of UML (task 3.3.1) | 2007-05-03 → 2007-05-07 (+4d) | 2007-05-16 → 2007-05-18 (+2d) |  | 97d → 95d |  |  |
| 371 | **System design (task 3.4.1)** | 2007-04-10 → 2007-04-12 (+2d) | 2007-05-14 → 2007-05-16 (+2d) |  | 99d → 97d |  |  |
| 372 | **Design eligibility** | 2007-04-10 → 2007-04-12 (+2d) | 2007-04-30 → 2007-05-02 (+2d) |  | 99d → 97d |  |  |
| 373 | Draft UML | 2007-04-10 → 2007-04-12 (+2d) | 2007-04-16 → 2007-04-18 (+2d) |  | 99d → 97d |  | resources Manav → Kruttik; Priyatam |
| 374 | Team review | 2007-04-17 → 2007-04-19 (+2d) | 2007-04-23 → 2007-04-25 (+2d) |  | 99d → 97d |  | resources Manav → Kruttik; Priyatam |
| 375 | Update design document | 2007-04-24 → 2007-04-26 (+2d) | 2007-04-30 → 2007-05-02 (+2d) |  | 99d → 97d |  | resources Manav → Kruttik; Priyatam |
| 376 | **Design personnel** | 2007-04-10 → 2007-04-12 (+2d) | 2007-04-30 → 2007-05-02 (+2d) |  | 99d → 97d |  | resources Ramakrishna → Priyatam; Kula |
| 384 | **Design multi-site study** | 2007-04-10 → 2007-04-12 (+2d) | 2007-04-30 → 2007-05-02 (+2d) |  | 99d → 97d |  |  |
| 392 | Deliver design doc to BAH (task 3.4.1) | 2007-04-30 → 2007-05-02 (+2d) | 2007-04-30 → 2007-05-02 (+2d) |  | 99d → 97d | 372, 376, 384, 375 → 372, 376, 380, 384, 388 |  |
| 393 | BAH review design doc (task 3.4.1) | 2007-05-01 → 2007-05-03 (+2d) | 2007-05-14 → 2007-05-16 (+2d) |  | 99d → 97d |  |  |
| 394 | **Implementation (task 3.5.1)** | 2007-04-10 → 2007-04-12 (+2d) | 2007-05-14 → 2007-05-16 (+2d) |  | 98d → 96d |  |  |
| 395 | **Database** | 2007-04-10 → 2007-04-12 (+2d) | 2007-04-12 → 2007-04-16 (+4d) |  | 98d → 96d |  |  |
| 396 | **Eligibility model** | 2007-04-10 → 2007-04-12 (+2d) | 2007-04-12 → 2007-04-16 (+4d) |  | 98d → 96d |  |  |
| 397 | Update DDLs | 2007-04-10 → 2007-04-12 (+2d) | 2007-04-10 → 2007-04-12 (+2d) |  | 79d → 96d |  |  |
| 398 | Apply to database | 2007-04-11 → 2007-04-13 (+2d) | 2007-04-11 → 2007-04-13 (+2d) |  | 79d → 96d |  |  |
| 399 | Create test data | 2007-04-12 → 2007-04-16 (+4d) | 2007-04-12 → 2007-04-16 (+4d) |  | 79d → 96d |  |  |
| 400 | **Study personnel** | 2007-04-10 → 2007-04-12 (+2d) | 2007-04-12 → 2007-04-16 (+4d) |  | 99d → 97d |  |  |
| 401 | Update DDLs | 2007-04-10 → 2007-04-12 (+2d) | 2007-04-10 → 2007-04-12 (+2d) |  | 80d → 97d |  |  |
| 402 | Apply to database | 2007-04-11 → 2007-04-13 (+2d) | 2007-04-11 → 2007-04-13 (+2d) |  | 80d → 97d |  |  |
| 403 | Create test data | 2007-04-12 → 2007-04-16 (+4d) | 2007-04-12 → 2007-04-16 (+4d) |  | 80d → 97d |  |  |
| 404 | **Multi-site** | 2007-04-10 → 2007-04-12 (+2d) | 2007-04-12 → 2007-04-16 (+4d) |  | 99d → 97d |  |  |
| 405 | Update DDLs | 2007-04-10 → 2007-04-12 (+2d) | 2007-04-10 → 2007-04-12 (+2d) |  | 80d → 97d |  |  |
| 406 | Apply to database | 2007-04-11 → 2007-04-13 (+2d) | 2007-04-11 → 2007-04-13 (+2d) |  | 80d → 97d |  |  |
| 407 | Create test data | 2007-04-12 → 2007-04-16 (+4d) | 2007-04-12 → 2007-04-16 (+4d) |  | 80d → 97d |  |  |
| 408 | **Business layer** | 2007-04-13 → 2007-04-17 (+4d) | 2007-04-26 → 2007-04-30 (+4d) |  | 98d → 96d |  |  |
| 409 | **Implement eligibility APIs** | 2007-04-13 → 2007-04-17 (+4d) | 2007-04-23 → 2007-04-25 (+2d) |  | 98d → 96d |  |  |
| 410 | Update APIs | 2007-04-13 → 2007-04-17 (+4d) | 2007-04-16 → 2007-04-18 (+2d) |  | 79d → 96d |  |  |
| 411 | Implement APIs | 2007-04-17 → 2007-04-19 (+2d) | 2007-04-19 → 2007-04-23 (+4d) |  | 79d → 96d |  |  |
| 412 | Deploy APIs | 2007-04-20 → 2007-04-24 (+4d) | 2007-04-23 → 2007-04-25 (+2d) |  | 79d → 96d |  |  |
| 413 | **Implement study personnel APIs** | 2007-04-13 → 2007-04-17 (+4d) | 2007-04-20 → 2007-04-24 (+4d) |  | 99d → 97d |  |  |
| 414 | Update APIs | 2007-04-13 → 2007-04-17 (+4d) | 2007-04-16 → 2007-04-18 (+2d) |  | 80d → 97d |  |  |
| 415 | Implement APIs | 2007-04-17 → 2007-04-19 (+2d) | 2007-04-19 → 2007-04-23 (+4d) |  | 80d → 97d |  |  |
| 416 | Deploy APIs | 2007-04-20 → 2007-04-24 (+4d) | 2007-04-20 → 2007-04-24 (+4d) |  | 80d → 97d |  |  |
| 417 | **Implement C3PR registration APIs** | 2007-04-13 → 2007-04-17 (+4d) | 2007-04-20 → 2007-04-24 (+4d) |  | 99d → 97d |  |  |
| 418 | Update APIs | 2007-04-13 → 2007-04-17 (+4d) | 2007-04-16 → 2007-04-18 (+2d) |  | 80d → 97d |  |  |
| 419 | Implement APIs | 2007-04-17 → 2007-04-19 (+2d) | 2007-04-19 → 2007-04-23 (+4d) |  | 80d → 97d |  |  |
| 420 | Deploy APIs | 2007-04-20 → 2007-04-24 (+4d) | 2007-04-20 → 2007-04-24 (+4d) |  | 80d → 97d |  |  |
| 421 | **Implement import eligibility** | 2007-04-13 → 2007-04-17 (+4d) | 2007-04-26 → 2007-04-30 (+4d) |  | 111d → 109d |  |  |
| 422 | Import eligibility from a file | 2007-04-13 → 2007-04-17 (+4d) | 2007-04-19 → 2007-04-23 (+4d) |  | 111d → 109d |  |  |
| 423 | Import eligibility from the caDSR | 2007-04-20 → 2007-04-24 (+4d) | 2007-04-26 → 2007-04-30 (+4d) |  | 111d → 109d |  |  |
| 426 | **Security** | 2007-04-10 → 2007-04-12 (+2d) | 2007-04-16 → 2007-04-18 (+2d) |  | 119d → 117d |  |  |
| 427 | Connect C3PR roles to GridGrouper groups | 2007-04-10 → 2007-04-12 (+2d) | 2007-04-16 → 2007-04-18 (+2d) |  | 119d → 117d |  |  |
| 428 | Hook groups into authorization | 2007-04-10 → 2007-04-12 (+2d) | 2007-04-16 → 2007-04-18 (+2d) |  | 119d → 117d |  |  |
| 429 | **Web interface** | 2007-04-23 → 2007-04-12 (-11d) | 2007-04-30 → 2007-05-02 (+2d) | 6d → 15d | 98d → 96d |  |  |
| 430 | **Modify study management interface** | 2007-04-23 → 2007-04-25 (+2d) | 2007-04-30 → 2007-05-02 (+2d) |  | 98d → 96d |  |  |
| 431 | Manage eligibility criteria | 2007-04-24 → 2007-04-26 (+2d) | 2007-04-30 → 2007-05-02 (+2d) |  | 98d → 96d |  |  |
| 432 | Manage multi-site study | 2007-04-23 → 2007-04-25 (+2d) | 2007-04-27 → 2007-05-01 (+4d) |  | 99d → 97d |  |  |
| 433 | **Modify study personnel management interface** | 2007-04-23 → 2007-04-25 (+2d) | 2007-04-27 → 2007-05-01 (+4d) |  | 99d → 97d |  | resources Ramakrishna → Priyatam; Kula |
| 434 | Manage study personnel | 2007-04-23 → 2007-04-25 (+2d) | 2007-04-27 → 2007-05-01 (+4d) |  | 99d → 97d |  | resources Ramakrishna → Priyatam; Kula |
| 435 | **Modify registration interface** | 2007-04-24 → 2007-04-26 (+2d) | 2007-04-30 → 2007-05-02 (+2d) |  | 98d → 96d |  |  |
| 436 | Check eligibility | 2007-04-24 → 2007-04-26 (+2d) | 2007-04-30 → 2007-05-02 (+2d) |  | 98d → 96d |  |  |
| 439 | Deliver codebase to BAH (task 3.5.1) | 2007-04-30 → 2007-05-02 (+2d) | 2007-04-30 → 2007-05-02 (+2d) |  | 98d → 96d |  |  |
| 440 | BAH review codebase (task 3.5.1) | 2007-05-01 → 2007-05-03 (+2d) | 2007-05-14 → 2007-05-16 (+2d) |  | 99d → 97d |  |  |
| 441 | **Testing** |  | 2007-05-15 → 2007-05-17 (+2d) | 32d → 34d | 98d → 96d |  |  |
| 442 | **Developer testing** |  | 2007-05-15 → 2007-05-17 (+2d) | 32d → 34d | 98d → 96d |  |  |
| 450 | **Integration and system testing (task 3.8.1)** | 2007-04-24 → 2007-04-26 (+2d) | 2007-05-15 → 2007-05-17 (+2d) |  | 98d → 96d |  |  |

| ID | Task | Start | Finish | Duration | Total float | Predecessors | Other |
| --- | --- | --- | --- | --- | --- | --- | --- |
| 451 | Generate test data | 2007-04-24 → 2007-04-26 (+2d) | 2007-04-24 → 2007-04-26 (+2d) |  | 98d → 96d |  |  |
| 452 | Write tests | 2007-04-25 → 2007-04-27 (+2d) | 2007-04-27 → 2007-05-01 (+4d) |  | 98d → 96d |  |  |
| 453 | Validate tests | 2007-04-30 → 2007-05-02 (+2d) | 2007-04-30 → 2007-05-02 (+2d) |  | 98d → 96d |  |  |
| 454 | Generate test report | 2007-05-01 → 2007-05-03 (+2d) | 2007-05-01 → 2007-05-03 (+2d) |  | 98d → 96d |  |  |
| 455 | Deliver test report to BAH (task 3.8.1) | 2007-05-01 → 2007-05-03 (+2d) | 2007-05-01 → 2007-05-03 (+2d) |  | 98d → 96d |  |  |
| 456 | BAH review test report (task 3.8.1) | 2007-05-02 → 2007-05-04 (+2d) | 2007-05-15 → 2007-05-17 (+2d) |  | 98d → 96d |  |  |
| 457 | **Adopter testing** |  |  |  |  | 456 → none |  |
| 465 | **QA testing (task 5.6.1)** |  |  |  |  | 459, 464 → 459 |  |
| 472 | **Documentation** | 2007-04-24 → 2007-04-26 (+2d) | 2007-05-14 → 2007-05-16 (+2d) |  | 99d → 97d |  |  |
| 473 | **Installation guide (task 3.10.1)** | 2007-04-26 → 2007-04-30 (+4d) | 2007-05-14 → 2007-05-16 (+2d) |  | 99d → 97d |  |  |
| 474 | Update installation guide | 2007-04-26 → 2007-04-30 (+4d) | 2007-04-30 → 2007-05-02 (+2d) |  | 79d → 97d |  |  |
| 475 | Deliver installation guide to BAH (task 3.10.1) | 2007-04-30 → 2007-05-02 (+2d) | 2007-04-30 → 2007-05-02 (+2d) |  | 79d → 97d |  |  |
| 476 | BAH review of installation guide (task 3.10.1) | 2007-05-01 → 2007-05-03 (+2d) | 2007-05-14 → 2007-05-16 (+2d) |  | 79d → 97d |  |  |
| 477 | **Administration guide (task 3.13.1)** | 2007-04-26 → 2007-04-30 (+4d) | 2007-05-14 → 2007-05-16 (+2d) |  | 99d → 97d |  |  |
| 478 | Update administration guide | 2007-04-26 → 2007-04-30 (+4d) | 2007-04-30 → 2007-05-02 (+2d) |  | 79d → 97d |  |  |
| 479 | Deliver administration guide to BAH (task 3.13.1) | 2007-04-30 → 2007-05-02 (+2d) | 2007-04-30 → 2007-05-02 (+2d) |  | 79d → 97d |  |  |
| 480 | BAH review of administration guide (task 3.13.1) | 2007-05-01 → 2007-05-03 (+2d) | 2007-05-14 → 2007-05-16 (+2d) |  | 79d → 97d |  |  |
| 481 | **Release notes (task 3.14.1)** | 2007-04-26 → 2007-04-30 (+4d) | 2007-05-14 → 2007-05-16 (+2d) |  | 99d → 97d |  |  |
| 482 | Update release notes | 2007-04-26 → 2007-04-30 (+4d) | 2007-04-30 → 2007-05-02 (+2d) |  | 79d → 97d |  |  |
| 483 | Deliver release notes to BAH (task 3.14.1) | 2007-04-30 → 2007-05-02 (+2d) | 2007-04-30 → 2007-05-02 (+2d) |  | 79d → 97d |  |  |
| 484 | BAH review of release notes (task 3.14.1) | 2007-05-01 → 2007-05-03 (+2d) | 2007-05-14 → 2007-05-16 (+2d) |  | 79d → 97d |  |  |
| 485 | **Adopter summary of C3PR (task 5.1.1)** | 2007-04-24 → 2007-04-26 (+2d) | 2007-05-14 → 2007-05-16 (+2d) |  | 99d → 97d |  |  |
| 486 | Adopter update summary | 2007-04-24 → 2007-04-26 (+2d) | 2007-04-26 → 2007-04-30 (+4d) |  | 79d → 97d |  |  |
| 487 | Developer review summary | 2007-04-27 → 2007-05-01 (+4d) | 2007-04-27 → 2007-05-01 (+4d) |  | 79d → 97d |  |  |
| 488 | Adopter update summary | 2007-04-30 → 2007-05-02 (+2d) | 2007-04-30 → 2007-05-02 (+2d) |  | 79d → 97d |  |  |
| 489 | Developer deliver C3PR summary to BAH (task 5.1.1) | 2007-04-30 → 2007-05-02 (+2d) | 2007-04-30 → 2007-05-02 (+2d) |  | 79d → 97d |  |  |
| 490 | BAH review of C3PR summary (task 5.1.1) | 2007-05-01 → 2007-05-03 (+2d) | 2007-05-14 → 2007-05-16 (+2d) |  | 79d → 97d |  |  |
| 491 | **Iteration 3 (stratification, security, enrollment. multi-site study)** |  | 2007-05-02 → 2007-05-31 (+29d) | 0d → 22d | 108d → 86d |  | was named Iteration 3 (stratification, security, multi-site study) |
| 509 | **Iteration 4 (stratification, enrollment, randomization, reporting, legacy systems)** |  | 2007-06-01 → 2007-06-29 (+28d) | 0d → 21d | 86d → 65d |  | was named Iteration 4 (stratification, randomization, reporting, legacy systems) |
| 525 | **Iteration 5 (randomization, reporting, legacy systems)** |  | 2007-07-02 → 2007-07-31 (+29d) | 0d → 22d | 65d → 43d |  |  |
| 534 | **Iteration 6 (randomization, reporting, legacy systems)** |  | 2007-08-01 → 2007-08-31 (+30d) | 0d → 23d | 43d → 20d |  | was named Iteration 6 (randomization, installer) |
| 542 | **Iteration 7 (installer)** |  |  |  |  |  | was named Iteration 7 |

## Version 6 (saved 2007-03-06)

Note of the change: added ammendents

Last finish 2007-10-01 → 2007-10-31 (+30d).

Added:

| ID | Task | Duration | Start | Finish | Predecessors | Resources |
| --- | --- | --- | --- | --- | --- | --- |
| 183 | **Business rules** | 5d | 2007-03-09 | 2007-03-15 |  | Ramakrishna |
| 184 | Duplicate registrations | 5d | 2007-03-09 | 2007-03-15 |  | Ramakrishna |
| 185 | Duplicate subjects | 5d | 2007-03-09 | 2007-03-15 |  | Ramakrishna |
| 186 | Duplicate studies | 5d | 2007-03-09 | 2007-03-15 |  | Ramakrishna |
| 202 | **Installer** | 15d | 2007-03-09 | 2007-03-29 |  | Kruttik |
| 203 | Externalize properties | 5d | 2007-03-09 | 2007-03-15 |  | Kruttik |
| 204 | Apply DDLs via ant | 5d | 2007-03-16 | 2007-03-22 | 203 | Kruttik |
| 205 | Make WAR file | 5d | 2007-03-23 | 2007-03-29 | 204 | Kruttik |
| 258 | **Support** | 22d | 2007-03-01 | 2007-03-30 | 2 | Developers |
| 259 | Adopter support | 22d | 2007-03-01 | 2007-03-30 |  | Developers |
| 260 | Bug fixing | 22d | 2007-03-01 | 2007-03-30 |  | Developers |
| 520 | **Study ammendments** | 22d | 2007-05-02 | 2007-05-31 | 503 |  |
| 521 | Change model, harmonize | 22d | 2007-05-02 | 2007-05-31 |  |  |
| 522 | Implement business rules | 22d | 2007-05-02 | 2007-05-31 |  |  |
| 533 | Begin interfacing with Randomization Hub | 21d | 2007-06-01 | 2007-06-29 |  |  |
| 542 | Begin semantic integration with the caDSR and EVS | 22d | 2007-07-02 | 2007-07-31 | 541 |  |
| 543 | Begin BRIDG review | 22d | 2007-07-02 | 2007-07-31 | 541 |  |
| 553 | Complete semantic integration with the caDSR and EVS | 23d | 2007-08-01 | 2007-08-31 | 552 |  |
| 554 | Complete BRIDG review | 23d | 2007-08-01 | 2007-08-31 | 552 |  |
| 563 | Begin silver review | 20d | 2007-09-03 | 2007-09-28 | 562 |  |
| 566 | Complete silver review | 23d | 2007-10-01 | 2007-10-31 | 565 |  |

Changed:

| ID | Task | Start | Finish | Duration | Total float | Predecessors | Other |
| --- | --- | --- | --- | --- | --- | --- | --- |
| 1 | **Iteration 1 (eligibility, study personnel, registration management, multi-site study)** |  | 2007-05-03 → 2007-04-16 (-17d) | 46d → 33d | 106d → 142d |  |  |
| 95 | **Analysis and Design** |  | 2007-05-03 → 2007-04-16 (-17d) | 42d → 29d | 106d → 142d |  |  |
| 122 | **System design (task 3.4.1)** |  | 2007-05-03 → 2007-04-12 (-21d) | 40d → 25d | 106d → 144d |  |  |
| 139 | **Design C3D integration** | 2007-03-30 → 2007-03-09 (-21d) | 2007-04-19 → 2007-03-29 (-21d) |  | 106d → 144d | 135 → none |  |
| 140 | Draft UML | 2007-03-30 → 2007-03-09 (-21d) | 2007-04-05 → 2007-03-15 (-21d) |  | 106d → 144d |  |  |
| 141 | Team review | 2007-04-06 → 2007-03-16 (-21d) | 2007-04-12 → 2007-03-22 (-21d) |  | 106d → 144d |  |  |
| 142 | Update design document | 2007-04-13 → 2007-03-23 (-21d) | 2007-04-19 → 2007-03-29 (-21d) |  | 106d → 144d |  |  |
| 143 | Deliver design doc to BAH (task 3.4.1) | 2007-04-19 → 2007-03-29 (-21d) | 2007-04-19 → 2007-03-29 (-21d) |  | 106d → 144d | 123, 127, 139 → 139 |  |
| 144 | BAH review design doc (task 3.4.1) | 2007-04-20 → 2007-03-30 (-21d) | 2007-05-03 → 2007-04-12 (-21d) |  | 106d → 144d |  |  |
| 170 | **Business layer** | 2007-03-15 → 2007-03-09 (-6d) | 2007-03-30 → 2007-03-26 (-4d) |  | 121d → 148d |  |  |
| 187 | Unit testing | 2007-03-23 → 2007-03-16 (-7d) | 2007-03-30 → 2007-03-23 (-7d) |  | 130d → 135d | 179 → 184 |  |
| 502 | **Iteration 3 (stratification, security, enrollment. multi-site study, study ammendments)** |  |  |  | 86d → 109d |  | was named Iteration 3 (stratification, security, enrollment. multi-site study) |
| 540 | **Iteration 5 (randomization, reporting, legacy systems, semantic integration, BRIDG)** |  |  |  | 43d → 66d |  | was named Iteration 5 (randomization, reporting, legacy systems) |
| 551 | **Iteration 6 (randomization, reporting, legacy systems, semantic integration, BRIDG)** |  |  |  | 20d → 43d |  | was named Iteration 6 (randomization, reporting, legacy systems) |
| 561 | **Iteration 7 (installer, silver review)** |  | 2007-09-03 → 2007-09-28 (+25d) | 0d → 20d | 20d → 23d |  | was named Iteration 7 (installer) |
| 564 | **Iteration 8 (silver review)** |  | 2007-10-01 → 2007-10-31 (+30d) | 0d → 23d |  |  | was named Iteration 8 |

## Version 7 (saved 2007-03-15)

Note of the change: added mentors

Last finish stays 2007-10-31. Complete tasks 0 → 10.

Added:

| ID | Task | Duration | Start | Finish | Predecessors |
| --- | --- | --- | --- | --- | --- |
| 504 | **Project management** | 22d | 2007-05-02 | 2007-05-31 | 503 |
| 505 | Update project plan | 22d | 2007-05-02 | 2007-05-31 |  |
| 506 | Update risk matrix | 22d | 2007-05-02 | 2007-05-31 |  |
| 507 | Monthly report | 22d | 2007-05-02 | 2007-05-31 |  |
| 508 | **Requirements and use cases** | 22d | 2007-05-02 | 2007-05-31 | 503 |
| 509 | Create level 1 use cases and requirements | 22d | 2007-05-02 | 2007-05-31 |  |
| 510 | Update use case document | 22d | 2007-05-02 | 2007-05-31 |  |
| 511 | Update requirements document | 22d | 2007-05-02 | 2007-05-31 |  |
| 512 | **Analysis and Design** | 22d | 2007-05-02 | 2007-05-31 | 503 |
| 513 | Perform level 1 design | 22d | 2007-05-02 | 2007-05-31 |  |
| 514 | Modeling | 22d | 2007-05-02 | 2007-05-31 |  |
| 515 | Systems design | 22d | 2007-05-02 | 2007-05-31 |  |
| 516 | **Implementation** | 22d | 2007-05-02 | 2007-05-31 | 503 |
| 536 | **Testing** | 22d | 2007-05-02 | 2007-05-31 | 503 |
| 537 | Developer testing | 22d | 2007-05-02 | 2007-05-31 |  |
| 538 | Adopter testing | 22d | 2007-05-02 | 2007-05-31 |  |
| 539 | **Documentation** | 22d | 2007-05-02 | 2007-05-31 | 503 |
| 540 | Installation guide | 22d | 2007-05-02 | 2007-05-31 |  |
| 541 | Administration guide | 22d | 2007-05-02 | 2007-05-31 |  |
| 542 | Release notes | 22d | 2007-05-02 | 2007-05-31 |  |
| 543 | Adopter summary of C3PR | 22d | 2007-05-02 | 2007-05-31 |  |
| 544 | **Support** | 22d | 2007-05-02 | 2007-05-31 | 503 |
| 545 | Adopter support | 22d | 2007-05-02 | 2007-05-31 |  |
| 546 | Bug fixing | 22d | 2007-05-02 | 2007-05-31 |  |
| 547 | **Touchpoints** | 22d | 2007-05-02 | 2007-05-31 | 503 |
| 548 | Adopter review of deliverables | 22d | 2007-05-02 | 2007-05-31 |  |
| 549 | Adopter deployment of previous iteration codebase | 22d | 2007-05-02 | 2007-05-31 |  |
| 550 | Contact mentors to review deliverables | 22d | 2007-05-02 | 2007-05-31 |  |
| 551 | **Deliverables** | 22d | 2007-05-02 | 2007-05-31 | 503 |
| 552 | Risk matrix 1.3.x | 22d | 2007-05-02 | 2007-05-31 |  |
| 553 | Monthly report and risk matrix 1.4.x | 22d | 2007-05-02 | 2007-05-31 |  |
| 554 | Use case document (3.1.x) | 22d | 2007-05-02 | 2007-05-31 |  |
| 555 | Requirements document (3.2.x) | 22d | 2007-05-02 | 2007-05-31 |  |
| 556 | UML (3.3.x) | 22d | 2007-05-02 | 2007-05-31 |  |
| 557 | Design document (3.4.x) | 22d | 2007-05-02 | 2007-05-31 |  |
| 558 | Codebase (3.5.x) | 22d | 2007-05-02 | 2007-05-31 |  |
| 559 | Test plan (3.6.x, 5.4.x) | 22d | 2007-05-02 | 2007-05-31 |  |
| 560 | Test report (3.8.x) | 22d | 2007-05-02 | 2007-05-31 |  |
| 561 | Adopter test plan (5.5.x) | 22d | 2007-05-02 | 2007-05-31 |  |
| 562 | Adopter test report (5.6.x) | 22d | 2007-05-02 | 2007-05-31 |  |
| 563 | Installation guide (3.10.x) | 22d | 2007-05-02 | 2007-05-31 |  |
| 564 | Administration guide (3.13.x) | 22d | 2007-05-02 | 2007-05-31 |  |
| 565 | Release notes (3.14.x) | 22d | 2007-05-02 | 2007-05-31 |  |
| 566 | Adopter summary of C3PR (5.1.x) | 22d | 2007-05-02 | 2007-05-31 |  |
| 569 | **Project management** | 21d | 2007-06-01 | 2007-06-29 | 568 |
| 570 | Update project plan | 21d | 2007-06-01 | 2007-06-29 |  |
| 571 | Update risk matrix | 21d | 2007-06-01 | 2007-06-29 |  |
| 572 | Monthly report | 21d | 2007-06-01 | 2007-06-29 |  |
| 573 | **Requirements and use cases** | 21d | 2007-06-01 | 2007-06-29 | 568 |
| 574 | Create level 1 use cases and requirements | 21d | 2007-06-01 | 2007-06-29 |  |
| 575 | Update use case document | 21d | 2007-06-01 | 2007-06-29 |  |
| 576 | Update requirements document | 21d | 2007-06-01 | 2007-06-29 |  |
| 577 | **Analysis and Design** | 21d | 2007-06-01 | 2007-06-29 | 568 |
| 578 | Perform level 1 design | 21d | 2007-06-01 | 2007-06-29 |  |
| 579 | Modeling | 21d | 2007-06-01 | 2007-06-29 |  |
| 580 | Systems design | 21d | 2007-06-01 | 2007-06-29 |  |
| 581 | **Implementation** | 21d | 2007-06-01 | 2007-06-29 | 568 |
| 597 | **Testing** | 21d | 2007-06-01 | 2007-06-29 | 568 |
| 598 | Developer testing | 21d | 2007-06-01 | 2007-06-29 |  |
| 599 | Adopter testing | 21d | 2007-06-01 | 2007-06-29 |  |
| 600 | **Documentation** | 21d | 2007-06-01 | 2007-06-29 | 568 |
| 601 | Installation guide | 21d | 2007-06-01 | 2007-06-29 |  |
| 602 | Administration guide | 21d | 2007-06-01 | 2007-06-29 |  |
| 603 | Release notes | 21d | 2007-06-01 | 2007-06-29 |  |
| 604 | Adopter summary of C3PR | 21d | 2007-06-01 | 2007-06-29 |  |
| 605 | **Support** | 21d | 2007-06-01 | 2007-06-29 | 568 |
| 606 | Adopter support | 21d | 2007-06-01 | 2007-06-29 |  |
| 607 | Bug fixing | 21d | 2007-06-01 | 2007-06-29 |  |
| 608 | **Touchpoints** | 21d | 2007-06-01 | 2007-06-29 | 568 |
| 609 | Adopter review of deliverables | 21d | 2007-06-01 | 2007-06-29 |  |
| 610 | Adopter deployment of previous iteration codebase | 21d | 2007-06-01 | 2007-06-29 |  |
| 611 | Complete mentor review of deliverables | 21d | 2007-06-01 | 2007-06-29 |  |
| 612 | **Deliverables** | 21d | 2007-06-01 | 2007-06-29 | 568 |
| 613 | Risk matrix 1.3.x | 21d | 2007-06-01 | 2007-06-29 |  |
| 614 | Monthly report and risk matrix 1.4.x | 21d | 2007-06-01 | 2007-06-29 |  |
| 615 | Use case document (3.1.x) | 21d | 2007-06-01 | 2007-06-29 |  |
| 616 | Requirements document (3.2.x) | 21d | 2007-06-01 | 2007-06-29 |  |
| 617 | UML (3.3.x) | 21d | 2007-06-01 | 2007-06-29 |  |
| 618 | Design document (3.4.x) | 21d | 2007-06-01 | 2007-06-29 |  |
| 619 | Codebase (3.5.x) | 21d | 2007-06-01 | 2007-06-29 |  |
| 620 | Test plan (3.6.x, 5.4.x) | 21d | 2007-06-01 | 2007-06-29 |  |
| 621 | Test report (3.8.x) | 21d | 2007-06-01 | 2007-06-29 |  |
| 622 | Adopter test plan (5.5.x) | 21d | 2007-06-01 | 2007-06-29 |  |
| 623 | Adopter test report (5.6.x) | 21d | 2007-06-01 | 2007-06-29 |  |
| 624 | Installation guide (3.10.x) | 21d | 2007-06-01 | 2007-06-29 |  |
| 625 | Administration guide (3.13.x) | 21d | 2007-06-01 | 2007-06-29 |  |
| 626 | Release notes (3.14.x) | 21d | 2007-06-01 | 2007-06-29 |  |
| 627 | Adopter summary of C3PR (5.1.x) | 21d | 2007-06-01 | 2007-06-29 |  |
| 630 | **Project management** | 22d | 2007-07-02 | 2007-07-31 | 629 |
| 631 | Update project plan | 22d | 2007-07-02 | 2007-07-31 |  |
| 632 | Update risk matrix | 22d | 2007-07-02 | 2007-07-31 |  |
| 633 | Monthly report | 22d | 2007-07-02 | 2007-07-31 |  |
| 634 | **Requirements and use cases** | 22d | 2007-07-02 | 2007-07-31 | 629 |
| 635 | Create level 1 use cases and requirements | 22d | 2007-07-02 | 2007-07-31 |  |
| 636 | Update use case document | 22d | 2007-07-02 | 2007-07-31 |  |
| 637 | Update requirements document | 22d | 2007-07-02 | 2007-07-31 |  |
| 638 | **Analysis and Design** | 22d | 2007-07-02 | 2007-07-31 | 629 |
| 639 | Perform level 1 design | 22d | 2007-07-02 | 2007-07-31 |  |
| 640 | Modeling | 22d | 2007-07-02 | 2007-07-31 |  |
| 641 | Systems design | 22d | 2007-07-02 | 2007-07-31 |  |
| 642 | **Implementation** | 22d | 2007-07-02 | 2007-07-31 |  |
| 650 | **Testing** | 22d | 2007-07-02 | 2007-07-31 | 629 |
| 651 | Developer testing | 22d | 2007-07-02 | 2007-07-31 |  |
| 652 | Adopter testing | 22d | 2007-07-02 | 2007-07-31 |  |
| 653 | **Documentation** | 22d | 2007-07-02 | 2007-07-31 | 629 |
| 654 | Installation guide | 22d | 2007-07-02 | 2007-07-31 |  |
| 655 | Administration guide | 22d | 2007-07-02 | 2007-07-31 |  |
| 656 | Release notes | 22d | 2007-07-02 | 2007-07-31 |  |
| 657 | Adopter summary of C3PR | 22d | 2007-07-02 | 2007-07-31 |  |
| 658 | **Support** | 22d | 2007-07-02 | 2007-07-31 | 629 |
| 659 | Adopter support | 22d | 2007-07-02 | 2007-07-31 |  |
| 660 | Bug fixing | 22d | 2007-07-02 | 2007-07-31 |  |
| 661 | **Touchpoints** | 22d | 2007-07-02 | 2007-07-31 | 629 |
| 662 | Adopter review of deliverables | 22d | 2007-07-02 | 2007-07-31 |  |
| 663 | Adopter deployment of previous iteration codebase | 22d | 2007-07-02 | 2007-07-31 |  |
| 666 | **Deliverables** | 22d | 2007-07-02 | 2007-07-31 | 629 |
| 667 | Risk matrix 1.3.x | 22d | 2007-07-02 | 2007-07-31 |  |
| 668 | Monthly report and risk matrix 1.4.x | 22d | 2007-07-02 | 2007-07-31 |  |
| 669 | Use case document (3.1.x) | 22d | 2007-07-02 | 2007-07-31 |  |
| 670 | Requirements document (3.2.x) | 22d | 2007-07-02 | 2007-07-31 |  |
| 671 | UML (3.3.x) | 22d | 2007-07-02 | 2007-07-31 |  |
| 672 | Design document (3.4.x) | 22d | 2007-07-02 | 2007-07-31 |  |
| 673 | Codebase (3.5.x) | 22d | 2007-07-02 | 2007-07-31 |  |
| 674 | Test plan (3.6.x, 5.4.x) | 22d | 2007-07-02 | 2007-07-31 |  |
| 675 | Test report (3.8.x) | 22d | 2007-07-02 | 2007-07-31 |  |
| 676 | Adopter test plan (5.5.x) | 22d | 2007-07-02 | 2007-07-31 |  |
| 677 | Adopter test report (5.6.x) | 22d | 2007-07-02 | 2007-07-31 |  |
| 678 | Installation guide (3.10.x) | 22d | 2007-07-02 | 2007-07-31 |  |
| 679 | Administration guide (3.13.x) | 22d | 2007-07-02 | 2007-07-31 |  |
| 680 | Release notes (3.14.x) | 22d | 2007-07-02 | 2007-07-31 |  |
| 681 | Adopter summary of C3PR (5.1.x) | 22d | 2007-07-02 | 2007-07-31 |  |
| 684 | **Project management** | 23d | 2007-08-01 | 2007-08-31 | 683 |
| 685 | Update project plan | 23d | 2007-08-01 | 2007-08-31 |  |
| 686 | Update risk matrix | 23d | 2007-08-01 | 2007-08-31 |  |
| 687 | Monthly report | 23d | 2007-08-01 | 2007-08-31 |  |
| 688 | **Requirements and use cases** | 23d | 2007-08-01 | 2007-08-31 | 683 |
| 689 | Create level 1 use cases and requirements | 23d | 2007-08-01 | 2007-08-31 |  |
| 690 | Update use case document | 23d | 2007-08-01 | 2007-08-31 |  |
| 691 | Update requirements document | 23d | 2007-08-01 | 2007-08-31 |  |
| 692 | **Analysis and Design** | 23d | 2007-08-01 | 2007-08-31 | 683 |
| 693 | Perform level 1 design | 23d | 2007-08-01 | 2007-08-31 |  |
| 694 | Modeling | 23d | 2007-08-01 | 2007-08-31 |  |
| 695 | Systems design | 23d | 2007-08-01 | 2007-08-31 |  |
| 696 | **Implementation** | 23d | 2007-08-01 | 2007-08-31 | 683 |
| 703 | **Testing** | 23d | 2007-08-01 | 2007-08-31 | 683 |
| 704 | Developer testing | 23d | 2007-08-01 | 2007-08-31 |  |
| 705 | Adopter testing | 23d | 2007-08-01 | 2007-08-31 |  |
| 706 | **Documentation** | 23d | 2007-08-01 | 2007-08-31 | 683 |
| 707 | Installation guide | 23d | 2007-08-01 | 2007-08-31 |  |
| 708 | Administration guide | 23d | 2007-08-01 | 2007-08-31 |  |
| 709 | Release notes | 23d | 2007-08-01 | 2007-08-31 |  |
| 710 | Adopter summary of C3PR | 23d | 2007-08-01 | 2007-08-31 |  |
| 711 | **Support** | 23d | 2007-08-01 | 2007-08-31 | 683 |
| 712 | Adopter support | 23d | 2007-08-01 | 2007-08-31 |  |
| 713 | Bug fixing | 23d | 2007-08-01 | 2007-08-31 |  |
| 714 | **Touchpoints** | 23d | 2007-08-01 | 2007-08-31 | 683 |
| 715 | Adopter review of deliverables | 23d | 2007-08-01 | 2007-08-31 |  |
| 716 | Adopter deployment of previous iteration codebase | 23d | 2007-08-01 | 2007-08-31 |  |
| 719 | **Deliverables** | 23d | 2007-08-01 | 2007-08-31 | 683 |
| 720 | Risk matrix 1.3.x | 23d | 2007-08-01 | 2007-08-31 |  |
| 721 | Monthly report and risk matrix 1.4.x | 23d | 2007-08-01 | 2007-08-31 |  |
| 722 | Use case document (3.1.x) | 23d | 2007-08-01 | 2007-08-31 |  |
| 723 | Requirements document (3.2.x) | 23d | 2007-08-01 | 2007-08-31 |  |
| 724 | UML (3.3.x) | 23d | 2007-08-01 | 2007-08-31 |  |
| 725 | Design document (3.4.x) | 23d | 2007-08-01 | 2007-08-31 |  |
| 726 | Codebase (3.5.x) | 23d | 2007-08-01 | 2007-08-31 |  |
| 727 | Test plan (3.6.x, 5.4.x) | 23d | 2007-08-01 | 2007-08-31 |  |
| 728 | Test report (3.8.x) | 23d | 2007-08-01 | 2007-08-31 |  |
| 729 | Adopter test plan (5.5.x) | 23d | 2007-08-01 | 2007-08-31 |  |
| 730 | Adopter test report (5.6.x) | 23d | 2007-08-01 | 2007-08-31 |  |
| 731 | Installation guide (3.10.x) | 23d | 2007-08-01 | 2007-08-31 |  |
| 732 | Administration guide (3.13.x) | 23d | 2007-08-01 | 2007-08-31 |  |
| 733 | Release notes (3.14.x) | 23d | 2007-08-01 | 2007-08-31 |  |
| 734 | Adopter summary of C3PR (5.1.x) | 23d | 2007-08-01 | 2007-08-31 |  |
| 737 | **Project management** | 20d | 2007-09-03 | 2007-09-28 | 736 |
| 738 | Update project plan | 20d | 2007-09-03 | 2007-09-28 |  |
| 739 | Update risk matrix | 20d | 2007-09-03 | 2007-09-28 |  |
| 740 | Monthly report | 20d | 2007-09-03 | 2007-09-28 |  |
| 741 | **Requirements and use cases** | 20d | 2007-09-03 | 2007-09-28 | 736 |
| 742 | Create level 1 use cases and requirements | 20d | 2007-09-03 | 2007-09-28 |  |
| 743 | Update use case document | 20d | 2007-09-03 | 2007-09-28 |  |
| 744 | Update requirements document | 20d | 2007-09-03 | 2007-09-28 |  |
| 745 | **Analysis and Design** | 20d | 2007-09-03 | 2007-09-28 | 736 |
| 746 | Perform level 1 design | 20d | 2007-09-03 | 2007-09-28 |  |
| 747 | Modeling | 20d | 2007-09-03 | 2007-09-28 |  |
| 748 | Systems design | 20d | 2007-09-03 | 2007-09-28 |  |
| 749 | Implementation | 20d | 2007-09-03 | 2007-09-28 | 736 |
| 750 | **Testing** | 20d | 2007-09-03 | 2007-09-28 | 736 |
| 751 | Developer testing | 20d | 2007-09-03 | 2007-09-28 |  |
| 752 | Adopter testing | 20d | 2007-09-03 | 2007-09-28 |  |
| 753 | **Documentation** | 20d | 2007-09-03 | 2007-09-28 | 736 |
| 754 | Installation guide | 20d | 2007-09-03 | 2007-09-28 |  |
| 755 | Administration guide | 20d | 2007-09-03 | 2007-09-28 |  |
| 756 | Release notes | 20d | 2007-09-03 | 2007-09-28 |  |
| 757 | Adopter summary of C3PR | 20d | 2007-09-03 | 2007-09-28 |  |
| 758 | **Support** | 20d | 2007-09-03 | 2007-09-28 | 736 |
| 759 | Adopter support | 20d | 2007-09-03 | 2007-09-28 |  |
| 760 | Bug fixing | 20d | 2007-09-03 | 2007-09-28 |  |
| 761 | **Touchpoints** | 20d | 2007-09-03 | 2007-09-28 | 736 |
| 762 | Adopter review of deliverables | 20d | 2007-09-03 | 2007-09-28 |  |
| 763 | Adopter deployment of previous iteration codebase | 20d | 2007-09-03 | 2007-09-28 |  |
| 765 | **Deliverables** | 20d | 2007-09-03 | 2007-09-28 | 736 |
| 766 | Risk matrix 1.3.x | 20d | 2007-09-03 | 2007-09-28 |  |
| 767 | Monthly report and risk matrix 1.4.x | 20d | 2007-09-03 | 2007-09-28 |  |
| 768 | Use case document (3.1.x) | 20d | 2007-09-03 | 2007-09-28 |  |
| 769 | Requirements document (3.2.x) | 20d | 2007-09-03 | 2007-09-28 |  |
| 770 | UML (3.3.x) | 20d | 2007-09-03 | 2007-09-28 |  |
| 771 | Design document (3.4.x) | 20d | 2007-09-03 | 2007-09-28 |  |
| 772 | Codebase (3.5.x) | 20d | 2007-09-03 | 2007-09-28 |  |
| 773 | Test plan (3.6.x, 5.4.x) | 20d | 2007-09-03 | 2007-09-28 |  |
| 774 | Test report (3.8.x) | 20d | 2007-09-03 | 2007-09-28 |  |
| 775 | Adopter test plan (5.5.x) | 20d | 2007-09-03 | 2007-09-28 |  |
| 776 | Adopter test report (5.6.x) | 20d | 2007-09-03 | 2007-09-28 |  |
| 777 | Installation guide (3.10.x) | 20d | 2007-09-03 | 2007-09-28 |  |
| 778 | Administration guide (3.13.x) | 20d | 2007-09-03 | 2007-09-28 |  |
| 779 | Release notes (3.14.x) | 20d | 2007-09-03 | 2007-09-28 |  |
| 780 | Adopter summary of C3PR (5.1.x) | 20d | 2007-09-03 | 2007-09-28 |  |
| 783 | **Project management** | 23d | 2007-10-01 | 2007-10-31 | 782 |
| 784 | Update project plan | 23d | 2007-10-01 | 2007-10-31 |  |
| 785 | Update risk matrix | 23d | 2007-10-01 | 2007-10-31 |  |
| 786 | Monthly report | 23d | 2007-10-01 | 2007-10-31 |  |
| 787 | **Requirements and use cases** | 23d | 2007-10-01 | 2007-10-31 | 782 |
| 788 | Create level 1 use cases and requirements | 23d | 2007-10-01 | 2007-10-31 |  |
| 789 | Update use case document | 23d | 2007-10-01 | 2007-10-31 |  |
| 790 | Update requirements document | 23d | 2007-10-01 | 2007-10-31 |  |
| 791 | **Analysis and Design** | 23d | 2007-10-01 | 2007-10-31 | 782 |
| 792 | Perform level 1 design | 23d | 2007-10-01 | 2007-10-31 |  |
| 793 | Modeling | 23d | 2007-10-01 | 2007-10-31 |  |
| 794 | Systems design | 23d | 2007-10-01 | 2007-10-31 |  |
| 795 | Implementation | 23d | 2007-10-01 | 2007-10-31 | 782 |
| 796 | **Testing** | 23d | 2007-10-01 | 2007-10-31 | 782 |
| 797 | Developer testing | 23d | 2007-10-01 | 2007-10-31 |  |
| 798 | Adopter testing | 23d | 2007-10-01 | 2007-10-31 |  |
| 799 | **Documentation** | 23d | 2007-10-01 | 2007-10-31 | 782 |
| 800 | Installation guide | 23d | 2007-10-01 | 2007-10-31 |  |
| 801 | Administration guide | 23d | 2007-10-01 | 2007-10-31 |  |
| 802 | Release notes | 23d | 2007-10-01 | 2007-10-31 |  |
| 803 | Adopter summary of C3PR | 23d | 2007-10-01 | 2007-10-31 |  |
| 804 | **Support** | 23d | 2007-10-01 | 2007-10-31 | 782 |
| 805 | Adopter support | 23d | 2007-10-01 | 2007-10-31 |  |
| 806 | Bug fixing | 23d | 2007-10-01 | 2007-10-31 |  |
| 807 | **Touchpoints** | 23d | 2007-10-01 | 2007-10-31 | 782 |
| 808 | Adopter review of deliverables | 23d | 2007-10-01 | 2007-10-31 |  |
| 809 | Adopter deployment of previous iteration codebase | 23d | 2007-10-01 | 2007-10-31 |  |
| 811 | **Deliverables** | 23d | 2007-10-01 | 2007-10-31 | 782 |
| 812 | Risk matrix 1.3.x | 23d | 2007-10-01 | 2007-10-31 |  |
| 813 | Monthly report and risk matrix 1.4.x | 23d | 2007-10-01 | 2007-10-31 |  |
| 814 | Use case document (3.1.x) | 23d | 2007-10-01 | 2007-10-31 |  |
| 815 | Requirements document (3.2.x) | 23d | 2007-10-01 | 2007-10-31 |  |
| 816 | UML (3.3.x) | 23d | 2007-10-01 | 2007-10-31 |  |
| 817 | Design document (3.4.x) | 23d | 2007-10-01 | 2007-10-31 |  |
| 818 | Codebase (3.5.x) | 23d | 2007-10-01 | 2007-10-31 |  |
| 819 | Test plan (3.6.x, 5.4.x) | 23d | 2007-10-01 | 2007-10-31 |  |
| 820 | Test report (3.8.x) | 23d | 2007-10-01 | 2007-10-31 |  |
| 821 | Adopter test plan (5.5.x) | 23d | 2007-10-01 | 2007-10-31 |  |
| 822 | Adopter test report (5.6.x) | 23d | 2007-10-01 | 2007-10-31 |  |
| 823 | Installation guide (3.10.x) | 23d | 2007-10-01 | 2007-10-31 |  |
| 824 | Administration guide (3.13.x) | 23d | 2007-10-01 | 2007-10-31 |  |
| 825 | Release notes (3.14.x) | 23d | 2007-10-01 | 2007-10-31 |  |
| 826 | Adopter summary of C3PR (5.1.x) | 23d | 2007-10-01 | 2007-10-31 |  |

Changed:

| ID | Task | Start | Finish | Complete | Total float | Predecessors | Other |
| --- | --- | --- | --- | --- | --- | --- | --- |
| 1 | **Iteration 1 (eligibility, study personnel, registration management, multi-site study)** | 2007-03-01 A |  | 0% → 3% |  |  |  |
| 3 | **Project Management** | 2007-03-01 A |  | 0% → 14% |  |  |  |
| 4 | **Draft project plan (task 1.1)** | 2007-03-01 A |  | 0% → 17% |  |  |  |
| 5 | Developer draft | 2007-03-01 A | 2007-03-07 A | 0% → 100% | 150d → none |  |  |
| 12 | **Update risk matrix (task 1.3.1)** | 2007-03-01 A |  | 0% → 25% | 145d → 155d |  |  |
| 13 | Update risk matrix for week 1 | 2007-03-01 A | 2007-03-07 A | 0% → 100% | 150d → none |  |  |
| 22 | **Requirements and use cases** | 2007-03-01 A |  | 0% → 8% | 142d → 143d |  |  |
| 23 | **Create level 1 use cases and requirements** | 2007-03-01 A |  | 0% → 83% | 129d → 142d |  |  |
| 24 | **Level 1 use cases for eligibility** | 2007-03-01 A | 2007-03-02 A | 0% → 100% | 131d → none |  |  |
| 25 | Use case document (task 3.1.1) | 2007-03-01 A | 2007-03-01 A | 0% → 100% | 121d → none |  |  |
| 26 | Requirements document (3.2.1) | 2007-03-02 A | 2007-03-02 A | 0% → 100% | 121d → none |  |  |
| 27 | **Level 1 use cases for study personnel** | 2007-03-01 A | 2007-03-02 A | 0% → 100% | 131d → none |  |  |
| 28 | Use case document (task 3.1.1) | 2007-03-01 A | 2007-03-01 A | 0% → 100% | 121d → none |  |  |
| 29 | Requirements document (3.2.1) | 2007-03-02 A | 2007-03-02 A | 0% → 100% | 121d → none |  |  |
| 30 | **Level 1 use cases for registration management** | 2007-03-01 A | 2007-03-02 A | 0% → 100% | 131d → none |  |  |
| 31 | Use case document (task 3.1.1) | 2007-03-01 A | 2007-03-01 A | 0% → 100% | 121d → none |  |  |
| 32 | Requirements document (3.2.1) | 2007-03-02 A | 2007-03-02 A | 0% → 100% | 121d → none |  |  |
| 33 | **Level 1 use cases for multi-site study** | 2007-03-01 A | 2007-03-06 A | 0% → 100% | 129d → none |  |  |
| 34 | Use case document (task 3.1.1) | 2007-03-01 A | 2007-03-02 A | 0% → 100% | 119d → none |  |  |
| 35 | Requirements document (3.2.1) | 2007-03-05 A | 2007-03-06 A | 0% → 100% | 119d → none |  |  |
| 166 | Create data access objects (DAOs) |  |  |  | 121d → 144d |  | resources none → Manav |
| 517 | **Stratification** |  |  |  |  | 503 → none |  |
| 519 | **Security** |  |  |  |  | 503 → none |  |
| 521 | **Enrollment** |  |  |  |  | 503 → none |  |
| 522 | **Enrollment details** |  |  |  |  | 503 → none |  |
| 529 | **Multi-site study** |  |  |  |  | 503 → none |  |
| 531 | **Registration management** |  |  |  |  | 503 → none |  |
| 533 | **Study ammendments** |  |  |  |  | 503 → none |  |
| 582 | **Stratification** |  |  |  |  | 568 → none |  |
| 584 | **Enrollment** |  |  |  |  | 568 → none |  |
| 589 | **Randomization** |  |  |  |  | 568 → none |  |
| 592 | **Reporting** |  |  |  |  | 568 → none |  |
| 594 | **Legacy systems** |  |  |  |  | 568 → none |  |
| 664 | Begin semantic integration with the caDSR and EVS |  |  |  |  | 629 → none |  |
| 697 | **Randomization** |  |  |  |  | 683 → none |  |
| 699 | **Reporting** |  |  |  |  | 683 → none |  |
| 701 | **Legacy systems** |  |  |  |  | 683 → none |  |
| 717 | Complete semantic integration with the caDSR and EVS |  |  |  |  | 683 → none |  |
| 718 | Complete BRIDG review |  |  |  |  | 683 → none |  |
| 764 | Begin silver review |  |  |  |  | 736 → none |  |
| 810 | Complete silver review |  |  |  |  | 782 → none |  |

## Version 8 (saved 2007-04-02)

Note of the change: baseline 1

Last finish 2007-10-31 → 2007-11-12 (+12d). Complete tasks 10 → 134.

Added:

| ID | Task | Duration | Start | Finish | Predecessors | Constraint | Resources |
| --- | --- | --- | --- | --- | --- | --- | --- |
| 225 | **Adopter deployment** | 5d | 2007-03-01 | 2007-03-07 |  |  |  |
| 226 | Adopter deployment of previous iteration | 5d | 2007-03-01 | 2007-03-07 |  |  |  |
| 263 | **Demonstration** | 0d | 2007-04-09 | 2007-04-09 | 2 |  | Patrick; Ram; BAH |
| 264 | Demonstrate latest features to BAH | 0d | 2007-04-09 | 2007-04-09 | 2 | start no earlier than 2007-04-09 | Patrick; Ram; BAH |
| 409 | **Research** | 5d | 2007-04-06 | 2007-04-12 |  |  | Manav |
| 410 | **Investigate C3D integration** | 5d | 2007-04-06 | 2007-04-12 |  |  | Manav |
| 411 | Investigate C3D SSO versus CTMSi SSO | 5d | 2007-04-06 | 2007-04-12 |  |  | Manav |
| 476 | **Adopter deployment** | 5d | 2007-04-02 | 2007-04-06 |  |  |  |
| 477 | Adopter deployment of previous iteration | 5d | 2007-04-02 | 2007-04-06 |  |  |  |
| 511 | **Demonstration** | 0d | 2007-05-14 | 2007-05-14 | 266 |  | Patrick; Ram; BAH |
| 512 | Demonstrate latest features to BAH | 0d | 2007-05-14 | 2007-05-14 | 266 | start no earlier than 2007-05-14 | Patrick; Ram; BAH |
| 513 | Demonstrate to the larger community | 0d | 2007-05-14 | 2007-05-14 | 266 | start no earlier than 2007-05-14 | Patrick; Ram; BAH |
| 514 | **Touchpoints** | 22d | 2007-04-02 | 2007-05-01 | 266 |  |  |
| 515 | Adopter review of deliverables | 22d | 2007-04-02 | 2007-05-01 |  |  |  |
| 516 | Adopter deployment of previous iteration codebase | 22d | 2007-04-02 | 2007-05-01 |  |  |  |
| 582 | **Demonstration** | 0d | 2007-06-11 | 2007-06-11 | 518 |  | Patrick; Ram; BAH |
| 583 | Demonstrate latest features to BAH | 0d | 2007-06-11 | 2007-06-11 | 518 | start no earlier than 2007-06-11 | Patrick; Ram; BAH |
| 645 | **Demonstration** | 0d | 2007-07-09 | 2007-07-09 | 585 |  | Patrick; Ram; BAH |
| 646 | Demonstrate latest features to BAH | 0d | 2007-07-09 | 2007-07-09 | 585 | start no earlier than 2007-07-09 | Patrick; Ram; BAH |
| 647 | Demonstrate to the larger community | 0d | 2007-07-09 | 2007-07-09 | 585 | start no earlier than 2007-07-09 | Patrick; Ram; BAH |
| 702 | **Demonstration** | 0d | 2007-08-13 | 2007-08-13 | 649 |  | Patrick; Ram; BAH |
| 703 | Demonstrate latest features to BAH | 0d | 2007-08-13 | 2007-08-13 | 649 | start no earlier than 2007-08-13 | Patrick; Ram; BAH |
| 757 | **Demonstration** | 0d | 2007-09-10 | 2007-09-10 | 705 |  | Patrick; Ram; BAH |
| 758 | Demonstrate latest features to BAH | 0d | 2007-09-10 | 2007-09-10 | 705 | start no earlier than 2007-09-10 | Patrick; Ram; BAH |
| 759 | Demonstrate to the larger community | 0d | 2007-09-10 | 2007-09-10 | 758 |  | Patrick; Ram; BAH |
| 806 | **Demonstration** | 0d | 2007-10-08 | 2007-10-08 | 761 |  | Patrick; Ram; BAH |
| 807 | Demonstrate latest features to BAH | 0d | 2007-10-08 | 2007-10-08 | 761 | start no earlier than 2007-10-08 | Patrick; Ram; BAH |
| 854 | **Demonstration** | 0d | 2007-11-12 | 2007-11-12 | 809 |  | Patrick; Ram; BAH |
| 855 | Demonstrate latest features to BAH | 0d | 2007-11-12 | 2007-11-12 | 809 | start no earlier than 2007-11-12 | Patrick; Ram; BAH |
| 856 | Demonstrate to the larger community | 0d | 2007-11-12 | 2007-11-12 | 809 | start no earlier than 2007-11-12 | Patrick; Ram; BAH |

Changed:

| ID | Task | Start | Finish | Complete | Total float | Other |
| --- | --- | --- | --- | --- | --- | --- |
| 1 | **Iteration 1 (eligibility, study personnel, registration management, multi-site study)** |  |  | 3% → 59% | 142d → 149d |  |
| 3 | **Project Management** |  |  | 14% → 57% | 145d → 152d |  |
| 4 | **Draft project plan (task 1.1)** |  |  | 17% → 67% | 145d → 152d |  |
| 6 | BAH review | 2007-03-08 A | 2007-03-14 A | 0% → 100% | 145d → none |  |
| 7 | Developer update | 2007-03-15 A | 2007-03-21 A | 0% → 100% | 145d → none |  |
| 8 | Adopter review | 2007-03-22 A | 2007-03-26 A | 0% → 100% | 145d → none |  |
| 9 | Developer update | 2007-03-27 A | 2007-03-28 A | 0% → 100% | 145d → none |  |
| 10 | Deliver project plan to BAH (task 1.1) | 2007-03-28 A | 2007-03-28 A | 0% → 100% | 145d → none |  |
| 12 | **Update risk matrix (task 1.4.1)** |  |  | 25% → 50% | 155d → 162d | was named Update risk matrix (task 1.3.1) |
| 14 | Update risk matrix for week 2 | 2007-03-08 A | 2007-03-14 A | 0% → 100% | 145d → none |  |
| 15 | Deliver risk matrix to BAH (task 1.4.1) | 2007-03-14 A | 2007-03-14 A | 0% → 100% | 145d → none | was named Deliver risk matrix to BAH (task 1.3.1) |
| 16 | BAH review risk matrix (task 1.4.1) |  |  |  | 155d → 162d | was named BAH review risk matrix (task 1.3.1) |
| 17 | **Monthly report (task 1.3.1)** | 2007-03-15 A |  | 0% → 50% | 145d → 152d |  |
| 18 | Update risk matrix for week 3 | 2007-03-15 A | 2007-03-21 A | 0% → 100% | 145d → none |  |
| 19 | Update risk matrix for week 4 | 2007-03-22 A | 2007-03-28 A | 0% → 100% | 145d → none |  |
| 20 | Deliver monthly report and risk matrix to BAH (task 1.3.1) | 2007-03-28 A | 2007-03-28 A | 0% → 100% | 145d → none |  |
| 22 | **Requirements and use cases** |  |  | 8% → 38% | 143d → 150d |  |
| 39 | **Update use case document (task 3.1.1, task 5.2.1)** | 2007-03-07 A |  | 0% → 80% | 143d → 160d |  |
| 40 | **Update eligibility use cases** | 2007-03-07 A | 2007-03-19 A | 0% → 100% | 143d → none |  |
| 41 | Developer update | 2007-03-07 A | 2007-03-08 A | 0% → 100% | 120d → none |  |
| 42 | Adopter review | 2007-03-09 A | 2007-03-15 A | 0% → 100% | 120d → none |  |
| 43 | Developer update | 2007-03-16 A | 2007-03-16 A | 0% → 100% | 120d → none |  |
| 44 | Adopter sign-off | 2007-03-19 A | 2007-03-19 A | 0% → 100% | 120d → none |  |
| 45 | **Update study personnel use cases** | 2007-03-07 A | 2007-03-19 A | 0% → 100% | 143d → none |  |
| 46 | Developer update | 2007-03-07 A | 2007-03-08 A | 0% → 100% | 120d → none |  |
| 47 | Adopter review | 2007-03-09 A | 2007-03-15 A | 0% → 100% | 120d → none |  |
| 48 | Developer update | 2007-03-16 A | 2007-03-16 A | 0% → 100% | 120d → none |  |
| 49 | Adopter sign-off | 2007-03-19 A | 2007-03-19 A | 0% → 100% | 120d → none |  |
| 50 | **Update registration management use cases** | 2007-03-07 A | 2007-03-19 A | 0% → 100% | 143d → none |  |
| 51 | Developer update | 2007-03-07 A | 2007-03-08 A | 0% → 100% | 120d → none |  |
| 52 | Adopter review | 2007-03-09 A | 2007-03-15 A | 0% → 100% | 120d → none |  |
| 53 | Developer update | 2007-03-16 A | 2007-03-16 A | 0% → 100% | 120d → none |  |
| 54 | Adopter sign-off | 2007-03-19 A | 2007-03-19 A | 0% → 100% | 120d → none |  |
| 55 | **Update multi-site trial use cases** | 2007-03-07 A | 2007-03-19 A | 0% → 100% | 143d → none |  |
| 56 | Developer update | 2007-03-07 A | 2007-03-08 A | 0% → 100% | 120d → none |  |
| 57 | Adopter review | 2007-03-09 A | 2007-03-15 A | 0% → 100% | 120d → none |  |
| 58 | Developer update | 2007-03-16 A | 2007-03-16 A | 0% → 100% | 120d → none |  |
| 59 | Adopter sign-off | 2007-03-19 A | 2007-03-19 A | 0% → 100% | 120d → none |  |
| 91 | Developer deliver use case document to BAH (task 3.1.1, task 5.2.1) | 2007-03-30 A | 2007-03-30 A | 0% → 100% | 143d → none |  |
| 93 | Developer deliver requirements document to BAH (task 3.2.1, task 5.3.1) | 2007-03-30 A | 2007-03-30 A | 0% → 100% | 143d → none |  |
| 95 | **Analysis and Design** | 2007-03-07 A |  | 0% → 70% | 142d → 149d |  |
| 96 | **Perform level 1 design** | 2007-03-07 A | 2007-03-08 A | 0% → 100% | 142d → none |  |
| 97 | Cursory BRIDG harmonization | 2007-03-07 A | 2007-03-07 A | 0% → 100% | 115d → none |  |
| 98 | Update implementation model | 2007-03-08 A | 2007-03-08 A | 0% → 100% | 115d → none |  |
| 99 | Cursory system design | 2007-03-07 A | 2007-03-08 A | 0% → 100% | 115d → none |  |
| 100 | **Modeling (task 3.3.1)** | 2007-03-09 A |  | 0% → 80% | 142d → 149d |  |
| 101 | **Update model** | 2007-03-09 A | 2007-03-16 A | 0% → 100% | 142d → none |  |
| 102 | **BRIDG harmonization** | 2007-03-09 A | 2007-03-13 A | 0% → 100% | 142d → none |  |
| 103 | Harmonize Study model | 2007-03-09 A | 2007-03-12 A | 0% → 100% | 120d → none |  |
| 104 | Harmonize Personnel model | 2007-03-09 A | 2007-03-13 A | 0% → 100% | 119d → none |  |
| 105 | Harmonize Multi-site Study model | 2007-03-09 A | 2007-03-13 A | 0% → 100% | 119d → none |  |
| 106 | **Model implementation** | 2007-03-14 A | 2007-03-16 A | 0% → 100% | 142d → none |  |
| 107 | Implement Study model | 2007-03-14 A | 2007-03-16 A | 0% → 100% | 119d → none |  |
| 108 | Implement Personnel model | 2007-03-14 A | 2007-03-16 A | 0% → 100% | 119d → none |  |
| 109 | Implement Multi-site Study model | 2007-03-14 A | 2007-03-16 A | 0% → 100% | 119d → none |  |
| 110 | Adopter review | 2007-03-19 A | 2007-03-23 A | 0% → 100% | 142d → none |  |
| 111 | **Update model** | 2007-03-26 A | 2007-04-02 A | 0% → 100% | 142d → none |  |
| 112 | **BRIDG harmonization** | 2007-03-26 A | 2007-03-28 A | 0% → 100% | 142d → none |  |
| 113 | Harmonize Study model | 2007-03-26 A | 2007-03-28 A | 0% → 100% | 119d → none |  |
| 114 | Harmonize Personnel model | 2007-03-26 A | 2007-03-28 A | 0% → 100% | 119d → none |  |
| 115 | Harmonize Multi-site Study model | 2007-03-26 A | 2007-03-28 A | 0% → 100% | 119d → none |  |
| 116 | **Model implementation** | 2007-03-29 A | 2007-04-02 A | 0% → 100% | 142d → none |  |
| 117 | Implement Study model | 2007-03-29 A | 2007-04-02 A | 0% → 100% | 119d → none |  |
| 118 | Implement Personnel model | 2007-03-29 A | 2007-04-02 A | 0% → 100% | 119d → none |  |
| 119 | Implement Multi-site Study model | 2007-03-29 A | 2007-04-02 A | 0% → 100% | 119d → none |  |
| 120 | Developer deliver UML to BAH (task 3.3.1) | 2007-04-02 A | 2007-04-02 A | 0% → 100% | 142d → none |  |
| 122 | **System design (task 3.4.1)** | 2007-03-09 A |  | 0% → 71% | 144d → 151d |  |
| 123 | **Design eligibility** | 2007-03-09 A | 2007-03-29 A | 0% → 100% | 154d → none |  |
| 124 | Draft UML | 2007-03-09 A | 2007-03-15 A | 0% → 100% | 121d → none |  |
| 125 | Team review | 2007-03-16 A | 2007-03-22 A | 0% → 100% | 121d → none |  |

| ID | Task | Start | Finish | Complete | Total float |
| --- | --- | --- | --- | --- | --- |
| 126 | Update design document | 2007-03-23 A | 2007-03-29 A | 0% → 100% | 121d → none |
| 127 | **Design personnel** | 2007-03-09 A | 2007-03-29 A | 0% → 100% | 154d → none |
| 128 | Draft UML | 2007-03-09 A | 2007-03-15 A | 0% → 100% | 121d → none |
| 129 | Team review | 2007-03-16 A | 2007-03-22 A | 0% → 100% | 121d → none |
| 130 | Update design document | 2007-03-23 A | 2007-03-29 A | 0% → 100% | 121d → none |
| 131 | **Design registration management** | 2007-03-09 A | 2007-03-29 A | 0% → 100% | 154d → none |
| 132 | Draft UML | 2007-03-09 A | 2007-03-15 A | 0% → 100% | 131d → none |
| 133 | Team review | 2007-03-16 A | 2007-03-22 A | 0% → 100% | 131d → none |
| 134 | Update design document | 2007-03-23 A | 2007-03-29 A | 0% → 100% | 131d → none |
| 135 | **Design multi-site study** | 2007-03-09 A | 2007-03-29 A | 0% → 100% | 154d → none |
| 136 | Draft UML | 2007-03-09 A | 2007-03-15 A | 0% → 100% | 106d → none |
| 137 | Team review | 2007-03-16 A | 2007-03-22 A | 0% → 100% | 106d → none |
| 138 | Update design document | 2007-03-23 A | 2007-03-29 A | 0% → 100% | 106d → none |
| 149 | **Implementation (task 3.5.1)** | 2007-03-09 A |  | 0% → 72% | 144d → 151d |
| 150 | **Database layer** | 2007-03-09 A | 2007-03-16 A | 0% → 100% | 144d → none |
| 151 | **Eligibility model** | 2007-03-09 A | 2007-03-14 A | 0% → 100% | 153d → none |
| 152 | Create DDLs | 2007-03-09 A | 2007-03-09 A | 0% → 100% | 130d → none |
| 153 | Apply to database | 2007-03-12 A | 2007-03-12 A | 0% → 100% | 130d → none |
| 154 | Create test data | 2007-03-13 A | 2007-03-13 A | 0% → 100% | 130d → none |
| 155 | Create data access objects (DAOs) | 2007-03-14 A | 2007-03-14 A | 0% → 100% | 130d → none |
| 156 | **Study personnel** | 2007-03-09 A | 2007-03-16 A | 0% → 100% | 152d → none |
| 157 | Investigate how to implement Person with Role | 2007-03-09 A | 2007-03-12 A | 0% → 100% | 129d → none |
| 158 | Create DDLs | 2007-03-13 A | 2007-03-13 A | 0% → 100% | 129d → none |
| 159 | Apply to database | 2007-03-14 A | 2007-03-14 A | 0% → 100% | 129d → none |
| 160 | Create test data | 2007-03-15 A | 2007-03-15 A | 0% → 100% | 129d → none |
| 161 | Create data access objects (DAOs) | 2007-03-16 A | 2007-03-16 A | 0% → 100% | 129d → none |
| 162 | **Multi-site** | 2007-03-09 A | 2007-03-14 A | 0% → 100% | 144d → none |
| 163 | Create DDLs | 2007-03-09 A | 2007-03-09 A | 0% → 100% | 144d → none |
| 164 | Apply to database | 2007-03-12 A | 2007-03-12 A | 0% → 100% | 144d → none |
| 165 | Create test data | 2007-03-13 A | 2007-03-13 A | 0% → 100% | 144d → none |
| 166 | Create data access objects (DAOs) | 2007-03-14 A | 2007-03-14 A | 0% → 100% | 144d → none |
| 167 | Unit testing | 2007-03-09 A | 2007-03-14 A | 0% → 100% | 155d → none |
| 168 | **Deployment** | 2007-03-15 A | 2007-03-16 A | 0% → 100% | 153d → none |
| 169 | Deploy a second C3PR for multi-site testing | 2007-03-15 A | 2007-03-16 A | 0% → 100% | 130d → none |
| 170 | **Business layer** | 2007-03-09 A |  | 0% → 63% | 148d → 164d |
| 171 | **Implement eligibility APIs** | 2007-03-15 A | 2007-03-23 A | 0% → 100% | 153d → none |
| 172 | Design APIs | 2007-03-15 A | 2007-03-16 A | 0% → 100% | 130d → none |
| 173 | Implement APIs | 2007-03-19 A | 2007-03-21 A | 0% → 100% | 130d → none |
| 174 | Deploy APIs | 2007-03-22 A | 2007-03-23 A | 0% → 100% | 130d → none |
| 175 | **Implement study personnel APIs** | 2007-03-19 A | 2007-03-26 A | 0% → 100% | 152d → none |
| 176 | Design APIs | 2007-03-19 A | 2007-03-20 A | 0% → 100% | 129d → none |
| 177 | Implement APIs | 2007-03-21 A | 2007-03-23 A | 0% → 100% | 129d → none |
| 178 | Deploy APIs | 2007-03-26 A | 2007-03-26 A | 0% → 100% | 129d → none |
| 179 | **Implement C3PR registration APIs** | 2007-03-15 A | 2007-03-22 A | 0% → 100% | 144d → none |
| 180 | Design APIs | 2007-03-15 A | 2007-03-16 A | 0% → 100% | 121d → none |
| 181 | Implement APIs | 2007-03-19 A | 2007-03-21 A | 0% → 100% | 121d → none |
| 182 | Deploy APIs | 2007-03-22 A | 2007-03-22 A | 0% → 100% | 121d → none |
| 187 | Unit testing | 2007-03-16 A | 2007-03-23 A | 0% → 100% | 135d → none |
| 188 | **ESB** | 2007-03-23 A | 2007-03-29 A | 0% → 100% | 144d → none |
| 189 | Implement inbound-binding component for C3PR registration | 2007-03-23 A | 2007-03-29 A | 0% → 100% | 144d → none |
| 190 | Unit testing | 2007-03-23 A | 2007-03-29 A | 0% → 100% | 144d → none |
| 191 | **Web interface** | 2007-03-09 A | 2007-04-02 A | 0% → 100% | 152d → none |
| 192 | **Modify study management interface** | 2007-03-23 A | 2007-03-30 A | 0% → 100% | 153d → none |
| 193 | Manage eligibility criteria | 2007-03-26 A | 2007-03-30 A | 0% → 100% | 130d → none |
| 194 | Manage multi-site study | 2007-03-23 A | 2007-03-29 A | 0% → 100% | 131d → none |
| 195 | **Modify study personnel management interface** | 2007-03-27 A | 2007-04-02 A | 0% → 100% | 152d → none |
| 196 | Manage study personnel | 2007-03-27 A | 2007-04-02 A | 0% → 100% | 129d → none |
| 197 | **Modify registration interface** | 2007-03-26 A | 2007-03-30 A | 0% → 100% | 153d → none |
| 198 | Check eligibility | 2007-03-26 A | 2007-03-30 A | 0% → 100% | 130d → none |
| 199 | **Modify registration management interface** | 2007-03-09 A | 2007-03-15 A | 0% → 100% | 164d → none |
| 200 | Manage study subject registration | 2007-03-09 A | 2007-03-15 A | 0% → 100% | 141d → none |
| 201 | Unit testing | 2007-03-09 A | 2007-03-15 A | 0% → 100% | 141d → none |
| 202 | **Installer** | 2007-03-09 A |  | 0% → 33% | 154d → 161d |
| 203 | Externalize properties | 2007-03-09 A | 2007-03-15 A | 0% → 100% | 131d → none |
| 206 | Deliver codebase to BAH (task 3.5.1) | 2007-03-29 A | 2007-03-29 A | 0% → 100% | 144d → none |
| 208 | **Testing** | 2007-03-01 A |  | 0% → 57% | 145d → 152d |
| 209 | **Developer testing** | 2007-03-01 A |  | 0% → 57% | 145d → 152d |
| 210 | **Update developer test plan (task 3.6.1, task 5.4.1)** | 2007-03-01 A |  | 0% → 67% | 145d → 152d |
| 211 | Developer draft | 2007-03-01 A | 2007-03-07 A | 0% → 100% | 145d → none |
| 212 | Adopter review | 2007-03-08 A | 2007-03-14 A | 0% → 100% | 145d → none |

| ID | Task | Start | Finish | Complete | Total float | Other |
| --- | --- | --- | --- | --- | --- | --- |
| 213 | Developer update | 2007-03-15 A | 2007-03-21 A | 0% → 100% | 145d → none |  |
| 214 | Adopter review and sign | 2007-03-22 A | 2007-03-28 A | 0% → 100% | 145d → none |  |
| 215 | Deliver signed test plan to BAH (task 3.6.1, task 5.4.1) | 2007-03-28 A | 2007-03-28 A | 0% → 100% | 145d → none |  |
| 217 | **Integration and system testing (task 3.8.1)** | 2007-03-23 A |  | 0% → 38% | 149d → 156d |  |
| 218 | Generate test data | 2007-03-23 A | 2007-03-23 A | 0% → 100% | 158d → none |  |
| 219 | Write tests | 2007-03-23 A | 2007-03-27 A | 0% → 100% | 154d → none |  |
| 220 | Validate tests | 2007-03-28 A | 2007-03-28 A | 0% → 100% | 154d → none |  |
| 221 | Generate test report | 2007-03-29 A | 2007-03-29 A | 0% → 100% | 154d → none |  |
| 222 | Deliver test report to BAH (task 3.8.1) | 2007-03-23 A | 2007-03-23 A | 0% → 100% | 159d → none |  |
| 224 | **Adopter testing** | 2007-03-01 A |  | 0% → 58% | 145d → 152d |  |
| 227 | **Update adopter test plan (task 5.5.1)** | 2007-03-01 A |  | 0% → 67% | 145d → 152d |  |
| 228 | Adopter update test script | 2007-03-01 A | 2007-03-07 A | 0% → 100% | 145d → none |  |
| 229 | Adopter update test approach | 2007-03-08 A | 2007-03-14 A | 0% → 100% | 145d → none |  |
| 230 | Developer review | 2007-03-15 A | 2007-03-21 A | 0% → 100% | 145d → none |  |
| 231 | Adopter update | 2007-03-22 A | 2007-03-28 A | 0% → 100% | 145d → none |  |
| 232 | Developer deliver adopter test plan to BAH (task 5.5.1) | 2007-03-28 A | 2007-03-28 A | 0% → 100% | 145d → none |  |
| 234 | **Functional testing (task 5.6.1)** | 2007-03-08 A |  | 0% → 58% | 148d → 155d |  |
| 235 | Adopter create test data | 2007-03-08 A | 2007-03-14 A | 0% → 100% | 148d → none |  |
| 236 | Adopter perform test script | 2007-03-15 A | 2007-03-21 A | 0% → 100% | 148d → none |  |
| 237 | Adopter document results | 2007-03-22 A | 2007-03-23 A | 0% → 100% | 148d → none |  |
| 238 | Adopter log bugs | 2007-03-26 A | 2007-03-27 A | 0% → 100% | 156d → none |  |
| 239 | Developer deliver adopter test report to BAH (task 5.6.1) | 2007-03-23 A | 2007-03-23 A | 0% → 100% | 148d → none |  |
| 241 | **Documentation** | 2007-03-23 A |  | 0% → 26% | 144d → 151d |  |
| 242 | **Installation guide (task 3.10.1)** | 2007-03-27 A |  | 0% → 23% | 144d → 151d |  |
| 243 | Update installation guide | 2007-03-27 A | 2007-03-29 A | 0% → 100% | 144d → none |  |
| 244 | Deliver installation guide to BAH (task 3.10.1) | 2007-03-29 A | 2007-03-29 A | 0% → 100% | 144d → none |  |
| 246 | **Administration guide (task 3.13.1)** | 2007-03-27 A |  | 0% → 23% | 144d → 151d |  |
| 247 | Update administration guide | 2007-03-27 A | 2007-03-29 A | 0% → 100% | 144d → none |  |
| 248 | Deliver administration guide to BAH (task 3.13.1) | 2007-03-29 A | 2007-03-29 A | 0% → 100% | 144d → none |  |
| 250 | **Release notes (task 3.14.1)** | 2007-03-27 A |  | 0% → 23% | 144d → 151d |  |
| 251 | Update release notes | 2007-03-27 A | 2007-03-29 A | 0% → 100% | 144d → none |  |
| 252 | Deliver release notes to BAH (task 3.14.1) | 2007-03-29 A | 2007-03-29 A | 0% → 100% | 144d → none |  |
| 254 | **Adopter summary of C3PR (task 5.1.1)** | 2007-03-23 A |  | 0% → 33% | 144d → 151d |  |
| 255 | Adopter update summary | 2007-03-23 A | 2007-03-27 A | 0% → 100% | 144d → none |  |
| 256 | Developer review summary | 2007-03-28 A | 2007-03-28 A | 0% → 100% | 144d → none |  |
| 257 | Adopter update summary | 2007-03-29 A | 2007-03-29 A | 0% → 100% | 144d → none |  |
| 258 | Developer deliver C3PR summary to BAH (task 5.1.1) | 2007-03-29 A | 2007-03-29 A | 0% → 100% | 144d → none |  |
| 260 | **Support** | 2007-03-01 A | 2007-03-30 A | 0% → 100% | 153d → none |  |
| 261 | Adopter support | 2007-03-01 A | 2007-03-30 A | 0% → 100% | 153d → none |  |
| 262 | Bug fixing | 2007-03-01 A | 2007-03-30 A | 0% → 100% | 153d → none |  |
| 276 | **Update risk matrix (task 1.4.2)** |  |  |  | 123d → 130d | was named Update risk matrix (task 1.3.1) |
| 279 | Deliver risk matrix to BAH (task 1.4.2) |  |  |  | 100d → 130d | was named Deliver risk matrix to BAH (task 1.3.1) |
| 280 | BAH review risk matrix (task 1.4.2) |  |  |  | 110d → 140d | was named BAH review risk matrix (task 1.3.1) |
| 281 | **Monthly report (task 1.3.2)** |  |  |  | 123d → 130d | was named Monthly report (task 1.3.1) |
| 284 | Deliver monthly report and risk matrix to BAH (task 1.3.2) |  |  |  | 100d → 130d | was named Deliver monthly report and risk matrix to BAH (task 1.3.1) |
| 285 | BAH review monthly report and risk matrix (task 1.3.2) |  |  |  | 100d → 130d | was named BAH review monthly report and risk matrix (task 1.3.1) |
| 303 | **Update use case document (task 3.1.2, task 5.2.2)** |  |  |  | 121d → 128d | was named Update use case document (task 3.1.1, task 5.2.1) |
| 329 | **Update requirements document (task 3.2.2, task 5.3.2)** |  |  |  | 121d → 128d | was named Update requirements document (task 3.2.1, task 5.3.1) |
| 355 | Developer deliver use case document to BAH (task 3.1.2, task 5.2.2) |  |  |  | 121d → 128d | was named Developer deliver use case document to BAH (task 3.1.1, task 5.2.1) |
| 356 | BAH review use case document (task 3.1.2, task 5.2.2) |  |  |  | 121d → 128d | was named BAH review use case document (task 3.1.1, task 5.2.1) |
| 357 | Developer deliver requirements document to BAH (task 3.2.2, task 5.3.2) |  |  |  | 121d → 128d | was named Developer deliver requirements document to BAH (task 3.2.1, task 5.3.1) |
| 358 | BAH review requirements document (task 3.2.2, task 5.3.2) |  |  |  | 121d → 128d | was named BAH review requirements document (task 3.2.1, task 5.3.1) |
| 364 | **Modeling (task 3.3.2)** |  |  |  | 118d → 125d | was named Modeling (task 3.3.1) |
| 384 | Developer deliver UML to BAH (task 3.3.2) |  |  |  | 95d → 125d | was named Developer deliver UML to BAH (task 3.3.1) |
| 385 | BAH review of UML (task 3.3.2) |  |  |  | 95d → 125d | was named BAH review of UML (task 3.3.1) |
| 386 | **System design (task 3.4.2)** |  |  |  | 120d → 127d | was named System design (task 3.4.1) |
| 407 | Deliver design doc to BAH (task 3.4.2) |  |  |  | 97d → 127d | was named Deliver design doc to BAH (task 3.4.1) |
| 408 | BAH review design doc (task 3.4.2) |  |  |  | 97d → 127d | was named BAH review design doc (task 3.4.1) |
| 412 | **Implementation (task 3.5.2)** |  |  |  | 119d → 126d | was named Implementation (task 3.5.1) |
| 457 | Deliver codebase to BAH (task 3.5.2) |  |  |  | 96d → 126d | was named Deliver codebase to BAH (task 3.5.1) |
| 458 | BAH review codebase (task 3.5.2) |  |  |  | 97d → 127d | was named BAH review codebase (task 3.5.1) |
| 461 | **Update developer test plan (task 3.6.2, task 5.4.2)** |  |  |  | 123d → 130d | was named Update developer test plan (task 3.6.1, task 5.4.1) |
| 466 | Deliver signed test plan to BAH (task 3.6.2, task 5.4.2) |  |  |  | 100d → 130d | was named Deliver signed test plan to BAH (task 3.6.1, task 5.4.1) |
| 467 | BAH review signed test plan (task 3.6.2, task 5.4.2) |  |  |  | 100d → 130d | was named BAH review signed test plan (task 3.6.1, task 5.4.1) |
| 468 | **Integration and system testing (task 3.8.2)** |  |  |  | 119d → 126d | was named Integration and system testing (task 3.8.1) |
| 473 | Deliver test report to BAH (task 3.8.2) |  |  |  | 96d → 126d | was named Deliver test report to BAH (task 3.8.1) |
| 474 | BAH review test report (task 3.8.2) |  |  |  | 96d → 126d | was named BAH review test report (task 3.8.1) |
| 493 | **Installation guide (task 3.10.2)** |  |  |  | 120d → 127d | was named Installation guide (task 3.10.1) |
| 495 | Deliver installation guide to BAH (task 3.10.2) |  |  |  | 97d → 127d | was named Deliver installation guide to BAH (task 3.10.1) |
| 496 | BAH review of installation guide (task 3.10.2) |  |  |  | 97d → 127d | was named BAH review of installation guide (task 3.10.1) |

| ID | Task | Finish | Duration | Total float | Other |
| --- | --- | --- | --- | --- | --- |
| 497 | **Administration guide (task 3.13.2)** |  |  | 120d → 127d | was named Administration guide (task 3.13.1) |
| 499 | Deliver administration guide to BAH (task 3.13.2) |  |  | 97d → 127d | was named Deliver administration guide to BAH (task 3.13.1) |
| 500 | BAH review of administration guide (task 3.13.2) |  |  | 97d → 127d | was named BAH review of administration guide (task 3.13.1) |
| 501 | **Release notes (task 3.14.2)** |  |  | 120d → 127d | was named Release notes (task 3.14.1) |
| 503 | Deliver release notes to BAH (task 3.14.2) |  |  | 97d → 127d | was named Deliver release notes to BAH (task 3.14.1) |
| 504 | BAH review of release notes (task 3.14.2) |  |  | 97d → 127d | was named BAH review of release notes (task 3.14.1) |
| 505 | **Adopter summary of C3PR (task 5.1.2)** |  |  | 120d → 127d | was named Adopter summary of C3PR (task 5.1.1) |
| 509 | Developer deliver C3PR summary to BAH (task 5.1.2) |  |  | 97d → 127d | was named Developer deliver C3PR summary to BAH (task 5.1.1) |
| 510 | BAH review of C3PR summary (task 5.1.2) |  |  | 97d → 127d | was named BAH review of C3PR summary (task 5.1.1) |
| 517 | **Iteration 3 (stratification, security, enrollment. multi-site study, study ammendments)** | 2007-05-31 → 2007-06-11 (+11d) | 22d → 28d | 109d → 110d |  |
| 567 | Risk matrix 1.4.x |  |  | 109d → 116d | was named Risk matrix 1.3.x |
| 568 | Monthly report and risk matrix 1.3.x |  |  | 109d → 116d | was named Monthly report and risk matrix 1.4.x |
| 584 | **Iteration 4 (stratification, enrollment, randomization, reporting, legacy systems)** | 2007-06-29 → 2007-07-09 (+10d) | 21d → 26d | 88d → 90d |  |
| 630 | Risk matrix 1.4.x |  |  | 88d → 95d | was named Risk matrix 1.3.x |
| 631 | Monthly report and risk matrix 1.3.x |  |  | 88d → 95d | was named Monthly report and risk matrix 1.4.x |
| 648 | **Iteration 5 (randomization, reporting, legacy systems, semantic integration, BRIDG)** | 2007-07-31 → 2007-08-13 (+13d) | 22d → 30d | 66d → 65d |  |
| 687 | Risk matrix 1.4.x |  |  | 66d → 73d | was named Risk matrix 1.3.x |
| 688 | Monthly report and risk matrix 1.3.x |  |  | 66d → 73d | was named Monthly report and risk matrix 1.4.x |
| 704 | **Iteration 6 (randomization, reporting, legacy systems, semantic integration, BRIDG)** | 2007-08-31 → 2007-09-10 (+10d) | 23d → 28d | 43d → 45d |  |
| 742 | Risk matrix 1.4.x |  |  | 43d → 50d | was named Risk matrix 1.3.x |
| 743 | Monthly report and risk matrix 1.3.x |  |  | 43d → 50d | was named Monthly report and risk matrix 1.4.x |
| 760 | **Iteration 7 (installer, silver review)** | 2007-09-28 → 2007-10-08 (+10d) | 20d → 25d | 23d → 25d |  |
| 766 | **Requirements and use cases** | 2007-09-28 → 2007-09-14 (-14d) | 20d → 10d | 23d → 40d |  |
| 767 | Create level 1 use cases and requirements | 2007-09-28 → 2007-09-14 (-14d) | 20d → 10d | 23d → 40d |  |
| 768 | Update use case document | 2007-09-28 → 2007-09-14 (-14d) | 20d → 10d | 23d → 40d |  |
| 769 | Update requirements document | 2007-09-28 → 2007-09-14 (-14d) | 20d → 10d | 23d → 40d |  |
| 770 | **Analysis and Design** | 2007-09-28 → 2007-09-14 (-14d) | 20d → 10d | 23d → 40d |  |
| 771 | Perform level 1 design | 2007-09-28 → 2007-09-14 (-14d) | 20d → 10d | 23d → 40d |  |
| 772 | Modeling | 2007-09-28 → 2007-09-14 (-14d) | 20d → 10d | 23d → 40d |  |
| 773 | Systems design | 2007-09-28 → 2007-09-14 (-14d) | 20d → 10d | 23d → 40d |  |
| 774 | Implementation | 2007-09-28 → 2007-09-14 (-14d) | 20d → 10d | 23d → 40d |  |
| 791 | Risk matrix 1.4.x |  |  | 23d → 30d | was named Risk matrix 1.3.x |
| 792 | Monthly report and risk matrix 1.3.x |  |  | 23d → 30d | was named Monthly report and risk matrix 1.4.x |
| 808 | **Iteration 8 (silver review)** | 2007-10-31 → 2007-11-12 (+12d) | 23d → 30d |  |  |
| 814 | **Requirements and use cases** | 2007-10-31 → 2007-10-12 (-19d) | 23d → 10d | 0d → 20d |  |
| 815 | Create level 1 use cases and requirements | 2007-10-31 → 2007-10-12 (-19d) | 23d → 10d | 0d → 20d |  |
| 816 | Update use case document | 2007-10-31 → 2007-10-12 (-19d) | 23d → 10d | 0d → 20d |  |
| 817 | Update requirements document | 2007-10-31 → 2007-10-12 (-19d) | 23d → 10d | 0d → 20d |  |
| 818 | **Analysis and Design** | 2007-10-31 → 2007-10-12 (-19d) | 23d → 10d | 0d → 20d |  |
| 819 | Perform level 1 design | 2007-10-31 → 2007-10-12 (-19d) | 23d → 10d | 0d → 20d |  |
| 820 | Modeling | 2007-10-31 → 2007-10-12 (-19d) | 23d → 10d | 0d → 20d |  |
| 821 | Systems design | 2007-10-31 → 2007-10-12 (-19d) | 23d → 10d | 0d → 20d |  |
| 822 | Implementation | 2007-10-31 → 2007-10-12 (-19d) | 23d → 10d | 0d → 20d |  |
| 839 | Risk matrix 1.4.x |  |  | 0d → 7d | was named Risk matrix 1.3.x |
| 840 | Monthly report and risk matrix 1.3.x |  |  | 0d → 7d | was named Monthly report and risk matrix 1.4.x |

## Version 9 (saved 2007-05-03)

Note of the change: *** empty log message ***

Last finish stays 2007-11-12. Complete tasks 134 → 135.

Added:

| ID | Task | Duration | Start | Finish | Predecessors | Resources |
| --- | --- | --- | --- | --- | --- | --- |
| 519 | **Project Management** | 30d | 2007-05-02 | 2007-06-12 | 518 | Patrick; Adopters; BAH |
| 520 | **Draft project plan (task 1.1)** | 30d | 2007-05-02 | 2007-06-12 |  | Patrick; Adopters; BAH |
| 521 | Developer draft | 5d | 2007-05-02 | 2007-05-08 |  | Patrick |
| 522 | BAH review | 5d | 2007-05-09 | 2007-05-15 | 521 | BAH |
| 523 | Developer update | 5d | 2007-05-16 | 2007-05-22 | 522 | Patrick |
| 524 | Adopter review | 3d | 2007-05-23 | 2007-05-25 | 523 | Adopters |
| 525 | Developer update | 2d | 2007-05-28 | 2007-05-29 | 524 | Patrick |
| 526 | Deliver project plan to BAH (task 1.1) | 0d | 2007-05-29 | 2007-05-29 | 525 | Patrick |
| 527 | BAH review project plan (task 1.1) | 10d | 2007-05-30 | 2007-06-12 | 526 | BAH |
| 528 | **Update risk matrix (task 1.4.2)** | 20d | 2007-05-02 | 2007-05-29 |  | Patrick; BAH |
| 529 | Update risk matrix for week 1 | 5d | 2007-05-02 | 2007-05-08 |  | Patrick |
| 530 | Update risk matrix for week 2 | 5d | 2007-05-09 | 2007-05-15 | 529 | Patrick |
| 531 | Deliver risk matrix to BAH (task 1.4.2) | 0d | 2007-05-15 | 2007-05-15 | 530 | Patrick |
| 532 | BAH review risk matrix (task 1.4.2) | 10d | 2007-05-16 | 2007-05-29 | 531 | BAH |
| 533 | **Monthly report (task 1.3.2)** | 20d | 2007-05-16 | 2007-06-12 | 531 | Patrick; BAH |
| 534 | Update risk matrix for week 3 | 5d | 2007-05-16 | 2007-05-22 |  | Patrick |
| 535 | Update risk matrix for week 4 | 5d | 2007-05-23 | 2007-05-29 | 534 | Patrick |
| 536 | Deliver monthly report and risk matrix to BAH (task 1.3.2) | 0d | 2007-05-29 | 2007-05-29 | 535 | Patrick |
| 537 | BAH review monthly report and risk matrix (task 1.3.2) | 10d | 2007-05-30 | 2007-06-12 | 536 | BAH |
| 539 | **Create level 1 use cases and requirements** | 2d | 2007-05-02 | 2007-05-03 |  | Developers |
| 540 | **Level 1 use cases for eligibility** | 2d | 2007-05-02 | 2007-05-03 |  | Priyatam |
| 541 | Use case document (task 3.1.3) | 1d | 2007-05-02 | 2007-05-02 |  | Priyatam |
| 542 | Requirements document (task 3.2.3) | 1d | 2007-05-03 | 2007-05-03 | 541 | Priyatam |
| 543 | **Level 1 use cases for study personnel** | 2d | 2007-05-02 | 2007-05-03 |  | Ramakrishna |
| 544 | Use case document (task 3.1.3) | 1d | 2007-05-02 | 2007-05-02 |  | Ramakrishna |
| 545 | Requirements document (task 3.2.3) | 1d | 2007-05-03 | 2007-05-03 | 544 | Ramakrishna |
| 546 | **Level 1 use cases for registration management** | 2d | 2007-05-02 | 2007-05-03 |  | Ramakrishna |
| 547 | Use case document (task 3.1.3) | 1d | 2007-05-02 | 2007-05-02 |  | Ramakrishna |
| 548 | Requirements document (task 3.2.3) | 1d | 2007-05-03 | 2007-05-03 | 547 | Ramakrishna |
| 549 | **Level 1 use cases for multi-site study** | 2d | 2007-05-02 | 2007-05-03 |  | Manav |
| 550 | Use case document (task 3.1.3) | 1d | 2007-05-02 | 2007-05-02 |  | Manav |
| 551 | Requirements document (task 3.2.3) | 1d | 2007-05-03 | 2007-05-03 | 550 | Manav |
| 552 | **Level 1 use cases for C3D integration** | 2d | 2007-05-02 | 2007-05-03 |  | Manav |
| 553 | Use case document (task 3.1.3) | 1d | 2007-05-02 | 2007-05-02 |  | Manav |
| 554 | Requirements document (task 3.2.3) | 1d | 2007-05-03 | 2007-05-03 | 553 | Manav |
| 555 | **Level 1 use cases for Security** | 2d | 2007-05-02 | 2007-05-03 |  | Manav |
| 556 | Use case document (task 3.1.3) | 1d | 2007-05-02 | 2007-05-02 |  | Manav |
| 557 | Requirements document (task 3.2.3) | 1d | 2007-05-03 | 2007-05-03 | 556 | Manav |
| 558 | **Level 1 use cases for Stratification** | 2d | 2007-05-02 | 2007-05-03 |  | Kruttik |
| 559 | Use case document (task 3.1.3) | 1d | 2007-05-02 | 2007-05-02 |  | Kruttik |
| 560 | Requirements document (task 3.2.3) | 1d | 2007-05-03 | 2007-05-03 | 559 | Kruttik |
| 561 | **Level 1 use cases for Randomization** | 2d | 2007-05-02 | 2007-05-03 |  | Kruttik |
| 562 | Use case document (task 3.1.3) | 1d | 2007-05-02 | 2007-05-02 |  | Kruttik |
| 563 | Requirements document (task 3.2.3) | 1d | 2007-05-03 | 2007-05-03 | 562 | Kruttik |
| 564 | **Level 1 use cases for disease site** | 2d | 2007-05-02 | 2007-05-03 |  | Ramakrishna |
| 565 | Use case document (task 3.1.3) | 1d | 2007-05-02 | 2007-05-02 |  | Ramakrishna |
| 566 | Requirements document (task 3.2.3) | 1d | 2007-05-03 | 2007-05-03 | 565 | Ramakrishna |
| 567 | **Update use case document (task 3.1.3, task 5.2.3)** | 9d | 2007-05-04 | 2007-05-16 | 539 | Developers; Adopters |
| 568 | **Update eligibility use cases** | 9d | 2007-05-04 | 2007-05-16 |  | Adopters; Priyatam |
| 569 | Developer update | 2d | 2007-05-04 | 2007-05-07 |  | Priyatam |
| 570 | Adopter review | 5d | 2007-05-08 | 2007-05-14 | 569 | Adopters |
| 571 | Developer update | 1d | 2007-05-15 | 2007-05-15 | 570 | Priyatam |
| 572 | Adopter sign-off | 1d | 2007-05-16 | 2007-05-16 | 571 | Adopters |
| 573 | **Update study personnel use cases** | 9d | 2007-05-04 | 2007-05-16 |  | Ramakrishna; Adopters |
| 574 | Developer update | 2d | 2007-05-04 | 2007-05-07 |  | Ramakrishna |
| 575 | Adopter review | 5d | 2007-05-08 | 2007-05-14 | 574 | Adopters |
| 576 | Developer update | 1d | 2007-05-15 | 2007-05-15 | 575 | Ramakrishna |
| 577 | Adopter sign-off | 1d | 2007-05-16 | 2007-05-16 | 576 | Adopters |
| 578 | **Update registration management use cases** | 9d | 2007-05-04 | 2007-05-16 |  | Ramakrishna; Adopters |
| 579 | Developer update | 2d | 2007-05-04 | 2007-05-07 |  | Ramakrishna |
| 580 | Adopter review | 5d | 2007-05-08 | 2007-05-14 | 579 | Adopters |
| 581 | Developer update | 1d | 2007-05-15 | 2007-05-15 | 580 | Ramakrishna |
| 582 | Adopter sign-off | 1d | 2007-05-16 | 2007-05-16 | 581 | Adopters |
| 583 | **Update multi-site trial use cases** | 9d | 2007-05-04 | 2007-05-16 |  | Manav; Adopters |
| 584 | Developer update | 2d | 2007-05-04 | 2007-05-07 |  | Manav |
| 585 | Adopter review | 5d | 2007-05-08 | 2007-05-14 | 584 | Adopters |
| 586 | Developer update | 1d | 2007-05-15 | 2007-05-15 | 585 | Manav |
| 587 | Adopter sign-off | 1d | 2007-05-16 | 2007-05-16 | 586 | Adopters |
| 588 | **Update C3D integration use cases** | 9d | 2007-05-04 | 2007-05-16 |  | Manav; Adopters |
| 589 | Developer update | 2d | 2007-05-04 | 2007-05-07 |  | Manav |
| 590 | Adopter review | 5d | 2007-05-08 | 2007-05-14 | 589 | Adopters |
| 591 | Developer update | 1d | 2007-05-15 | 2007-05-15 | 590 | Manav |
| 592 | Adopter sign-off | 1d | 2007-05-16 | 2007-05-16 | 591 | Adopters |
| 593 | **Update security use cases** | 9d | 2007-05-04 | 2007-05-16 |  | Manav; Adopters |
| 594 | Developer update | 2d | 2007-05-04 | 2007-05-07 |  | Manav |
| 595 | Adopter review | 5d | 2007-05-08 | 2007-05-14 | 594 | Adopters |
| 596 | Developer update | 1d | 2007-05-15 | 2007-05-15 | 595 | Manav |
| 597 | Adopter sign-off | 1d | 2007-05-16 | 2007-05-16 | 596 | Adopters |
| 598 | **Update stratification use cases** | 9d | 2007-05-04 | 2007-05-16 |  | Kruttik; Adopters |
| 599 | Developer update | 2d | 2007-05-04 | 2007-05-07 |  | Kruttik |
| 600 | Adopter review | 5d | 2007-05-08 | 2007-05-14 | 599 | Adopters |
| 601 | Developer update | 1d | 2007-05-15 | 2007-05-15 | 600 | Kruttik |
| 602 | Adopter sign-off | 1d | 2007-05-16 | 2007-05-16 | 601 | Adopters |
| 603 | **Update Randomization use cases** | 9d | 2007-05-04 | 2007-05-16 |  | Kruttik; Adopters |
| 604 | Developer update | 2d | 2007-05-04 | 2007-05-07 |  | Kruttik |
| 605 | Adopter review | 5d | 2007-05-08 | 2007-05-14 | 604 | Adopters |
| 606 | Developer update | 1d | 2007-05-15 | 2007-05-15 | 605 | Kruttik |
| 607 | Adopter sign-off | 1d | 2007-05-16 | 2007-05-16 | 606 | Adopters |
| 608 | **Update disease site use cases** | 9d | 2007-05-04 | 2007-05-16 |  | Kruttik; Adopters |
| 609 | Developer update | 2d | 2007-05-04 | 2007-05-07 |  | Kruttik |
| 610 | Adopter review | 5d | 2007-05-08 | 2007-05-14 | 609 | Adopters |
| 611 | Developer update | 1d | 2007-05-15 | 2007-05-15 | 610 | Kruttik |
| 612 | Adopter sign-off | 1d | 2007-05-16 | 2007-05-16 | 611 | Adopters |
| 613 | **Update use case document (task 3.2.3, task 5.3.3)** | 9d | 2007-05-17 | 2007-05-29 | 567 | Developers; Adopters |
| 614 | **Update eligibility requirements** | 9d | 2007-05-17 | 2007-05-29 |  | Adopters; Priyatam |
| 615 | Developer update | 2d | 2007-05-17 | 2007-05-18 |  | Priyatam |
| 616 | Adopter review | 5d | 2007-05-21 | 2007-05-25 | 615 | Adopters |
| 617 | Developer update | 1d | 2007-05-28 | 2007-05-28 | 616 | Priyatam |
| 618 | Adopter sign-off | 1d | 2007-05-29 | 2007-05-29 | 617 | Adopters |
| 619 | **Update study personnel requirements** | 9d | 2007-05-17 | 2007-05-29 |  | Ramakrishna; Adopters |
| 620 | Developer update | 2d | 2007-05-17 | 2007-05-18 |  | Ramakrishna |
| 621 | Adopter review | 5d | 2007-05-21 | 2007-05-25 | 620 | Adopters |
| 622 | Developer update | 1d | 2007-05-28 | 2007-05-28 | 621 | Ramakrishna |
| 623 | Adopter sign-off | 1d | 2007-05-29 | 2007-05-29 | 622 | Adopters |
| 624 | **Update registration management requirements** | 9d | 2007-05-17 | 2007-05-29 |  | Ramakrishna; Adopters |
| 625 | Developer update | 2d | 2007-05-17 | 2007-05-18 |  | Ramakrishna |
| 626 | Adopter review | 5d | 2007-05-21 | 2007-05-25 | 625 | Adopters |
| 627 | Developer update | 1d | 2007-05-28 | 2007-05-28 | 626 | Ramakrishna |
| 628 | Adopter sign-off | 1d | 2007-05-29 | 2007-05-29 | 627 | Adopters |
| 629 | **Update multi-site trial requirements** | 9d | 2007-05-17 | 2007-05-29 |  | Manav; Adopters |
| 630 | Developer update | 2d | 2007-05-17 | 2007-05-18 |  | Manav |
| 631 | Adopter review | 5d | 2007-05-21 | 2007-05-25 | 630 | Adopters |
| 632 | Developer update | 1d | 2007-05-28 | 2007-05-28 | 631 | Manav |
| 633 | Adopter sign-off | 1d | 2007-05-29 | 2007-05-29 | 632 | Adopters |
| 634 | **Update C3D integration requirements** | 9d | 2007-05-17 | 2007-05-29 |  | Manav; Adopters |
| 635 | Developer update | 2d | 2007-05-17 | 2007-05-18 |  | Manav |
| 636 | Adopter review | 5d | 2007-05-21 | 2007-05-25 | 635 | Adopters |
| 637 | Developer update | 1d | 2007-05-28 | 2007-05-28 | 636 | Manav |
| 638 | Adopter sign-off | 1d | 2007-05-29 | 2007-05-29 | 637 | Adopters |
| 639 | **Update security requirements** | 9d | 2007-05-17 | 2007-05-29 |  | Manav; Adopters |
| 640 | Developer update | 2d | 2007-05-17 | 2007-05-18 |  | Manav |
| 641 | Adopter review | 5d | 2007-05-21 | 2007-05-25 | 640 | Adopters |
| 642 | Developer update | 1d | 2007-05-28 | 2007-05-28 | 641 | Manav |
| 643 | Adopter sign-off | 1d | 2007-05-29 | 2007-05-29 | 642 | Adopters |
| 644 | **Update stratification requirements** | 9d | 2007-05-17 | 2007-05-29 |  | Kruttik; Adopters |
| 645 | Developer update | 2d | 2007-05-17 | 2007-05-18 |  | Kruttik |
| 646 | Adopter review | 5d | 2007-05-21 | 2007-05-25 | 645 | Adopters |
| 647 | Developer update | 1d | 2007-05-28 | 2007-05-28 | 646 | Kruttik |
| 648 | Adopter sign-off | 1d | 2007-05-29 | 2007-05-29 | 647 | Adopters |
| 649 | **Update Randomization requirements** | 9d | 2007-05-17 | 2007-05-29 |  | Kruttik; Adopters |
| 650 | Developer update | 2d | 2007-05-17 | 2007-05-18 |  | Kruttik |
| 651 | Adopter review | 5d | 2007-05-21 | 2007-05-25 | 650 | Adopters |
| 652 | Developer update | 1d | 2007-05-28 | 2007-05-28 | 651 | Kruttik |
| 653 | Adopter sign-off | 1d | 2007-05-29 | 2007-05-29 | 652 | Adopters |
| 654 | **Update disease site requirements** | 9d | 2007-05-17 | 2007-05-29 |  | Kruttik; Adopters |
| 655 | Developer update | 2d | 2007-05-17 | 2007-05-18 |  | Kruttik |
| 656 | Adopter review | 5d | 2007-05-21 | 2007-05-25 | 655 | Adopters |
| 657 | Developer update | 1d | 2007-05-28 | 2007-05-28 | 656 | Kruttik |
| 658 | Adopter sign-off | 1d | 2007-05-29 | 2007-05-29 | 657 | Adopters |
| 659 | Developer deliver use case document to BAH (task 3.1.2, task 5.2.2) | 0d | 2007-05-29 | 2007-05-29 | 613 | Patrick |
| 660 | BAH review use case document (task 3.1.2, task 5.2.2) | 10d | 2007-05-30 | 2007-06-12 | 659 | BAH |
| 661 | Developer deliver requirements document to BAH (task 3.2.2, task 5.3.2) | 0d | 2007-06-12 | 2007-06-12 | 660 | Patrick |
| 662 | BAH review requirements document (task 3.2.2, task 5.3.2) | 10d | 2007-06-13 | 2007-06-26 | 661 | BAH |
| 664 | **Perform level 1 design** | 4d | 2007-05-04 | 2007-05-09 |  | Developers |
| 665 | Cursory BRIDG harmonization | 1d | 2007-05-04 | 2007-05-04 |  | Developers |
| 666 | Update implementation model | 1d | 2007-05-07 | 2007-05-07 | 665 | Developers |
| 667 | Cursory system design | 2d | 2007-05-08 | 2007-05-09 | 666 | Developers |
| 668 | **Modeling (task 3.3.3)** | 27d | 2007-05-10 | 2007-06-15 | 664 | Developers; Adopters |
| 669 | **Update model** | 6d | 2007-05-10 | 2007-05-17 |  | Developers |
| 670 | **BRIDG harmonization** | 3d | 2007-05-10 | 2007-05-14 |  | Developers |
| 671 | Harmonize models | 3d | 2007-05-10 | 2007-05-14 |  | Developers |
| 672 | **Model implementation** | 3d | 2007-05-15 | 2007-05-17 | 670 | Developers |
| 673 | Implement models | 3d | 2007-05-15 | 2007-05-17 |  | Developers |
| 674 | Adopter review | 5d | 2007-05-18 | 2007-05-24 | 669 | Adopters |
| 675 | **Update model** | 6d | 2007-05-25 | 2007-06-01 | 674 | Developers |
| 676 | **BRIDG harmonization** | 3d | 2007-05-25 | 2007-05-29 | 674 |  |
| 677 | Harmonize models | 3d | 2007-05-25 | 2007-05-29 |  | Kruttik; Priyatam; Manav |
| 678 | **Model implementation** | 3d | 2007-05-30 | 2007-06-01 | 676 |  |
| 679 | Implement models | 3d | 2007-05-30 | 2007-06-01 |  | Kruttik; Priyatam; Manav |
| 680 | Developer deliver UML to BAH (task 3.3.3) | 0d | 2007-06-01 | 2007-06-01 | 675 | Patrick |
| 681 | BAH review of UML (task 3.3.3) | 10d | 2007-06-04 | 2007-06-15 | 680 | BAH |
| 682 | **System design (task 3.4.3)** | 25d | 2007-05-10 | 2007-06-13 | 664 | Developers; BAH |
| 683 | **Design use cases** | 15d | 2007-05-10 | 2007-05-30 |  | Kruttik; Priyatam |
| 684 | Draft UML | 5d | 2007-05-10 | 2007-05-16 |  | Developers |
| 685 | Team review | 5d | 2007-05-17 | 2007-05-23 | 684 | Developers |
| 686 | Update design document | 5d | 2007-05-24 | 2007-05-30 | 685 | Developers |
| 687 | Deliver design doc to BAH (task 3.4.3) | 0d | 2007-05-30 | 2007-05-30 | 683 | Patrick |
| 688 | BAH review design doc (task 3.4.3) | 10d | 2007-05-31 | 2007-06-13 | 687 | BAH |
| 689 | **Implementation (task 3.5.3)** | 30d | 2007-05-10 | 2007-06-20 | 664 | Developers; BAH |
| 690 | **Database** | 3d | 2007-05-10 | 2007-05-14 |  | Developers |
| 691 | **Implement models for use cases** | 3d | 2007-05-10 | 2007-05-14 |  | Developers |
| 692 | Update DDLs | 1d | 2007-05-10 | 2007-05-10 |  | Developers |
| 693 | Apply to database | 1d | 2007-05-11 | 2007-05-11 | 692 | Developers |
| 694 | Create test data | 1d | 2007-05-14 | 2007-05-14 | 693 | Developers |
| 695 | **caDSR** | 10d | 2007-05-10 | 2007-05-23 |  |  |
| 696 | Investigate caDSR eligibility | 5d | 2007-05-10 | 2007-05-16 |  | Priyatam |
| 697 | Create XML format | 5d | 2007-05-17 | 2007-05-23 | 696 | Priyatam |
| 698 | **Business layer** | 10d | 2007-05-10 | 2007-05-23 |  | Developers |
| 699 | **Implement use caseAPIs** | 7d | 2007-05-15 | 2007-05-23 | 691 | Developers |
| 700 | Update APIs | 2d | 2007-05-15 | 2007-05-16 |  | Developers |
| 701 | Implement APIs | 3d | 2007-05-17 | 2007-05-21 | 700 | Developers |
| 702 | Deploy APIs | 2d | 2007-05-22 | 2007-05-23 | 701 | Developers |
| 703 | **Implement caDSR/XML import APIs** | 7d | 2007-05-10 | 2007-05-18 |  | Priyatam |
| 704 | Update APIs | 2d | 2007-05-10 | 2007-05-11 |  | Priyatam |
| 705 | Implement APIs | 3d | 2007-05-14 | 2007-05-16 | 704 | Priyatam |
| 706 | Deploy APIs | 2d | 2007-05-17 | 2007-05-18 | 705 | Priyatam |
| 707 | **ESB** | 10d | 2007-05-15 | 2007-05-28 | 690 | Manav |
| 708 | Implement binding components for C3D | 5d | 2007-05-15 | 2007-05-21 |  | Manav |
| 709 | Implement binding components for study msg | 5d | 2007-05-22 | 2007-05-28 | 708 | Manav |
| 711 | Connect C3PR roles to GridGrouper groups | 5d | 2007-05-22 | 2007-05-28 |  | Manav |
| 712 | **Web interface** | 20d | 2007-05-10 | 2007-06-06 |  | Developers |
| 713 | **Modify study management interface** | 10d | 2007-05-24 | 2007-06-06 |  | Kruttik; Priyatam; Manav |
| 714 | Manage eligibility criteria | 5d | 2007-05-24 | 2007-05-30 | 699 | Kruttik; Priyatam; Manav |
| 715 | Manage multi-site study | 5d | 2007-05-31 | 2007-06-06 | 714 | Kruttik; Priyatam; Manav |
| 716 | **Modify study personnel management interface** | 5d | 2007-05-10 | 2007-05-16 |  | Priyatam; Kula |
| 717 | Manage study personnel | 5d | 2007-05-10 | 2007-05-16 |  | Priyatam; Kula |
| 718 | **Modify registration interface** | 5d | 2007-05-24 | 2007-05-30 |  | Kruttik; Priyatam |
| 719 | Check eligibility | 5d | 2007-05-24 | 2007-05-30 | 699 | Kruttik; Priyatam |
| 720 | **Modify registration management interface** | 5d | 2007-05-10 | 2007-05-16 |  | Ramakrishna |
| 721 | Manage study subject registration | 5d | 2007-05-10 | 2007-05-16 |  | Ramakrishna |
| 722 | Deliver codebase to BAH (task 3.5.3) | 0d | 2007-06-06 | 2007-06-06 | 690, 712, 719, 721 | Patrick |
| 723 | BAH review codebase (task 3.5.3) | 10d | 2007-06-07 | 2007-06-20 | 722 | BAH |
| 725 | **Developer testing** | 37d | 2007-05-02 | 2007-06-21 |  | BAH; Adopters; Developers |
| 726 | **Update developer test plan (task 3.6.2, task 5.4.2)** | 30d | 2007-05-02 | 2007-06-12 |  | Developers; Adopters; BAH |
| 727 | Developer draft | 5d | 2007-05-02 | 2007-05-08 |  | Developers |
| 728 | Adopter review | 5d | 2007-05-09 | 2007-05-15 | 727 | Adopters |
| 729 | Developer update | 5d | 2007-05-16 | 2007-05-22 | 728 | Developers |
| 730 | Adopter review and sign | 5d | 2007-05-23 | 2007-05-29 | 729 | Adopters |
| 731 | Deliver signed test plan to BAH (task 3.6.2, task 5.4.2) | 0d | 2007-05-29 | 2007-05-29 | 730 | Patrick |
| 732 | BAH review signed test plan (task 3.6.2, task 5.4.2) | 10d | 2007-05-30 | 2007-06-12 | 731 | BAH |
| 733 | **Integration and system testing (task 3.8.2)** | 16d | 2007-05-31 | 2007-06-21 | 722FS-5d | Developers; BAH |
| 734 | Generate test data | 1d | 2007-05-31 | 2007-05-31 |  | Developers |
| 735 | Write tests | 3d | 2007-06-01 | 2007-06-05 | 734 | Developers |
| 736 | Validate tests | 1d | 2007-06-06 | 2007-06-06 | 735 | Developers |
| 737 | Generate test report | 1d | 2007-06-07 | 2007-06-07 | 736 | Developers |
| 738 | Deliver test report to BAH (task 3.8.2) | 0d | 2007-06-07 | 2007-06-07 | 737 | Patrick |
| 739 | BAH review test report (task 3.8.2) | 10d | 2007-06-08 | 2007-06-21 | 738 | BAH |
| 740 | **Adopter testing** | 35d | 2007-05-02 | 2007-06-19 |  | Adopters; Developers; BAH |
| 741 | **Adopter deployment** | 5d | 2007-05-02 | 2007-05-08 |  | Adopters |
| 742 | Adopter deployment of previous iteration | 5d | 2007-05-02 | 2007-05-08 |  | Adopters |
| 743 | **Update adopter test plan (task 5.5.1)** | 30d | 2007-05-09 | 2007-06-19 | 742 | Adopters; Developers; BAH |
| 744 | Adopter update test script | 5d | 2007-05-09 | 2007-05-15 |  | Adopters |
| 745 | Adopter update test approach | 5d | 2007-05-16 | 2007-05-22 | 744 | Adopters |
| 746 | Developer review | 5d | 2007-05-23 | 2007-05-29 | 745 | Patrick; Ram |
| 747 | Adopter update | 5d | 2007-05-30 | 2007-06-05 | 746 | Adopters |
| 748 | Developer deliver adopter test plan to BAH (task 5.5.1) | 0d | 2007-06-05 | 2007-06-05 | 747 | Patrick |
| 749 | BAH review adopter test plan (task 5.5.1) | 10d | 2007-06-06 | 2007-06-19 | 748 | BAH |
| 750 | **QA testing (task 5.6.1)** | 24d | 2007-05-16 | 2007-06-18 | 744 | Adopters; BAH |
| 751 | Adopter create test data | 5d | 2007-05-16 | 2007-05-22 |  | Adopters |
| 752 | Adopter perform test script | 5d | 2007-05-23 | 2007-05-29 | 751 | Adopters |
| 753 | Adopter document results | 2d | 2007-05-30 | 2007-05-31 | 752 | Adopters |
| 754 | Adopter log bugs | 2d | 2007-06-01 | 2007-06-04 | 753 | Adopters |
| 755 | Developer deliver adopter test report to BAH (task 5.6.1) | 0d | 2007-06-04 | 2007-06-04 | 753, 754 | Patrick |
| 756 | BAH review adopter test report (task 5.6.1) | 10d | 2007-06-05 | 2007-06-18 | 755 | BAH |
| 758 | **Installation guide (task 3.10.2)** | 13d | 2007-06-04 | 2007-06-20 | 722FS-3d | Developers; BAH |
| 759 | Update installation guide | 3d | 2007-06-04 | 2007-06-06 |  | Developers |
| 760 | Deliver installation guide to BAH (task 3.10.2) | 0d | 2007-06-06 | 2007-06-06 | 759 | Patrick |
| 761 | BAH review of installation guide (task 3.10.2) | 10d | 2007-06-07 | 2007-06-20 | 760 | BAH |
| 762 | **Administration guide (task 3.13.2)** | 13d | 2007-06-04 | 2007-06-20 | 722FS-3d | Developers; BAH |
| 763 | Update administration guide | 3d | 2007-06-04 | 2007-06-06 |  | Developers |
| 764 | Deliver administration guide to BAH (task 3.13.2) | 0d | 2007-06-06 | 2007-06-06 | 763 | Patrick |
| 765 | BAH review of administration guide (task 3.13.2) | 10d | 2007-06-07 | 2007-06-20 | 764 | BAH |
| 766 | **Release notes (task 3.14.2)** | 13d | 2007-06-04 | 2007-06-20 | 722FS-3d | Developers; BAH |
| 767 | Update release notes | 3d | 2007-06-04 | 2007-06-06 |  | Developers |
| 768 | Deliver release notes to BAH (task 3.14.2) | 0d | 2007-06-06 | 2007-06-06 | 767 | Patrick |
| 769 | BAH review of release notes (task 3.14.2) | 10d | 2007-06-07 | 2007-06-20 | 768 | BAH |
| 770 | **Adopter summary of C3PR (task 5.1.2)** | 15d | 2007-05-31 | 2007-06-20 | 722FS-5d | Adopters; BAH |
| 771 | Adopter update summary | 3d | 2007-05-31 | 2007-06-04 |  | Adopters |
| 772 | Developer review summary | 1d | 2007-06-05 | 2007-06-05 | 771 | Adopters |
| 773 | Adopter update summary | 1d | 2007-06-06 | 2007-06-06 | 772 | Adopters |
| 774 | Developer deliver C3PR summary to BAH (task 5.1.2) | 0d | 2007-06-06 | 2007-06-06 | 773 | Patrick |
| 775 | BAH review of C3PR summary (task 5.1.2) | 10d | 2007-06-07 | 2007-06-20 | 774 | BAH |

Removed: 519 Project management; 520 Update project plan; 521 Update risk matrix; 522 Monthly report; 524 Create level 1 use cases and requirements; 525 Update use case document; 526 Update requirements document; 528 Perform level 1 design; 529 Modeling; 530 Systems design; 531 Implementation; 532 Stratification; 533 First pass at stratification implementation; 535 Complete security implementation; 536 Enrollment; 537 Enrollment details; 538 Treating MD; 539 Disease; 540 Compassionate; 541 Enrollment business rules; 542 Accrual ceilings; 543 Notifications; 544 Multi-site study; 545 Complete multi-site study implementation; 546 Registration management; 547 Off study; 548 Study ammendments; 549 Change model, harmonize; 550 Implement business rules; 552 Developer testing; 553 Adopter testing; 555 Installation guide; 556 Administration guide; 557 Release notes; 558 Adopter summary of C3PR; 559 Support; 560 Adopter support; 561 Bug fixing; 565 Contact mentors to review deliverables; 566 Deliverables; 567 Risk matrix 1.4.x; 568 Monthly report and risk matrix 1.3.x; 569 Use case document (3.1.x); 570 Requirements document (3.2.x); 571 UML (3.3.x); 572 Design document (3.4.x); 573 Codebase (3.5.x); 574 Test plan (3.6.x, 5.4.x); 575 Test report (3.8.x); 576 Adopter test plan (5.5.x); 577 Adopter test report (5.6.x); 578 Installation guide (3.10.x); 579 Administration guide (3.13.x); 580 Release notes (3.14.x); 581 Adopter summary of C3PR (5.1.x)

Changed:

| ID | Task | Start | Finish | Duration | Complete | Total float | Predecessors | Other |
| --- | --- | --- | --- | --- | --- | --- | --- | --- |
| 263 | **Demonstration** | 2007-04-09 A | 2007-04-09 A |  | 0% → 100% | 155d → none |  |  |
| 264 | Demonstrate latest features to BAH | 2007-04-09 A | 2007-04-09 A |  | 0% → 100% | 155d → none |  |  |
| 517 | **Iteration 3 (stratification, security, multi-site study, study ammendments)** |  | 2007-06-11 → 2007-06-26 (+15d) | 28d → 40d |  | 110d → 28d |  | was named Iteration 3 (stratification, security, enrollment. multi-site study, study ammendments) |
| 538 | **Requirements and use cases** |  | 2007-05-31 → 2007-06-26 (+26d) | 22d → 40d |  | 116d → 98d |  | resources none → Developers; Adopters; BAH |
| 663 | **Analysis and Design** | 2007-05-02 → 2007-05-04 (+2d) | 2007-05-31 → 2007-06-15 (+15d) | 22d → 31d |  | 116d → 101d | 518 → 539 | resources none → Developers; Adopters; BAH |
| 710 | **Security** | 2007-05-02 → 2007-05-22 (+20d) | 2007-05-31 → 2007-05-28 (-3d) | 22d → 5d |  | 116d → 119d | none → 708 | resources none → Manav |
| 724 | **Testing** |  | 2007-05-31 → 2007-06-21 (+21d) | 22d → 37d |  | 116d → 101d |  | resources none → Developers; Adopters; BAH |
| 757 | **Documentation** | 2007-05-02 → 2007-05-31 (+29d) | 2007-05-31 → 2007-06-20 (+20d) | 22d → 15d |  | 116d → 102d |  | resources none → Developers; Adopters; BAH |
| 777 | Demonstrate latest features to BAH |  |  |  |  | 110d → 0d | 518 → none | constraint start no earlier than 2007-06-11 → must start on 2007-06-11 |
| 778 | **Touchpoints** |  |  |  |  |  |  | resources none → Adopters |
| 779 | Adopter review of deliverables |  |  |  |  |  |  | resources none → Adopters |
| 780 | Adopter deployment of previous iteration codebase |  |  |  |  |  |  | resources none → Adopters |

## Version 10 (saved 2007-05-04)

Note of the change: *** empty log message ***

Last finish stays 2007-11-12.

Added:

| ID | Task | Duration | Start | Finish |
| --- | --- | --- | --- | --- |
| 1028 | Final Technical/Architecture Guide | 23d | 2007-10-01 | 2007-10-31 |

## Version 11 (saved 2008-01-31)

Note of the change: *** empty log message ***

Last finish 2007-11-12 → 2008-01-02 (+51d).

Added:

| ID | Task | Duration | Start | Finish | Predecessors | Constraint | Resources |
| --- | --- | --- | --- | --- | --- | --- | --- |
| 957 | **Iteration 7 (security, import/export, manage organizations, manager personnel)** | 23d | 2007-09-03 | 2007-10-03 |  |  |  |
| 958 | Iteration start | 0d | 2007-09-03 | 2007-09-03 |  | start no earlier than 2007-09-03 |  |
| 959 | **Project management** | 23d | 2007-09-03 | 2007-10-03 | 958 |  |  |
| 960 | Update project plan | 23d | 2007-09-03 | 2007-10-03 |  |  |  |
| 961 | Update risk matrix | 23d | 2007-09-03 | 2007-10-03 |  |  |  |
| 962 | Monthly report | 23d | 2007-09-03 | 2007-10-03 |  |  |  |
| 963 | **Requirements and use cases** | 23d | 2007-09-03 | 2007-10-03 | 958 |  |  |
| 964 | Create level 1 use cases and requirements | 23d | 2007-09-03 | 2007-10-03 |  |  |  |
| 965 | Update use case document | 23d | 2007-09-03 | 2007-10-03 |  |  |  |
| 966 | Update requirements document | 23d | 2007-09-03 | 2007-10-03 |  |  |  |
| 967 | **Analysis and Design** | 23d | 2007-09-03 | 2007-10-03 | 958 |  |  |
| 968 | Perform level 1 design | 23d | 2007-09-03 | 2007-10-03 |  |  |  |
| 969 | Modeling | 23d | 2007-09-03 | 2007-10-03 |  |  |  |
| 970 | Systems design | 23d | 2007-09-03 | 2007-10-03 |  |  |  |
| 971 | **Implementation** | 23d | 2007-09-03 | 2007-10-03 | 958 |  |  |
| 972 | **Security** | 23d | 2007-09-03 | 2007-10-03 |  |  |  |
| 973 | Authentication | 23d | 2007-09-03 | 2007-10-03 |  |  |  |
| 974 | Authorization | 23d | 2007-09-03 | 2007-10-03 |  |  |  |
| 975 | **Import/Export** | 23d | 2007-09-03 | 2007-10-03 |  |  |  |
| 976 | Import/export | 23d | 2007-09-03 | 2007-10-03 |  |  |  |
| 977 | **Manage organizations and Personnel** | 23d | 2007-09-03 | 2007-10-03 |  |  |  |
| 978 | Manage Organization and Personnel | 23d | 2007-09-03 | 2007-10-03 |  |  |  |
| 979 | **Testing** | 23d | 2007-09-03 | 2007-10-03 | 958 |  |  |
| 980 | Developer testing | 23d | 2007-09-03 | 2007-10-03 |  |  |  |
| 981 | Adopter testing | 23d | 2007-09-03 | 2007-10-03 |  |  |  |
| 982 | **Documentation** | 23d | 2007-09-03 | 2007-10-03 | 958 |  |  |
| 983 | Installation guide | 23d | 2007-09-03 | 2007-10-03 |  |  |  |
| 984 | Administration guide | 23d | 2007-09-03 | 2007-10-03 |  |  |  |
| 985 | Release notes | 23d | 2007-09-03 | 2007-10-03 |  |  |  |
| 986 | Adopter summary of C3PR | 23d | 2007-09-03 | 2007-10-03 |  |  |  |
| 987 | **Support** | 23d | 2007-09-03 | 2007-10-03 | 958 |  |  |
| 988 | Adopter support | 23d | 2007-09-03 | 2007-10-03 |  |  |  |
| 989 | Bug fixing | 23d | 2007-09-03 | 2007-10-03 |  |  |  |
| 990 | **Touchpoints** | 23d | 2007-09-03 | 2007-10-03 | 958 |  |  |
| 991 | Adopter review of deliverables | 23d | 2007-09-03 | 2007-10-03 |  |  |  |
| 992 | Adopter deployment of previous iteration codebase | 23d | 2007-09-03 | 2007-10-03 |  |  |  |
| 993 | **Deliverables** | 23d | 2007-09-03 | 2007-10-03 | 958 |  |  |
| 994 | Risk matrix 1.4.x | 23d | 2007-09-03 | 2007-10-03 |  |  |  |
| 995 | Monthly report and risk matrix 1.3.x | 23d | 2007-09-03 | 2007-10-03 |  |  |  |
| 996 | Use case document (3.1.x) | 23d | 2007-09-03 | 2007-10-03 |  |  |  |
| 997 | Requirements document (3.2.x) | 23d | 2007-09-03 | 2007-10-03 |  |  |  |
| 998 | UML (3.3.x) | 23d | 2007-09-03 | 2007-10-03 |  |  |  |
| 999 | Design document (3.4.x) | 23d | 2007-09-03 | 2007-10-03 |  |  |  |
| 1000 | Codebase (3.5.x) | 23d | 2007-09-03 | 2007-10-03 |  |  |  |
| 1001 | Test plan (3.6.x, 5.4.x) | 23d | 2007-09-03 | 2007-10-03 |  |  |  |
| 1002 | Test report (3.8.x) | 23d | 2007-09-03 | 2007-10-03 |  |  |  |
| 1003 | Adopter test plan (5.5.x) | 23d | 2007-09-03 | 2007-10-03 |  |  |  |
| 1004 | Adopter test report (5.6.x) | 23d | 2007-09-03 | 2007-10-03 |  |  |  |
| 1005 | Installation guide (3.10.x) | 23d | 2007-09-03 | 2007-10-03 |  |  |  |
| 1006 | Administration guide (3.13.x) | 23d | 2007-09-03 | 2007-10-03 |  |  |  |
| 1007 | Release notes (3.14.x) | 23d | 2007-09-03 | 2007-10-03 |  |  |  |
| 1008 | Adopter summary of C3PR (5.1.x) | 23d | 2007-09-03 | 2007-10-03 |  |  |  |
| 1009 | **Demonstration** | 0d | 2007-09-10 | 2007-09-10 | 958 |  | Patrick; Ram; BAH |
| 1010 | Demonstrate latest features to BAH | 0d | 2007-09-10 | 2007-09-10 | 958 | start no earlier than 2007-09-10 | Patrick; Ram; BAH |
| 1011 | Demonstrate to the larger community | 0d | 2007-09-10 | 2007-09-10 | 1010 |  | Patrick; Ram; BAH |
| 1012 | **Iteration 8 (security, import/export, duplicate checks, multi-site)** | 23d | 2007-10-01 | 2007-10-31 |  |  |  |
| 1013 | Iteration start | 0d | 2007-10-01 | 2007-10-01 |  | start no earlier than 2007-10-01 |  |
| 1014 | **Project management** | 23d | 2007-10-01 | 2007-10-31 | 1013 |  |  |
| 1015 | Update project plan | 23d | 2007-10-01 | 2007-10-31 |  |  |  |
| 1016 | Update risk matrix | 23d | 2007-10-01 | 2007-10-31 |  |  |  |
| 1017 | Monthly report | 23d | 2007-10-01 | 2007-10-31 |  |  |  |
| 1018 | **Requirements and use cases** | 23d | 2007-10-01 | 2007-10-31 | 1013 |  |  |
| 1019 | Create level 1 use cases and requirements | 23d | 2007-10-01 | 2007-10-31 |  |  |  |
| 1020 | Update use case document | 23d | 2007-10-01 | 2007-10-31 |  |  |  |
| 1021 | Update requirements document | 23d | 2007-10-01 | 2007-10-31 |  |  |  |
| 1022 | **Analysis and Design** | 23d | 2007-10-01 | 2007-10-31 | 1013 |  |  |
| 1023 | Perform level 1 design | 23d | 2007-10-01 | 2007-10-31 |  |  |  |
| 1024 | Modeling | 23d | 2007-10-01 | 2007-10-31 |  |  |  |
| 1025 | Systems design | 23d | 2007-10-01 | 2007-10-31 |  |  |  |
| 1026 | **Implementation** | 23d | 2007-10-01 | 2007-10-31 | 1013 |  |  |
| 1027 | **Security** | 23d | 2007-10-01 | 2007-10-31 |  |  |  |
| 1028 | Finalize authentication | 23d | 2007-10-01 | 2007-10-31 |  |  |  |
| 1029 | Finalize authorization | 23d | 2007-10-01 | 2007-10-31 |  |  |  |
| 1030 | **Import/Export** | 23d | 2007-10-01 | 2007-10-31 |  |  |  |
| 1031 | Finalize import/export | 23d | 2007-10-01 | 2007-10-31 |  |  |  |
| 1032 | **Duplicate checks** | 23d | 2007-10-01 | 2007-10-31 |  |  |  |
| 1033 | Duplicate checks | 23d | 2007-10-01 | 2007-10-31 |  |  |  |
| 1034 | **Multi-site** | 23d | 2007-10-01 | 2007-10-31 |  |  |  |
| 1035 | Finalize legacy systems | 23d | 2007-10-01 | 2007-10-31 |  |  |  |
| 1036 | **Testing** | 23d | 2007-10-01 | 2007-10-31 | 1013 |  |  |
| 1037 | Developer testing | 23d | 2007-10-01 | 2007-10-31 |  |  |  |
| 1038 | Adopter testing | 23d | 2007-10-01 | 2007-10-31 |  |  |  |
| 1039 | **Documentation** | 23d | 2007-10-01 | 2007-10-31 | 1013 |  |  |
| 1040 | Installation guide | 23d | 2007-10-01 | 2007-10-31 |  |  |  |
| 1041 | Administration guide | 23d | 2007-10-01 | 2007-10-31 |  |  |  |
| 1042 | Release notes | 23d | 2007-10-01 | 2007-10-31 |  |  |  |
| 1043 | Adopter summary of C3PR | 23d | 2007-10-01 | 2007-10-31 |  |  |  |
| 1044 | **Support** | 23d | 2007-10-01 | 2007-10-31 | 1013 |  |  |
| 1045 | Adopter support | 23d | 2007-10-01 | 2007-10-31 |  |  |  |
| 1046 | Bug fixing | 23d | 2007-10-01 | 2007-10-31 |  |  |  |
| 1047 | **Touchpoints** | 23d | 2007-10-01 | 2007-10-31 | 1013 |  |  |
| 1048 | Adopter review of deliverables | 23d | 2007-10-01 | 2007-10-31 |  |  |  |
| 1049 | Adopter deployment of previous iteration codebase | 23d | 2007-10-01 | 2007-10-31 |  |  |  |
| 1050 | Complete semantic integration with the caDSR and EVS | 23d | 2007-10-01 | 2007-10-31 |  |  |  |
| 1051 | **Deliverables** | 23d | 2007-10-01 | 2007-10-31 | 1013 |  |  |
| 1052 | Risk matrix 1.4.x | 23d | 2007-10-01 | 2007-10-31 |  |  |  |
| 1053 | Monthly report and risk matrix 1.3.x | 23d | 2007-10-01 | 2007-10-31 |  |  |  |
| 1054 | Use case document (3.1.x) | 23d | 2007-10-01 | 2007-10-31 |  |  |  |
| 1055 | Requirements document (3.2.x) | 23d | 2007-10-01 | 2007-10-31 |  |  |  |
| 1056 | UML (3.3.x) | 23d | 2007-10-01 | 2007-10-31 |  |  |  |
| 1057 | Design document (3.4.x) | 23d | 2007-10-01 | 2007-10-31 |  |  |  |
| 1058 | Codebase (3.5.x) | 23d | 2007-10-01 | 2007-10-31 |  |  |  |
| 1059 | Test plan (3.6.x, 5.4.x) | 23d | 2007-10-01 | 2007-10-31 |  |  |  |
| 1060 | Test report (3.8.x) | 23d | 2007-10-01 | 2007-10-31 |  |  |  |
| 1061 | Adopter test plan (5.5.x) | 23d | 2007-10-01 | 2007-10-31 |  |  |  |
| 1062 | Adopter test report (5.6.x) | 23d | 2007-10-01 | 2007-10-31 |  |  |  |
| 1063 | Installation guide (3.10.x) | 23d | 2007-10-01 | 2007-10-31 |  |  |  |
| 1064 | Administration guide (3.13.x) | 23d | 2007-10-01 | 2007-10-31 |  |  |  |
| 1065 | Release notes (3.14.x) | 23d | 2007-10-01 | 2007-10-31 |  |  |  |
| 1066 | Adopter summary of C3PR (5.1.x) | 23d | 2007-10-01 | 2007-10-31 |  |  |  |
| 1067 | **Demonstration** | 0d | 2007-10-01 | 2007-10-01 | 1013 |  | Patrick; Ram; BAH |
| 1068 | Demonstrate latest features to BAH | 0d | 2007-10-01 | 2007-10-01 | 1013 | start no earlier than 2007-09-10 | Patrick; Ram; BAH |
| 1069 | Demonstrate to the larger community | 0d | 2007-10-01 | 2007-10-01 | 1068 |  | Patrick; Ram; BAH |
| 1085 | **CCTS** | 23d | 2007-11-01 | 2007-12-03 |  |  |  |
| 1086 | Hotlinks | 23d | 2007-11-01 | 2007-12-03 |  |  |  |
| 1087 | Messaging | 23d | 2007-11-01 | 2007-12-03 |  |  |  |
| 1088 | Security | 23d | 2007-11-01 | 2007-12-03 |  |  |  |
| 1089 | Deployment | 23d | 2007-11-01 | 2007-12-03 |  |  |  |
| 1090 | **Email notifications** | 23d | 2007-11-01 | 2007-12-03 |  |  |  |
| 1091 | Email notifications | 23d | 2007-11-01 | 2007-12-03 |  |  |  |
| 1092 | **Reorder stratum groups** | 23d | 2007-11-01 | 2007-12-03 |  |  |  |
| 1093 | Reorder stratum groups | 23d | 2007-11-01 | 2007-12-03 |  |  |  |
| 1094 | **Finalize BRIDG model** | 23d | 2007-11-01 | 2007-12-03 |  |  |  |
| 1095 | Finalize BRIDG model | 23d | 2007-11-01 | 2007-12-03 |  |  |  |
| 1108 | Complete BRIDG review | 23d | 2007-11-01 | 2007-12-03 |  |  |  |
| 1143 | **Implementation** | 23d | 2007-12-03 | 2008-01-02 | 1130 |  |  |
| 1144 | **CCTS** | 23d | 2007-12-03 | 2008-01-02 |  |  |  |
| 1145 | Hotlinks | 23d | 2007-12-03 | 2008-01-02 |  |  |  |
| 1146 | Messaging | 23d | 2007-12-03 | 2008-01-02 |  |  |  |
| 1147 | Security | 23d | 2007-12-03 | 2008-01-02 |  |  |  |
| 1148 | Deployment | 23d | 2007-12-03 | 2008-01-02 |  |  |  |
| 1149 | **Load elibibility from caDSR** | 23d | 2007-12-03 | 2008-01-02 |  |  |  |
| 1150 | Load elibibility from caDSR | 23d | 2007-12-03 | 2008-01-02 |  |  |  |
| 1151 | **Groups of Investigators** | 23d | 2007-12-03 | 2008-01-02 |  |  |  |
| 1152 | Groups of Investigators | 23d | 2007-12-03 | 2008-01-02 |  |  |  |
| 1153 | **Error Messages** | 23d | 2007-12-03 | 2008-01-02 |  |  |  |
| 1154 | Error Messages | 23d | 2007-12-03 | 2008-01-02 |  |  |  |
| 1155 | **Finalize model for silver review** | 23d | 2007-12-03 | 2008-01-02 |  |  |  |
| 1156 | Finalize model for silver review | 23d | 2007-12-03 | 2008-01-02 |  |  |  |
| 1189 | Transition Phase Plan | 23d | 2007-12-03 | 2008-01-02 |  |  |  |
| 1190 | Compatitbility Review Package (3.12) | 23d | 2007-12-03 | 2008-01-02 |  |  |  |

Removed: 1019 Implementation; 1035 Complete silver review

Changed:

| ID | Task | Start | Finish | Duration | Total float | Other |
| --- | --- | --- | --- | --- | --- | --- |
| 845 | **Iteration 5 (randomization, reporting, legacy systems)** |  |  |  | 65d → 103d | was named Iteration 5 (randomization, reporting, legacy systems, semantic integration, BRIDG) |
| 901 | **Iteration 6 (randomization, reporting, legacy systems)** |  |  |  | 45d → 83d | was named Iteration 6 (randomization, reporting, legacy systems, semantic integration, BRIDG) |
| 1070 | **Iteration 9 (CCTS, email notifications, reorder stratum groups, BRIDG)** | 2007-09-03 → 2007-11-01 (+59d) | 2007-10-08 → 2007-12-03 (+56d) | 25d → 23d | 25d → 22d | was named Iteration 7 (installer, silver review) |
| 1071 | Iteration start | 2007-09-03 → 2007-11-01 (+59d) | 2007-09-03 → 2007-11-01 (+59d) |  | 30d → 22d | constraint start no earlier than 2007-09-03 → start no earlier than 2007-11-01 |
| 1072 | **Project management** | 2007-09-03 → 2007-11-01 (+59d) | 2007-09-28 → 2007-11-28 (+61d) |  | 30d → 25d |  |
| 1073 | Update project plan | 2007-09-03 → 2007-11-01 (+59d) | 2007-09-28 → 2007-11-28 (+61d) |  | 30d → 25d |  |
| 1074 | Update risk matrix | 2007-09-03 → 2007-11-01 (+59d) | 2007-09-28 → 2007-11-28 (+61d) |  | 30d → 25d |  |
| 1075 | Monthly report | 2007-09-03 → 2007-11-01 (+59d) | 2007-09-28 → 2007-11-28 (+61d) |  | 30d → 25d |  |
| 1076 | **Requirements and use cases** | 2007-09-03 → 2007-11-01 (+59d) | 2007-09-14 → 2007-11-14 (+61d) |  | 40d → 35d |  |
| 1077 | Create level 1 use cases and requirements | 2007-09-03 → 2007-11-01 (+59d) | 2007-09-14 → 2007-11-14 (+61d) |  | 40d → 35d |  |
| 1078 | Update use case document | 2007-09-03 → 2007-11-01 (+59d) | 2007-09-14 → 2007-11-14 (+61d) |  | 40d → 35d |  |
| 1079 | Update requirements document | 2007-09-03 → 2007-11-01 (+59d) | 2007-09-14 → 2007-11-14 (+61d) |  | 40d → 35d |  |
| 1080 | **Analysis and Design** | 2007-09-03 → 2007-11-01 (+59d) | 2007-09-14 → 2007-11-14 (+61d) |  | 40d → 35d |  |
| 1081 | Perform level 1 design | 2007-09-03 → 2007-11-01 (+59d) | 2007-09-14 → 2007-11-14 (+61d) |  | 40d → 35d |  |
| 1082 | Modeling | 2007-09-03 → 2007-11-01 (+59d) | 2007-09-14 → 2007-11-14 (+61d) |  | 40d → 35d |  |
| 1083 | Systems design | 2007-09-03 → 2007-11-01 (+59d) | 2007-09-14 → 2007-11-14 (+61d) |  | 40d → 35d |  |
| 1084 | **Implementation** | 2007-09-03 → 2007-11-01 (+59d) | 2007-09-14 → 2007-12-03 (+80d) | 10d → 23d | 40d → 22d |  |
| 1096 | **Testing** | 2007-09-03 → 2007-11-01 (+59d) | 2007-09-28 → 2007-11-28 (+61d) |  | 30d → 25d |  |
| 1097 | Developer testing | 2007-09-03 → 2007-11-01 (+59d) | 2007-09-28 → 2007-11-28 (+61d) |  | 30d → 25d |  |
| 1098 | Adopter testing | 2007-09-03 → 2007-11-01 (+59d) | 2007-09-28 → 2007-11-28 (+61d) |  | 30d → 25d |  |
| 1099 | **Documentation** | 2007-09-03 → 2007-11-01 (+59d) | 2007-09-28 → 2007-11-28 (+61d) |  | 30d → 25d |  |
| 1100 | Installation guide | 2007-09-03 → 2007-11-01 (+59d) | 2007-09-28 → 2007-11-28 (+61d) |  | 30d → 25d |  |
| 1101 | Administration guide | 2007-09-03 → 2007-11-01 (+59d) | 2007-09-28 → 2007-11-28 (+61d) |  | 30d → 25d |  |
| 1102 | Release notes | 2007-09-03 → 2007-11-01 (+59d) | 2007-09-28 → 2007-11-28 (+61d) |  | 30d → 25d |  |
| 1103 | Adopter summary of C3PR | 2007-09-03 → 2007-11-01 (+59d) | 2007-09-28 → 2007-11-28 (+61d) |  | 30d → 25d |  |
| 1104 | **Support** | 2007-09-03 → 2007-11-01 (+59d) | 2007-09-28 → 2007-11-28 (+61d) |  | 30d → 25d |  |
| 1105 | Adopter support | 2007-09-03 → 2007-11-01 (+59d) | 2007-09-28 → 2007-11-28 (+61d) |  | 30d → 25d |  |
| 1106 | Bug fixing | 2007-09-03 → 2007-11-01 (+59d) | 2007-09-28 → 2007-11-28 (+61d) |  | 30d → 25d |  |
| 1107 | **Touchpoints** | 2007-09-03 → 2007-11-01 (+59d) | 2007-09-28 → 2007-12-03 (+66d) | 20d → 23d | 30d → 22d |  |
| 1109 | Adopter review of deliverables | 2007-09-03 → 2007-11-01 (+59d) | 2007-09-28 → 2007-11-28 (+61d) |  | 30d → 25d |  |
| 1110 | Adopter deployment of previous iteration codebase | 2007-09-03 → 2007-11-01 (+59d) | 2007-09-28 → 2007-11-28 (+61d) |  | 30d → 25d |  |
| 1111 | **Deliverables** | 2007-09-03 → 2007-11-01 (+59d) | 2007-09-28 → 2007-11-28 (+61d) |  | 30d → 25d |  |
| 1112 | Risk matrix 1.4.x | 2007-09-03 → 2007-11-01 (+59d) | 2007-09-28 → 2007-11-28 (+61d) |  | 30d → 25d |  |
| 1113 | Monthly report and risk matrix 1.3.x | 2007-09-03 → 2007-11-01 (+59d) | 2007-09-28 → 2007-11-28 (+61d) |  | 30d → 25d |  |
| 1114 | Use case document (3.1.x) | 2007-09-03 → 2007-11-01 (+59d) | 2007-09-28 → 2007-11-28 (+61d) |  | 30d → 25d |  |
| 1115 | Requirements document (3.2.x) | 2007-09-03 → 2007-11-01 (+59d) | 2007-09-28 → 2007-11-28 (+61d) |  | 30d → 25d |  |
| 1116 | UML (3.3.x) | 2007-09-03 → 2007-11-01 (+59d) | 2007-09-28 → 2007-11-28 (+61d) |  | 30d → 25d |  |
| 1117 | Design document (3.4.x) | 2007-09-03 → 2007-11-01 (+59d) | 2007-09-28 → 2007-11-28 (+61d) |  | 30d → 25d |  |
| 1118 | Codebase (3.5.x) | 2007-09-03 → 2007-11-01 (+59d) | 2007-09-28 → 2007-11-28 (+61d) |  | 30d → 25d |  |
| 1119 | Test plan (3.6.x, 5.4.x) | 2007-09-03 → 2007-11-01 (+59d) | 2007-09-28 → 2007-11-28 (+61d) |  | 30d → 25d |  |
| 1120 | Test report (3.8.x) | 2007-09-03 → 2007-11-01 (+59d) | 2007-09-28 → 2007-11-28 (+61d) |  | 30d → 25d |  |
| 1121 | Adopter test plan (5.5.x) | 2007-09-03 → 2007-11-01 (+59d) | 2007-09-28 → 2007-11-28 (+61d) |  | 30d → 25d |  |
| 1122 | Adopter test report (5.6.x) | 2007-09-03 → 2007-11-01 (+59d) | 2007-09-28 → 2007-11-28 (+61d) |  | 30d → 25d |  |
| 1123 | Installation guide (3.10.x) | 2007-09-03 → 2007-11-01 (+59d) | 2007-09-28 → 2007-11-28 (+61d) |  | 30d → 25d |  |
| 1124 | Administration guide (3.13.x) | 2007-09-03 → 2007-11-01 (+59d) | 2007-09-28 → 2007-11-28 (+61d) |  | 30d → 25d |  |
| 1125 | Release notes (3.14.x) | 2007-09-03 → 2007-11-01 (+59d) | 2007-09-28 → 2007-11-28 (+61d) |  | 30d → 25d |  |
| 1126 | Adopter summary of C3PR (5.1.x) | 2007-09-03 → 2007-11-01 (+59d) | 2007-09-28 → 2007-11-28 (+61d) |  | 30d → 25d |  |
| 1127 | **Demonstration** | 2007-10-08 → 2007-11-01 (+24d) | 2007-10-08 → 2007-11-01 (+24d) |  | 25d → 45d |  |
| 1128 | Demonstrate latest features to BAH | 2007-10-08 → 2007-11-01 (+24d) | 2007-10-08 → 2007-11-01 (+24d) |  | 25d → 45d |  |
| 1129 | **Iteration 10 (CCTS, load eligibility from caDSR, groups of investigators, error messages, silver review)** | 2007-10-01 → 2007-12-03 (+63d) | 2007-11-12 → 2008-01-02 (+51d) | 30d → 23d |  | was named Iteration 8 (silver review) |
| 1130 | Iteration start | 2007-10-01 → 2007-12-03 (+63d) | 2007-10-01 → 2007-12-03 (+63d) |  | 7d → 0d | constraint start no earlier than 2007-10-01 → start no earlier than 2007-12-03 |
| 1131 | **Project management** | 2007-10-01 → 2007-12-03 (+63d) | 2007-10-31 → 2008-01-02 (+63d) |  | 7d → 0d |  |
| 1132 | Update project plan | 2007-10-01 → 2007-12-03 (+63d) | 2007-10-31 → 2008-01-02 (+63d) |  | 7d → 0d |  |
| 1133 | Update risk matrix | 2007-10-01 → 2007-12-03 (+63d) | 2007-10-31 → 2008-01-02 (+63d) |  | 7d → 0d |  |
| 1134 | Monthly report | 2007-10-01 → 2007-12-03 (+63d) | 2007-10-31 → 2008-01-02 (+63d) |  | 7d → 0d |  |
| 1135 | **Requirements and use cases** | 2007-10-01 → 2007-12-03 (+63d) | 2007-10-12 → 2007-12-14 (+63d) |  | 20d → 13d |  |
| 1136 | Create level 1 use cases and requirements | 2007-10-01 → 2007-12-03 (+63d) | 2007-10-12 → 2007-12-14 (+63d) |  | 20d → 13d |  |
| 1137 | Update use case document | 2007-10-01 → 2007-12-03 (+63d) | 2007-10-12 → 2007-12-14 (+63d) |  | 20d → 13d |  |
| 1138 | Update requirements document | 2007-10-01 → 2007-12-03 (+63d) | 2007-10-12 → 2007-12-14 (+63d) |  | 20d → 13d |  |
| 1139 | **Analysis and Design** | 2007-10-01 → 2007-12-03 (+63d) | 2007-10-12 → 2007-12-14 (+63d) |  | 20d → 13d |  |
| 1140 | Perform level 1 design | 2007-10-01 → 2007-12-03 (+63d) | 2007-10-12 → 2007-12-14 (+63d) |  | 20d → 13d |  |
| 1141 | Modeling | 2007-10-01 → 2007-12-03 (+63d) | 2007-10-12 → 2007-12-14 (+63d) |  | 20d → 13d |  |
| 1142 | Systems design | 2007-10-01 → 2007-12-03 (+63d) | 2007-10-12 → 2007-12-14 (+63d) |  | 20d → 13d |  |
| 1157 | **Testing** | 2007-10-01 → 2007-12-03 (+63d) | 2007-10-31 → 2008-01-02 (+63d) |  | 7d → 0d |  |
| 1158 | Developer testing | 2007-10-01 → 2007-12-03 (+63d) | 2007-10-31 → 2008-01-02 (+63d) |  | 7d → 0d |  |
| 1159 | Adopter testing | 2007-10-01 → 2007-12-03 (+63d) | 2007-10-31 → 2008-01-02 (+63d) |  | 7d → 0d |  |
| 1160 | **Documentation** | 2007-10-01 → 2007-12-03 (+63d) | 2007-10-31 → 2008-01-02 (+63d) |  | 7d → 0d |  |
| 1161 | Installation guide | 2007-10-01 → 2007-12-03 (+63d) | 2007-10-31 → 2008-01-02 (+63d) |  | 7d → 0d |  |
| 1162 | Administration guide | 2007-10-01 → 2007-12-03 (+63d) | 2007-10-31 → 2008-01-02 (+63d) |  | 7d → 0d |  |
| 1163 | Release notes | 2007-10-01 → 2007-12-03 (+63d) | 2007-10-31 → 2008-01-02 (+63d) |  | 7d → 0d |  |

| ID | Task | Start | Finish | Total float |
| --- | --- | --- | --- | --- |
| 1164 | Adopter summary of C3PR | 2007-10-01 → 2007-12-03 (+63d) | 2007-10-31 → 2008-01-02 (+63d) | 7d → 0d |
| 1165 | Final Technical/Architecture Guide | 2007-10-01 → 2007-12-03 (+63d) | 2007-10-31 → 2008-01-02 (+63d) | 7d → 0d |
| 1166 | **Support** | 2007-10-01 → 2007-12-03 (+63d) | 2007-10-31 → 2008-01-02 (+63d) | 7d → 0d |
| 1167 | Adopter support | 2007-10-01 → 2007-12-03 (+63d) | 2007-10-31 → 2008-01-02 (+63d) | 7d → 0d |
| 1168 | Bug fixing | 2007-10-01 → 2007-12-03 (+63d) | 2007-10-31 → 2008-01-02 (+63d) | 7d → 0d |
| 1169 | **Touchpoints** | 2007-10-01 → 2007-12-03 (+63d) | 2007-10-31 → 2008-01-02 (+63d) | 7d → 0d |
| 1170 | Adopter review of deliverables | 2007-10-01 → 2007-12-03 (+63d) | 2007-10-31 → 2008-01-02 (+63d) | 7d → 0d |
| 1171 | Adopter deployment of previous iteration codebase | 2007-10-01 → 2007-12-03 (+63d) | 2007-10-31 → 2008-01-02 (+63d) | 7d → 0d |
| 1172 | Begin silver review | 2007-09-03 → 2007-12-03 (+91d) | 2007-09-28 → 2007-12-28 (+91d) | 30d → 3d |
| 1173 | **Deliverables** | 2007-10-01 → 2007-12-03 (+63d) | 2007-10-31 → 2008-01-02 (+63d) | 7d → 0d |
| 1174 | Risk matrix 1.4.x | 2007-10-01 → 2007-12-03 (+63d) | 2007-10-31 → 2008-01-02 (+63d) | 7d → 0d |
| 1175 | Monthly report and risk matrix 1.3.x | 2007-10-01 → 2007-12-03 (+63d) | 2007-10-31 → 2008-01-02 (+63d) | 7d → 0d |
| 1176 | Use case document (3.1.x) | 2007-10-01 → 2007-12-03 (+63d) | 2007-10-31 → 2008-01-02 (+63d) | 7d → 0d |
| 1177 | Requirements document (3.2.x) | 2007-10-01 → 2007-12-03 (+63d) | 2007-10-31 → 2008-01-02 (+63d) | 7d → 0d |
| 1178 | UML (3.3.x) | 2007-10-01 → 2007-12-03 (+63d) | 2007-10-31 → 2008-01-02 (+63d) | 7d → 0d |
| 1179 | Design document (3.4.x) | 2007-10-01 → 2007-12-03 (+63d) | 2007-10-31 → 2008-01-02 (+63d) | 7d → 0d |
| 1180 | Codebase (3.5.x) | 2007-10-01 → 2007-12-03 (+63d) | 2007-10-31 → 2008-01-02 (+63d) | 7d → 0d |
| 1181 | Test plan (3.6.x, 5.4.x) | 2007-10-01 → 2007-12-03 (+63d) | 2007-10-31 → 2008-01-02 (+63d) | 7d → 0d |
| 1182 | Test report (3.8.x) | 2007-10-01 → 2007-12-03 (+63d) | 2007-10-31 → 2008-01-02 (+63d) | 7d → 0d |
| 1183 | Adopter test plan (5.5.x) | 2007-10-01 → 2007-12-03 (+63d) | 2007-10-31 → 2008-01-02 (+63d) | 7d → 0d |
| 1184 | Adopter test report (5.6.x) | 2007-10-01 → 2007-12-03 (+63d) | 2007-10-31 → 2008-01-02 (+63d) | 7d → 0d |
| 1185 | Installation guide (3.10.x) | 2007-10-01 → 2007-12-03 (+63d) | 2007-10-31 → 2008-01-02 (+63d) | 7d → 0d |
| 1186 | Administration guide (3.13.x) | 2007-10-01 → 2007-12-03 (+63d) | 2007-10-31 → 2008-01-02 (+63d) | 7d → 0d |
| 1187 | Release notes (3.14.x) | 2007-10-01 → 2007-12-03 (+63d) | 2007-10-31 → 2008-01-02 (+63d) | 7d → 0d |
| 1188 | Adopter summary of C3PR (5.1.x) | 2007-10-01 → 2007-12-03 (+63d) | 2007-10-31 → 2008-01-02 (+63d) | 7d → 0d |
| 1191 | **Demonstration** | 2007-11-12 → 2007-12-03 (+21d) | 2007-11-12 → 2007-12-03 (+21d) | 0d → 23d |
| 1192 | Demonstrate latest features to BAH | 2007-11-12 → 2007-12-03 (+21d) | 2007-11-12 → 2007-12-03 (+21d) | 0d → 23d |
| 1193 | Demonstrate to the larger community | 2007-11-12 → 2007-12-03 (+21d) | 2007-11-12 → 2007-12-03 (+21d) | 0d → 23d |
