# elaboration_project_plan

How a schedule from MS Project changed from version to version. A marks actual dates.

## Version 1 (saved 2006-11-12)

Note of the change: first draft

| ID | WBS | Task | Duration | Start | Finish | Predecessors | Total float |
| --- | --- | --- | --- | --- | --- | --- | --- |
| 1 | 1 | **Iteration 1** | 22d | 2006-11-01 | 2006-11-30 |  | 0d |
| 2 | 1.1 | **Project planning** | 22d | 2006-11-01 | 2006-11-30 |  | 0d |
| 3 |  | Draft project plan | 10d | 2006-11-01 | 2006-11-14 |  | 2d |
| 4 |  | Draft communication plan | 13d | 2006-11-01 | 2006-11-17 |  | 9d |
| 5 |  | Draft risk matrix | 10d | 2006-11-15 | 2006-11-28 | 3 | 2d |
| 6 |  | Update risk matrix | 22d | 2006-11-01 | 2006-11-30 |  | 0d |
| 7 |  | Draft meeting notes from face-to-face | 18d | 2006-11-01 | 2006-11-24 |  | 4d |
| 8 |  | Collaboration report | 22d | 2006-11-01 | 2006-11-30 |  | 0d |
| 9 |  | Refine vision and scope document | 18d | 2006-11-01 | 2006-11-24 |  | 4d |
| 10 |  | Monthly report | 22d | 2006-11-01 | 2006-11-30 |  | 0d |
| 11 | 1.2 | **Development artifacts** | 22d | 2006-11-01 | 2006-11-30 |  | 0d |
| 12 |  | Use case document | 22d | 2006-11-01 | 2006-11-30 |  | 0d |
| 13 |  | SRS document | 22d | 2006-11-01 | 2006-11-30 |  | 0d |
| 14 |  | UML diagrams | 22d | 2006-11-01 | 2006-11-30 |  | 0d |
| 15 |  | Design document | 22d | 2006-11-01 | 2006-11-30 |  | 0d |
| 16 |  | Test plan document | 22d | 2006-11-01 | 2006-11-30 |  | 0d |
| 17 |  | Prototype code | 22d | 2006-11-01 | 2006-11-30 |  | 0d |
| 18 |  | Test report | 22d | 2006-11-01 | 2006-11-30 |  | 0d |
| 19 | 1.3 | **Development** | 22d | 2006-11-01 | 2006-11-30 |  | 0d |
| 20 | 1.3.1 | **Web interface** | 22d | 2006-11-01 | 2006-11-30 |  | 0d |
| 21 |  | Migrate v1 code into codebase | 22d | 2006-11-01 | 2006-11-30 |  | 0d |
| 22 |  | First pass at dynamic interface | 22d | 2006-11-01 | 2006-11-30 |  | 0d |
| 23 |  | Add registration tab | 22d | 2006-11-01 | 2006-11-30 |  | 0d |
| 24 | 1.3.2 | **Grid service** | 22d | 2006-11-01 | 2006-11-30 |  | 0d |
| 25 |  | Create grid service skeleton | 22d | 2006-11-01 | 2006-11-30 |  | 0d |
| 26 | 1.3.3 | **Database** | 22d | 2006-11-01 | 2006-11-30 |  | 0d |
| 27 |  | Migrate v1 code into codebase | 22d | 2006-11-01 | 2006-11-30 |  | 0d |
| 28 | 1.3.4 | **Domain model** | 22d | 2006-11-01 | 2006-11-30 |  | 0d |
| 29 |  | Migrate v1 code into codebase | 22d | 2006-11-01 | 2006-11-30 |  | 0d |
| 30 |  | First draft of protocol model | 22d | 2006-11-01 | 2006-11-30 |  | 0d |
| 31 | 2 | **Iteration 2** | 21d | 2006-12-01 | 2006-12-29 | 1 | 0d |
| 32 | 2.1 | **Project planning** | 21d | 2006-12-01 | 2006-12-29 |  | 0d |
| 33 |  | Update risk matrix | 11d | 2006-12-01 | 2006-12-15 |  | 10d |
| 34 |  | Update risk matrix | 21d | 2006-12-01 | 2006-12-29 |  | 0d |
| 35 |  | Monthly report | 21d | 2006-12-01 | 2006-12-29 |  | 0d |
| 36 | 2.2 | **Development artifacts** | 21d | 2006-12-01 | 2006-12-29 |  | 0d |
| 37 |  | Use case document | 21d | 2006-12-01 | 2006-12-29 |  | 0d |
| 38 |  | SRS document | 21d | 2006-12-01 | 2006-12-29 |  | 0d |
| 39 |  | UML diagrams | 21d | 2006-12-01 | 2006-12-29 |  | 0d |
| 40 |  | Design document | 21d | 2006-12-01 | 2006-12-29 |  | 0d |
| 41 |  | Test plan document | 21d | 2006-12-01 | 2006-12-29 |  | 0d |
| 42 |  | Prototype code | 21d | 2006-12-01 | 2006-12-29 |  | 0d |
| 43 |  | Test report | 21d | 2006-12-01 | 2006-12-29 |  | 0d |
| 44 | 3 | **Iteration 3** | 23d | 2007-01-01 | 2007-01-31 | 31 | 0d |
| 45 | 3.1 | **Project planning** | 23d | 2007-01-01 | 2007-01-31 |  | 0d |
| 46 |  | Update risk matrix | 10d | 2007-01-01 | 2007-01-12 |  | 13d |
| 47 |  | Update risk matrix | 23d | 2007-01-01 | 2007-01-31 |  | 0d |
| 48 |  | Monthly report | 23d | 2007-01-01 | 2007-01-31 |  | 0d |
| 49 | 3.2 | **Development artifacts** | 23d | 2007-01-01 | 2007-01-31 |  | 0d |
| 50 |  | Use case document | 23d | 2007-01-01 | 2007-01-31 |  | 0d |
| 51 |  | SRS document | 23d | 2007-01-01 | 2007-01-31 |  | 0d |
| 52 |  | UML diagrams | 23d | 2007-01-01 | 2007-01-31 |  | 0d |
| 53 |  | Design document | 23d | 2007-01-01 | 2007-01-31 |  | 0d |
| 54 |  | Test plan document | 23d | 2007-01-01 | 2007-01-31 |  | 0d |
| 55 |  | Prototype code | 23d | 2007-01-01 | 2007-01-31 |  | 0d |
| 56 |  | Test report | 23d | 2007-01-01 | 2007-01-31 |  | 0d |
| 57 | 4 | **Iteration 4** | 20d | 2007-02-01 | 2007-02-28 | 44 | 0d |
| 58 | 4.1 | **Project planning** | 20d | 2007-02-01 | 2007-02-28 |  | 0d |
| 59 |  | Update risk matrix | 11d | 2007-02-01 | 2007-02-15 |  | 9d |
| 60 |  | Update risk matrix | 20d | 2007-02-01 | 2007-02-28 |  | 0d |
| 61 |  | Monthly report | 20d | 2007-02-01 | 2007-02-28 |  | 0d |
| 62 |  | Construction and transition phase plan | 20d | 2007-02-01 | 2007-02-28 |  | 0d |
| 63 | 4.2 | **Development artifacts** | 20d | 2007-02-01 | 2007-02-28 |  | 0d |
| 64 |  | Use case document | 20d | 2007-02-01 | 2007-02-28 |  | 0d |
| 65 |  | SRS document | 20d | 2007-02-01 | 2007-02-28 |  | 0d |
| 66 |  | UML diagrams | 20d | 2007-02-01 | 2007-02-28 |  | 0d |
| 67 |  | Design document | 20d | 2007-02-01 | 2007-02-28 |  | 0d |
| 68 |  | Test plan document | 20d | 2007-02-01 | 2007-02-28 |  | 0d |
| 69 |  | Prototype code | 20d | 2007-02-01 | 2007-02-28 |  | 0d |
| 70 |  | Test report | 20d | 2007-02-01 | 2007-02-28 |  | 0d |

| ID | Task | Duration | Start | Finish | Total float |
| --- | --- | --- | --- | --- | --- |
| 71 | Lessons learned document | 20d | 2007-02-01 | 2007-02-28 | 0d |

## Version 2 (saved 2006-11-12)

Note of the change: added some artifacts

Last finish stays 2007-02-28.

Added:

| ID | Task | Duration | Start | Finish |
| --- | --- | --- | --- | --- |
| 11 | Adoption Collaboration Report | 22d | 2006-11-01 | 2006-11-30 |
| 37 | Adoption Collaboration Report | 21d | 2006-12-01 | 2006-12-29 |
| 51 | Adoption Collaboration Report | 23d | 2007-01-01 | 2007-01-31 |
| 66 | Adoption Collaboration Report | 20d | 2007-02-01 | 2007-02-28 |
| 76 | Technical architecture guide | 20d | 2007-02-01 | 2007-02-28 |

## Version 3 (saved 2006-11-13)

Note of the change: updated from discussion with Ram

Last finish stays 2007-02-28.

Added:

| ID | Task | Duration | Start | Finish |
| --- | --- | --- | --- | --- |
| 14 | Draft level 1 use cases | 22d | 2006-11-01 | 2006-11-30 |
| 24 | **Enterprise Service Bus** | 22d | 2006-11-01 | 2006-11-30 |
| 25 | Evalutate technologies | 22d | 2006-11-01 | 2006-11-30 |
| 26 | Setup initial project | 22d | 2006-11-01 | 2006-11-30 |
| 28 | Evaluate caGrid 1.0 service infrastructure | 22d | 2006-11-01 | 2006-11-30 |
| 32 | First draft of protocol database structure | 22d | 2006-11-01 | 2006-11-30 |
| 36 | Harmonize protocol model with BRIDG | 22d | 2006-11-01 | 2006-11-30 |
| 37 | **Security** | 22d | 2006-11-01 | 2006-11-30 |
| 38 | Evaluate caGrid 1.0 security infrastructure | 22d | 2006-11-01 | 2006-11-30 |
| 39 | **Business layer** | 22d | 2006-11-01 | 2006-11-30 |
| 40 | Migrate v1 code | 22d | 2006-11-01 | 2006-11-30 |
| 49 | Develop C3PR integration use cases (implementation) | 21d | 2006-12-01 | 2006-12-29 |
| 50 | Develop Study Calendar integration use cases (implementation) | 21d | 2006-12-01 | 2006-12-29 |
| 51 | Develop protocol management use cases (implementation) | 21d | 2006-12-01 | 2006-12-29 |
| 58 | **Development** | 21d | 2006-12-01 | 2006-12-29 |
| 59 | **Web interface** | 21d | 2006-12-01 | 2006-12-29 |
| 62 | Add skeleton of protocol management section | 21d | 2006-12-01 | 2006-12-29 |
| 63 | Point login module to Dorian (IdP service) | 21d | 2006-12-01 | 2006-12-29 |
| 64 | **Enterprise Service Bus** | 21d | 2006-12-01 | 2006-12-29 |
| 65 | Implement protocol creation message router | 21d | 2006-12-01 | 2006-12-29 |
| 66 | Implement protocol creation message handler for C3PR | 21d | 2006-12-01 | 2006-12-29 |
| 67 | Implement protocol creation message handler for Study Calendar | 21d | 2006-12-01 | 2006-12-29 |
| 68 | Implement participant creation message router | 21d | 2006-12-01 | 2006-12-29 |
| 69 | Implement participant creation message handler for C3PR | 21d | 2006-12-01 | 2006-12-29 |
| 70 | Implement participant creation message handler for Study Calendar | 21d | 2006-12-01 | 2006-12-29 |
| 71 | **Grid service** | 21d | 2006-12-01 | 2006-12-29 |
| 72 | Implement protocol creation service | 21d | 2006-12-01 | 2006-12-29 |
| 73 | Implement participant creation service | 21d | 2006-12-01 | 2006-12-29 |
| 74 | **Database** | 21d | 2006-12-01 | 2006-12-29 |
| 75 | Update database with protocol changes | 21d | 2006-12-01 | 2006-12-29 |
| 76 | Update database with participant changes | 21d | 2006-12-01 | 2006-12-29 |
| 77 | **Domain model** | 21d | 2006-12-01 | 2006-12-29 |
| 78 | Revise protocol model | 21d | 2006-12-01 | 2006-12-29 |
| 79 | First draft of participant model | 21d | 2006-12-01 | 2006-12-29 |
| 80 | Harmonize participant model with BRIDG | 21d | 2006-12-01 | 2006-12-29 |
| 81 | **Security** | 21d | 2006-12-01 | 2006-12-29 |
| 82 | Deploy Dorian | 21d | 2006-12-01 | 2006-12-29 |
| 83 | Setup Dorian users | 21d | 2006-12-01 | 2006-12-29 |
| 84 | **Business layer** | 21d | 2006-12-01 | 2006-12-29 |
| 85 | Implement protocol creation service | 21d | 2006-12-01 | 2006-12-29 |
| 86 | Implement participant creation service | 21d | 2006-12-01 | 2006-12-29 |
| 101 | **Development** | 23d | 2007-01-01 | 2007-01-31 |
| 102 | Web interface | 23d | 2007-01-01 | 2007-01-31 |
| 103 | **Enterprise Service Bus** | 23d | 2007-01-01 | 2007-01-31 |
| 104 | Implement registration change message | 23d | 2007-01-01 | 2007-01-31 |
| 105 | Grid service | 23d | 2007-01-01 | 2007-01-31 |
| 106 | Database | 23d | 2007-01-01 | 2007-01-31 |
| 107 | Domain model | 23d | 2007-01-01 | 2007-01-31 |
| 108 | **Security** | 23d | 2007-01-01 | 2007-01-31 |
| 109 | Implement CSM authorization in grid service | 23d | 2007-01-01 | 2007-01-31 |
| 110 | Implement grid grouper | 23d | 2007-01-01 | 2007-01-31 |

Changed:

| ID | Task | Start | Finish | Duration | Total float | Predecessors |
| --- | --- | --- | --- | --- | --- | --- |
| 41 | **Iteration 2** |  |  |  |  | 1 → 37, 1 |
| 60 | First pass at dynamic interface | 2006-11-01 → 2006-12-01 (+30d) | 2006-11-30 → 2006-12-29 (+29d) | 22d → 21d | 0d → 43d |  |
| 61 | Add registration tab | 2006-11-01 → 2006-12-01 (+30d) | 2006-11-30 → 2006-12-29 (+29d) | 22d → 21d | 0d → 43d |  |
| 87 | **Iteration 3** |  |  |  |  | 41 → 81 |

## Version 4 (saved 2006-11-30)

Note of the change: updated with completion status

Last finish stays 2007-02-28. Complete tasks 0 → 5.

Changed:

| ID | Task | Start | Finish | Complete | Total float |
| --- | --- | --- | --- | --- | --- |
| 1 | **Iteration 1** | 2006-11-01 A |  | 0% → 13% | 0d → 64d |
| 2 | **Project planning** | 2006-11-01 A |  | 0% → 32% |  |
| 3 | Draft project plan | 2006-11-01 A | 2006-11-14 A | 0% → 100% | 66d → none |
| 4 | Draft communication plan | 2006-11-01 A | 2006-11-17 A | 0% → 100% | 73d → none |
| 5 | Draft risk matrix | 2006-11-15 A | 2006-11-28 A | 0% → 100% | 66d → none |
| 7 | Draft meeting notes from face-to-face | 2006-11-01 A | 2006-11-24 A | 0% → 100% | 68d → none |
| 21 | **Development** | 2006-11-01 A |  | 0% → 8% | 0d → 64d |
| 24 | **Enterprise Service Bus** | 2006-11-01 A |  | 0% → 50% |  |
| 25 | Evalutate technologies | 2006-11-01 A | 2006-11-30 A | 0% → 100% | 64d → none |

## Version 5 (saved 2006-12-05)

Note of the change: updated with feedback from BAH

Last finish stays 2007-02-28.

Added:

| ID | Task | Duration | Start | Finish |
| --- | --- | --- | --- | --- |
| 100 | Draft architecture guide | 1d? | 2007-01-01 | 2007-01-01 |

Removed: 8 Collaboration report

Changed:

| ID | Task | Start | Finish | Duration | Complete | Total float | Predecessors | Other |
| --- | --- | --- | --- | --- | --- | --- | --- | --- |
| 1 | **Iteration 1** |  | 2006-11-30 → 2006-12-14 (+14d) | 22d → 32d | 13% → 15% | 64d → 54d |  |  |
| 2 | **Project planning** |  | 2006-11-30 → 2006-12-14 (+14d) | 22d → 32d | 32% → 38% | 64d → 54d |  |  |
| 3 | Draft project plan (task 1.1) |  |  |  |  |  |  | was named Draft project plan |
| 4 | Draft communication plan (task 1.2) |  |  |  |  |  |  | was named Draft communication plan |
| 5 | Draft risk matrix (task 1.4.1) | 2006-11-15 A → 2006-11-01 A (-14d) | 2006-11-28 A → 2006-11-14 A (-14d) |  |  |  | 3 → none | was named Draft risk matrix |
| 6 | Update risk matrix (task 1.3.1) | 2006-11-01 → 2006-11-15 (+14d) | 2006-11-30 → 2006-12-14 (+14d) |  |  | 64d → 54d | none → 5 | was named Update risk matrix |
| 7 | Draft meeting notes from face-to-face (task 1.5) |  |  |  |  |  |  | was named Draft meeting notes from face-to-face |
| 8 | Refine vision and scope document (task 1.8) |  |  |  |  |  |  | was named Refine vision and scope document |
| 9 | Monthly report (task 1.3.1) |  |  |  |  |  |  | was named Monthly report |
| 10 | Adoption Collaboration Report (task 1.7) |  |  |  |  |  |  | was named Adoption Collaboration Report |
| 13 | Draft level 1 use cases (task 2.1.1) |  |  |  |  |  |  | was named Draft level 1 use cases |
| 14 | SRS document (task 2.2.1) |  |  |  |  |  |  | was named SRS document |
| 15 | UML diagrams (task 2.3.1) |  |  |  |  |  |  | was named UML diagrams |
| 16 | Design document (task 2.4.1) |  |  |  |  |  |  | was named Design document |
| 17 | Test plan document (task 2.6.1) |  |  |  |  |  |  | was named Test plan document |
| 18 | Prototype code (task 2.5.1) |  |  |  |  |  |  | was named Prototype code |
| 19 | Test report (task 2.7.1) |  |  |  |  |  |  | was named Test report |
| 20 | **Development** |  |  |  | 8% → 12% |  |  |  |
| 27 | Evaluate caGrid 1.0 service infrastructure |  | 2006-11-30 → 2006-11-09 (-21d) | 22d → 7d |  |  |  |  |
| 28 | Create grid service skeleton | 2006-11-01 → 2006-11-10 (+9d) |  | 22d → 15d |  |  | none → 27 |  |
| 30 | Migrate v1 code into codebase |  | 2006-11-30 → 2006-11-21 (-9d) | 22d → 15d |  |  |  |  |
| 31 | First draft of protocol database structure | 2006-11-01 → 2006-11-22 (+21d) |  | 22d → 7d |  |  | none → 30 |  |
| 33 | Migrate v1 code into codebase |  | 2006-11-30 → 2006-11-21 (-9d) | 22d → 15d |  |  |  |  |
| 34 | First draft of protocol model | 2006-11-01 → 2006-11-22 (+21d) |  | 22d → 7d |  |  | none → 33 |  |
| 35 | Harmonize protocol model with BRIDG | 2006-11-01 → 2006-11-22 (+21d) |  | 22d → 7d |  |  | none → 33 |  |
| 42 | Update risk matrix (task 1.4.2) |  |  |  |  | 53d → 43d |  | was named Update risk matrix |
| 43 | Update risk matrix (task 1.3.2) | 2006-12-01 → 2006-12-18 (+17d) |  | 21d → 10d |  |  | none → 42 | was named Update risk matrix |
| 44 | Monthly report (task 1.3.2) |  |  |  |  |  |  | was named Monthly report |
| 45 | Adoption Collaboration Report (task 1.7) |  |  |  |  |  |  | was named Adoption Collaboration Report |
| 48 | Develop C3PR integration use cases (implementation) (task 2.1.2) |  |  |  |  |  |  | was named Develop C3PR integration use cases (implementation) |
| 49 | Develop Study Calendar integration use cases (implementation) (task 2.1.2) |  |  |  |  |  |  | was named Develop Study Calendar integration use cases (implementation) |
| 50 | Develop protocol management use cases (implementation) (task 2.1.2) |  |  |  |  |  |  | was named Develop protocol management use cases (implementation) |
| 51 | SRS document (task 2.2.2) |  |  |  |  |  |  | was named SRS document |
| 52 | UML diagrams (task 2.3.2) |  |  |  |  |  |  | was named UML diagrams |
| 53 | Design document (task 2.4.2) |  |  |  |  |  |  | was named Design document |
| 54 | Test plan document (task 2.6.2) |  |  |  |  |  |  | was named Test plan document |
| 55 | Prototype code (task 2.5.2) |  |  |  |  |  |  | was named Prototype code |
| 56 | Test report (task 2.7.2) |  |  |  |  |  |  | was named Test report |
| 59 | First pass at dynamic interface |  | 2006-12-29 → 2006-12-07 (-22d) | 21d → 5d |  |  |  |  |
| 60 | Add registration tab | 2006-12-01 → 2006-12-08 (+7d) |  | 21d → 16d |  |  | none → 59 |  |
| 61 | Add skeleton of protocol management section | 2006-12-01 → 2006-12-08 (+7d) |  | 21d → 16d |  |  | none → 59 |  |
| 64 | Implement protocol creation message router |  | 2006-12-29 → 2006-12-07 (-22d) | 21d → 5d |  |  |  |  |
| 65 | Implement protocol creation message handler for C3PR | 2006-12-01 → 2006-12-08 (+7d) | 2006-12-29 → 2006-12-15 (-14d) | 21d → 6d |  |  | none → 64 |  |
| 66 | Implement protocol creation message handler for Study Calendar | 2006-12-01 → 2006-12-08 (+7d) | 2006-12-29 → 2006-12-15 (-14d) | 21d → 6d |  |  | none → 64 |  |
| 67 | Implement participant creation message router | 2006-12-01 → 2006-12-18 (+17d) | 2006-12-29 → 2006-12-22 (-7d) | 21d → 5d |  |  | none → 66, 65 |  |
| 68 | Implement participant creation message handler for C3PR | 2006-12-01 → 2006-12-25 (+24d) |  | 21d → 5d |  |  | none → 67 |  |
| 69 | Implement participant creation message handler for Study Calendar | 2006-12-01 → 2006-12-25 (+24d) |  | 21d → 5d |  |  | none → 67 |  |
| 77 | Revise protocol model |  | 2006-12-29 → 2006-12-07 (-22d) | 21d → 5d |  |  |  |  |
| 78 | First draft of participant model | 2006-12-01 → 2006-12-08 (+7d) |  | 21d → 16d |  |  | none → 77 |  |
| 79 | Harmonize participant model with BRIDG | 2006-12-01 → 2006-12-08 (+7d) |  | 21d → 16d |  |  | none → 77 |  |
| 81 | Deploy Dorian |  | 2006-12-29 → 2006-12-22 (-7d) | 21d → 16d |  |  |  |  |
| 82 | Setup Dorian users | 2006-12-01 → 2006-12-25 (+24d) |  | 21d → 5d |  |  | none → 81 |  |
| 86 | **Iteration 3** |  |  | 23d → 23d? |  |  |  |  |
| 92 | **Development artifacts** |  |  | 23d → 23d? |  |  |  |  |
| 127 | Final architecture guide |  |  |  |  |  |  | was named Technical architecture guide |

## Version 6 (saved 2006-12-06)

Note of the change: updated with feedback from ram

Last finish stays 2007-02-28.

Added:

| ID | Task | Duration | Start | Finish | Predecessors |
| --- | --- | --- | --- | --- | --- |
| 10 | **Requirements** | 22d | 2006-11-01 A | 2006-11-30 |  |
| 15 | **Analysis and Design** | 22d | 2006-11-01 A | 2006-11-30 |  |
| 18 | **ESB** | 22d | 2006-11-01 A | 2006-11-30 A |  |
| 19 | Evalutate technologies by prototyping | 22d | 2006-11-01 A | 2006-11-30 A |  |
| 20 | **Grid service** | 7d | 2006-11-01 | 2006-11-09 |  |
| 22 | **Database** | 7d | 2006-11-01 | 2006-11-09 |  |
| 24 | **Domain model** | 22d | 2006-11-01 | 2006-11-30 |  |
| 25 | Create protocol model with harmonized with BRIDG | 11d | 2006-11-01 | 2006-11-15 |  |
| 26 | Create first draft of protocol model | 11d | 2006-11-16 | 2006-11-30 | 25 |
| 38 | Implement protocol database structure | 22d | 2006-11-01 | 2006-11-30 |  |
| 41 | Implement protocol model | 15d | 2006-11-01 | 2006-11-21 |  |
| 42 | Create OR mapping for protocol model | 7d | 2006-11-22 | 2006-11-30 | 41 |
| 46 | **Testing** | 22d | 2006-11-01 | 2006-11-30 |  |
| 47 | Implement unit tests | 22d | 2006-11-01 | 2006-11-30 |  |
| 50 | **Project Management** | 21d | 2006-12-01 | 2006-12-29 |  |
| 56 | **Requirements** | 21d | 2006-12-01 | 2006-12-29 |  |
| 62 | **Analysis and Design** | 21d | 2006-12-01 | 2006-12-29 |  |
| 65 | **Doman model** | 21d | 2006-12-01 | 2006-12-29 |  |
| 67 | Create participant model | 10d | 2006-12-18 | 2006-12-29 | 66 |
| 68 | Revise protocol model (including BRIDG harmonization) | 21d | 2006-12-01 | 2006-12-29 |  |
| 90 | Implement protocol model revisions | 21d | 2006-12-01 | 2006-12-29 |  |
| 98 | **Testing** | 21d | 2006-12-01 | 2006-12-29 |  |
| 99 | Create unit tests | 21d | 2006-12-01 | 2006-12-29 |  |
| 108 | **Requirements** | 23d | 2007-01-01 | 2007-01-31 |  |
| 111 | **Analysis and Design** | 23d? | 2007-01-01 | 2007-01-31 |  |
| 125 | **Testing** | 23d | 2007-01-01 | 2007-01-31 |  |
| 135 | **Requirements** | 20d | 2007-02-01 | 2007-02-28 |  |
| 138 | **Analysis and Design** | 20d | 2007-02-01 | 2007-02-28 |  |
| 142 | Lessons learned | 20d | 2007-02-01 | 2007-02-28 |  |
| 143 | **Implementation** | 20d | 2007-02-01 | 2007-02-28 |  |
| 145 | **Testing** | 20d | 2007-02-01 | 2007-02-28 |  |

Removed: 11 Development artifacts; 24 Evalutate technologies; 34 First draft of protocol model; 35 Harmonize protocol model with BRIDG; 41 Project planning; 46 Development artifacts; 47 Use case document; 77 Revise protocol model; 92 Development artifacts; 118 Development artifacts; 124 Prototype code; 126 Lessons learned document

Changed:

| ID | Task | Start | Finish | Duration | Complete | Total float | Predecessors | Other |
| --- | --- | --- | --- | --- | --- | --- | --- | --- |
| 1 | **Iteration 1** |  | 2006-12-14 → 2006-11-30 (-14d) | 32d → 22d | 15% → 13% | 54d → 64d |  |  |
| 2 | **Project Management** |  | 2006-12-14 → 2006-11-30 (-14d) | 32d → 22d | 38% → 30% | 54d → 64d |  | was named Project planning |
| 6 | Update risk matrix (task 1.3.1) |  | 2006-12-14 → 2006-11-30 (-14d) | 22d → 12d |  | 54d → 64d |  |  |
| 23 | First draft of protocol database structure | 2006-11-22 → 2006-11-01 (-21d) | 2006-11-30 → 2006-11-09 (-21d) |  |  | 64d → 79d | 37 → none |  |
| 29 | **Implementation** | 2006-11-01 A → 2006-11-01 |  |  | 12% → 0% |  |  | was named Development |
| 32 | **Enterprise Service Bus** | 2006-11-01 A → 2006-11-01 |  |  | 50% → 0% |  |  |  |
| 34 | **Grid service** | 2006-11-01 → 2006-11-10 (+9d) |  | 22d → 15d |  |  |  |  |
| 37 | Migrate v1 code into codebase |  | 2006-11-21 → 2006-11-30 (+9d) | 15d → 22d |  |  |  |  |
| 40 | Migrate v1 code into codebase |  | 2006-11-21 → 2006-11-30 (+9d) | 15d → 22d |  |  |  |  |
| 57 | **Use case document** | 2006-11-01 → 2006-12-01 (+30d) | 2006-11-30 → 2006-12-29 (+29d) | 22d → 21d |  | 64d → 43d |  |  |
| 66 | Harmonize participant model with BRIDG | 2006-12-08 → 2006-12-01 (-7d) | 2006-12-29 → 2006-12-15 (-14d) | 16d → 11d |  |  | Revise protocol model → none |  |
| 69 | **Implementation** |  |  |  |  |  |  | was named Development |
| 89 | Implement participant model | 2006-12-08 → 2006-12-01 (-7d) |  | 16d → 21d |  |  | Revise protocol model → none | was named First draft of participant model |
| 102 | **Project Management** |  |  |  |  | 0d → 20d |  | was named Project planning |
| 115 | **Implementation** |  |  |  |  | 0d → 20d |  | was named Development |
| 127 | **Iteration 4** |  |  |  |  |  | 101 → 125, 101 |  |
| 128 | **Project Management** |  |  |  |  |  |  | was named Project planning |
| 144 | Prototype code | 2007-01-01 → 2007-02-01 (+31d) | 2007-01-31 → 2007-02-28 (+28d) | 23d → 20d |  |  |  |  |

## Version 7 (saved 2006-12-08)

Note of the change: updated next iteration

Last finish stays 2007-02-28. Complete tasks 5 → 27.

Added:

| ID | Task | Duration | Start | Finish | Predecessors | Resources |
| --- | --- | --- | --- | --- | --- | --- |
| 61 | Refine protocol management use cases (task 2.1.2) | 21d | 2006-12-01 | 2006-12-29 |  | Ram; Priyatam; Elaborators |
| 62 | Elaborator review of use case document | 21d | 2006-12-01 | 2006-12-29 |  | Elaborators |
| 81 | Integrate caGrid security delegation | 21d | 2006-12-01 | 2006-12-29 |  | Manav; Kruttik |
| 92 | Setup IdP service | 5d | 2006-12-25 | 2006-12-29 | 90 | Manav |
| 108 | Refine protocol management use cases | 23d | 2007-01-01 | 2007-01-31 |  | Ram; Elaborators; Priyatam |
| 109 | Refine participant management use cases | 23d | 2007-01-01 | 2007-01-31 |  | Ram; Elaborators; Priyatam |
| 110 | Refine C3PR integration use cases | 23d | 2007-01-01 | 2007-01-31 |  | Ram; Elaborators; Priyatam |
| 111 | Refine PSC use cases | 23d | 2007-01-01 | 2007-01-31 |  | Ram; Elaborators; Priyatam |
| 112 | Develop registration use cases | 23d | 2007-01-01 | 2007-01-31 |  | Ram; Elaborators |
| 113 | Elaborator review of use case document | 23d | 2007-01-01 | 2007-01-31 |  | Elaborators |
| 116 | UML diagrams (task 2.3.2) | 23d | 2007-01-01 | 2007-01-31 |  | Development team |
| 117 | Design document (task 2.4.2) | 23d | 2007-01-01 | 2007-01-31 |  | Development team |
| 118 | Draft architecture guide (task 2.8.1) | 23d | 2007-01-01 | 2007-01-31 |  |  |
| 119 | **Doman model** | 33d | 2007-01-01 | 2007-02-14 |  | Ram; Priyatam; Ramakrishna |
| 120 | Harmonize C3PR model with BRIDG | 20d | 2007-01-01 | 2007-01-26 |  | Ram; Priyatam; Ramakrishna |
| 121 | Create registration model | 13d | 2007-01-29 | 2007-02-14 | 120 | Ram; Priyatam; Ramakrishna |
| 122 | Revise protocol model (including BRIDG harmonization) | 23d | 2007-01-01 | 2007-01-31 |  | Ram; Priyatam; Ramakrishna |
| 123 | Revise participant model (including BRIDG harmonization) | 23d | 2007-01-01 | 2007-01-31 |  | Ram; Priyatam; Ramakrishna |
| 126 | Finalize protocol management interface | 23d | 2007-01-01 | 2007-01-31 |  | Priyatam; Kruttik |
| 127 | Implement participant management interface | 23d | 2007-01-01 | 2007-01-31 |  | Priyatam; Kruttik |
| 133 | Implement registration change message handler for C3PR | 7d | 2007-01-12 | 2007-01-22 | 132 | Manav; Kruttik |
| 134 | Implement registration change message handler for Study Calendar | 7d | 2007-01-23 | 2007-01-31 | 133 | Manav; Kruttik |
| 137 | Implement registration change service | 23d | 2007-01-01 | 2007-01-31 |  | Manav |
| 139 | Update database with protocol model changes | 23d | 2007-01-01 | 2007-01-31 |  | Ram; Priyatam; Ramakrishna |
| 140 | Update database with participant model changes | 23d | 2007-01-01 | 2007-01-31 |  | Ram; Priyatam; Ramakrishna |
| 141 | Implement database with registration model | 23d | 2007-01-01 | 2007-01-31 |  | Ram; Priyatam; Ramakrishna |
| 143 | Implement protocol model revisions | 23d | 2007-01-01 | 2007-01-31 |  | Priyatam; Ramakrishna |
| 144 | Implement participant model | 23d | 2007-01-01 | 2007-01-31 |  | Priyatam; Ramakrishna |
| 145 | Implement registartion model | 23d | 2007-01-01 | 2007-01-31 |  | Priyatam; Ramakrishna |
| 149 | **Business layer** | 23d | 2007-01-01 | 2007-01-31 |  | Priyatam; Kruttik |
| 151 | Implement registration change service | 23d | 2007-01-01 | 2007-01-31 |  | Priyatam; Kruttik |
| 153 | Create unit tests | 23d | 2007-01-01 | 2007-01-31 |  | Developers |
| 154 | Test report (task 2.7.3) | 23d | 2007-01-01 | 2007-01-31 |  | Patrick |
| 155 | Create functional test cases | 23d | 2007-01-01 | 2007-01-31 |  | Elaborators |

Removed: 87 Update database with participant changes; 112 UML diagrams; 113 Design document; 114 Draft architecture guide; 126 Test report

Changed:

| ID | Task | Start | Finish | Complete | Total float | Other |
| --- | --- | --- | --- | --- | --- | --- |
| 1 | **Iteration 1** |  |  | 13% → 84% |  |  |
| 2 | **Project Management** |  | 2006-11-30 A | 30% → 100% | 64d → none |  |
| 6 | Update risk matrix (task 1.3.1) | 2006-11-15 A | 2006-11-30 A | 0% → 100% | 64d → none |  |
| 7 | Monthly report (task 1.3.1) | 2006-11-01 A | 2006-11-30 A | 0% → 100% | 64d → none |  |
| 8 | Adoption Collaboration Report (task 1.7) | 2006-11-01 A | 2006-11-30 A | 0% → 100% | 64d → none |  |
| 9 | Test plan document (task 2.6.1) | 2006-11-01 A | 2006-11-30 A | 0% → 100% | 64d → none |  |
| 10 | **Requirements** |  |  | 23% → 73% |  |  |
| 12 | Refine vision and scope document (task 1.8) | 2006-11-01 A | 2006-11-24 A | 0% → 100% | 68d → none |  |
| 13 | Draft level 1 use cases (task 2.1.1) | 2006-11-01 A | 2006-11-30 A | 0% → 100% | 64d → none |  |
| 15 | **Analysis and Design** |  |  | 18% → 82% |  |  |
| 17 | UML diagrams (task 2.3.1) | 2006-11-01 A | 2006-11-30 A | 0% → 100% | 64d → none |  |
| 20 | **Grid service** | 2006-11-01 A | 2006-11-09 A | 0% → 100% | 64d → none |  |
| 21 | Evaluate caGrid 1.0 service infrastructure | 2006-11-01 A | 2006-11-09 A | 0% → 100% | 64d → none |  |
| 22 | **Database** | 2006-11-01 A | 2006-11-09 A | 0% → 100% | 79d → none |  |
| 23 | First draft of protocol database structure | 2006-11-01 A | 2006-11-09 A | 0% → 100% | 79d → none |  |
| 24 | **Domain model** | 2006-11-01 A | 2006-11-30 A | 0% → 100% | 64d → none |  |
| 25 | Create protocol model with harmonized with BRIDG | 2006-11-01 A | 2006-11-15 A | 0% → 100% | 64d → none |  |
| 26 | Create first draft of protocol model | 2006-11-16 A | 2006-11-30 A | 0% → 100% | 64d → none |  |
| 27 | **Security** | 2006-11-01 A | 2006-11-30 A | 0% → 100% | 0d → none |  |
| 28 | Evaluate caGrid 1.0 security infrastructure | 2006-11-01 A | 2006-11-30 A | 0% → 100% | 0d → none |  |
| 29 | **Implementation** | 2006-11-01 A |  | 0% → 88% |  |  |
| 30 | **Web interface** | 2006-11-01 A | 2006-11-30 A | 0% → 100% | 64d → none |  |
| 31 | Migrate v1 code into codebase | 2006-11-01 A | 2006-11-30 A | 0% → 100% | 64d → none |  |
| 32 | **Enterprise Service Bus** | 2006-11-01 A | 2006-11-30 A | 0% → 100% | 64d → none |  |
| 33 | Setup initial project | 2006-11-01 A | 2006-11-30 A | 0% → 100% | 64d → none |  |
| 34 | **Grid service** | 2006-11-10 A | 2006-11-30 A | 0% → 100% | 64d → none |  |
| 35 | Create grid service skeleton | 2006-11-10 A | 2006-11-30 A | 0% → 100% | 64d → none |  |
| 36 | **Database** | 2006-11-01 A | 2006-11-30 A | 0% → 100% | 64d → none |  |
| 37 | Migrate v1 code into codebase | 2006-11-01 A | 2006-11-30 A | 0% → 100% | 64d → none |  |
| 38 | Implement protocol database structure | 2006-11-01 A | 2006-11-30 A | 0% → 100% | 64d → none |  |
| 39 | **Domain model** | 2006-11-01 A | 2006-11-30 A | 0% → 100% | 64d → none |  |
| 40 | Migrate v1 code into codebase | 2006-11-01 A | 2006-11-30 A | 0% → 100% | 64d → none |  |
| 41 | Implement protocol model | 2006-11-01 A | 2006-11-21 A | 0% → 100% | 64d → none |  |
| 42 | Create OR mapping for protocol model | 2006-11-22 A | 2006-11-30 A | 0% → 100% | 64d → none |  |
| 43 | **Business layer** | 2006-11-01 A | 2006-11-30 A | 0% → 100% | 64d → none |  |
| 44 | Migrate v1 code | 2006-11-01 A | 2006-11-30 A | 0% → 100% | 64d → none |  |
| 46 | **Testing** | 2006-11-01 A |  | 0% → 50% |  |  |
| 47 | Implement unit tests | 2006-11-01 A | 2006-11-30 A | 0% → 100% | 64d → none |  |
| 50 | **Project Management** |  |  |  |  | resources none → Patrick |
| 51 | Update risk matrix (task 1.4.2) |  |  |  |  | resources none → Patrick |
| 52 | Update risk matrix (task 1.3.2) |  |  |  |  | resources none → Patrick |
| 53 | Monthly report (task 1.3.2) |  |  |  |  | resources none → Patrick |
| 54 | Adoption Collaboration Report (task 1.7) |  |  |  |  | resources none → Patrick |
| 55 | Test plan document (task 2.6.2) |  |  |  |  | resources none → Patrick |
| 56 | **Requirements** |  |  |  |  | resources none → Ram; Elaborators |
| 57 | **Use case document** |  |  |  |  | resources none → Ram; Elaborators |
| 58 | Develop C3PR integration use cases (implementation) (task 2.1.2) |  |  |  |  | resources none → Ram; Elaborators |
| 59 | Develop Study Calendar integration use cases (implementation) (task 2.1.2) |  |  |  |  | resources none → Ram; Elaborators |
| 60 | Develop participant management use cases (implementation) (task 2.1.2) |  |  |  |  | was named Develop protocol management use cases (implementation) (task 2.1.2); resources none → Ram; Elaborators |
| 63 | SRS document (task 2.2.2) |  |  |  |  | resources none → Ram |
| 65 | UML diagrams (task 2.3.2) |  |  |  |  | resources none → Development team |
| 66 | Design document (task 2.4.2) |  |  |  |  | resources none → Development team |
| 67 | **Doman model** |  |  |  |  | resources none → Ram; Priyatam; Ramakrishna |
| 68 | Harmonize participant model with BRIDG |  |  |  |  | resources none → Ram; Priyatam; Ramakrishna |
| 69 | Create participant model |  |  |  |  | resources none → Ram; Priyatam; Ramakrishna |
| 70 | Revise protocol model (including BRIDG harmonization) |  |  |  |  | resources none → Ram; Priyatam; Ramakrishna |
| 72 | **Web interface** |  |  |  |  | resources none → Priyatam; Kruttik |
| 73 | First pass at dynamic interface |  |  |  |  | resources none → Priyatam; Kruttik |
| 74 | Add registration tab |  |  |  |  | resources none → Priyatam; Kruttik |
| 75 | Implement protocol management interface |  |  |  |  | was named Add skeleton of protocol management section; resources none → Priyatam; Kruttik |
| 76 | Point login module to Dorian (IdP service) |  |  |  |  | resources none → Priyatam; Kruttik |
| 77 | **Enterprise Service Bus** |  |  |  |  | resources none → Manav; Kruttik |
| 78 | Implement protocol creation message router |  |  |  | 43d → 53d | resources none → Manav; Kruttik |
| 79 | Implement protocol creation message handler for C3PR |  |  |  | 43d → 53d | resources none → Manav; Kruttik |
| 80 | Implement protocol creation message handler for Study Calendar |  |  |  | 43d → 53d | resources none → Manav; Kruttik |
| 82 | **Grid service** |  |  |  |  | resources none → Manav |
| 83 | Implement protocol creation service |  |  |  |  | resources none → Manav |
| 84 | **Database** |  |  |  |  | resources none → Ram; Priyatam; Ramakrishna |
| 85 | Update database with protocol changes |  |  |  |  | resources none → Ram; Priyatam; Ramakrishna |
| 86 | **Domain model** |  |  |  |  | resources none → Priyatam; Ramakrishna |

| ID | Task | Start | Finish | Duration | Total float | Predecessors | Other |
| --- | --- | --- | --- | --- | --- | --- | --- |
| 87 | Implement protocol model revisions |  |  |  |  |  | resources none → Priyatam; Ramakrishna |
| 88 | Implement participant model |  |  |  |  |  | resources none → Priyatam; Ramakrishna |
| 89 | **Security** |  |  |  |  |  | resources none → Manav |
| 90 | Deploy Dorian |  |  |  |  |  | resources none → Manav |
| 91 | Setup Dorian users |  |  |  |  |  | resources none → Manav |
| 93 | **Business layer** |  |  |  |  |  | resources none → Priyatam; Kruttik |
| 94 | Implement protocol creation service |  |  |  |  |  | resources none → Priyatam; Kruttik |
| 95 | Prototype code (task 2.5.2) |  |  |  |  |  | resources none → Patrick |
| 96 | **Testing** |  |  |  |  |  | resources none → Developers; Patrick |
| 97 | Create unit tests |  |  |  |  |  | resources none → Developers |
| 98 | Test report (task 2.7.2) |  |  |  |  |  | resources none → Patrick |
| 99 | **Iteration 3** |  | 2007-01-31 → 2007-02-14 (+14d) | 23d? → 33d |  |  |  |
| 100 | **Project Management** |  |  |  |  |  | resources none → Patrick |
| 101 | Update risk matrix (task 1.4.3) |  |  |  |  |  | was named Update risk matrix; resources none → Patrick |
| 102 | Update risk matrix (task 1.3.3) |  |  |  |  |  | was named Update risk matrix; resources none → Patrick |
| 103 | Monthly report (task 1.3.3) |  |  |  |  |  | was named Monthly report; resources none → Patrick |
| 104 | Adoption Collaboration Report (task 1.7) |  |  |  |  |  | was named Adoption Collaboration Report; resources none → Patrick |
| 105 | Test plan document (task 2.6.3) |  |  |  |  |  | was named Test plan document; resources none → Patrick |
| 107 | **Use case document** |  |  |  |  |  | resources none → Ram; Elaborators; Priyatam |
| 114 | SRS document |  |  |  |  |  | resources none → Ram |
| 115 | **Analysis and Design** |  | 2007-01-31 → 2007-02-14 (+14d) | 23d? → 33d | 20d → 10d |  |  |
| 125 | **Web interface** |  |  |  |  |  | resources none → Priyatam; Kruttik |
| 128 | **Enterprise Service Bus** |  |  |  |  |  | resources none → Manav; Kruttik |
| 129 | Implement participant creation message router | 2006-12-18 → 2007-01-01 (+14d) | 2006-12-22 → 2007-01-11 (+20d) | 5d → 9d | 43d → 20d | 80, 79 → none | resources none → Manav; Kruttik |
| 130 | Implement participant creation message handler for C3PR | 2006-12-25 → 2007-01-12 (+18d) | 2006-12-29 → 2007-01-22 (+24d) | 5d → 7d | 43d → 20d |  | resources none → Manav; Kruttik |
| 131 | Implement participant creation message handler for Study Calendar | 2006-12-25 → 2007-01-23 (+29d) | 2006-12-29 → 2007-01-31 (+33d) | 5d → 7d | 43d → 20d | 129 → 130 | resources none → Manav; Kruttik |
| 132 | Implement registration change message router |  | 2007-01-31 → 2007-01-11 (-20d) | 23d → 9d |  |  | was named Implement registration change message; resources none → Manav; Kruttik |
| 135 | **Grid service** |  |  |  |  |  | resources none → Manav |
| 136 | Implement participant creation service | 2006-12-01 → 2007-01-01 (+31d) | 2006-12-29 → 2007-01-31 (+33d) | 21d → 23d | 43d → 20d |  | resources none → Manav |
| 138 | **Database** |  |  |  |  |  | resources none → Ram; Priyatam; Ramakrishna |
| 142 | **Domain model** |  |  |  |  |  | resources none → Priyatam; Ramakrishna |
| 146 | **Security** |  |  |  |  |  | resources none → Manav |
| 147 | Implement CSM authorization in grid service |  |  |  |  |  | resources none → Manav |
| 148 | Implement grid grouper |  |  |  |  |  | resources none → Manav |
| 150 | Implement participant creation service | 2006-12-01 → 2007-01-01 (+31d) | 2006-12-29 → 2007-01-31 (+33d) | 21d → 23d | 43d → 20d |  | resources none → Priyatam; Kruttik |

## Version 8 (saved 2006-12-12)

Note of the change: updated with feedback from developers

Last finish stays 2007-02-28. Complete tasks 27 → 56.

Added:

| ID | Task | Duration | Start | Finish | Predecessors | Resources |
| --- | --- | --- | --- | --- | --- | --- |
| 4 | Developer draft | 5d | 2006-11-01 A | 2006-11-07 A |  |  |
| 5 | Adopter review | 3d | 2006-11-08 A | 2006-11-10 A | 4 |  |
| 6 | Developer update | 2d | 2006-11-13 A | 2006-11-14 A | 5 |  |
| 7 | Deliver to BAH | 0d | 2006-11-14 A | 2006-11-14 A | 6 |  |
| 9 | Developer draft | 12d | 2006-11-01 A | 2006-11-16 A |  |  |
| 10 | Adopter review | 5d | 2006-11-17 A | 2006-11-23 A | 9 |  |
| 11 | Developer update | 5d | 2006-11-24 A | 2006-11-30 A | 10 |  |
| 12 | Deliver to BAH | 0d | 2006-11-30 A | 2006-11-30 A | 11 |  |
| 14 | Developer draft | 12d | 2006-11-01 A | 2006-11-16 A |  |  |
| 15 | Deliver to BAH | 0d | 2006-11-16 A | 2006-11-16 A | 14 |  |
| 17 | Developer draft | 10d | 2006-11-17 A | 2006-11-30 A | 13 |  |
| 18 | Deliver to BAH | 0d | 2006-11-30 A | 2006-11-30 A | 17 |  |
| 20 | Developer draft | 22d | 2006-11-01 A | 2006-11-30 A |  |  |
| 21 | Deliver to BAH | 0d | 2006-11-30 A | 2006-11-30 A |  |  |
| 23 | Developer draft | 12d | 2006-11-01 A | 2006-11-16 A |  |  |
| 24 | Adopter review | 5d | 2006-11-17 A | 2006-11-23 A | 23 |  |
| 25 | Developer update | 5d | 2006-11-24 A | 2006-11-30 A | 24 |  |
| 26 | Deliver to BAH | 0d | 2006-11-14 A | 2006-11-14 A | 25 |  |
| 28 | **Draft meeting notes from face-to-face (task 1.5)** | 22d | 2006-11-01 A | 2006-11-30 A |  |  |
| 29 | Developer draft | 12d | 2006-11-01 A | 2006-11-16 A |  |  |
| 30 | Adopter review | 5d | 2006-11-17 A | 2006-11-23 A | 29 |  |
| 31 | Developer update | 5d | 2006-11-24 A | 2006-11-30 A | 30 |  |
| 32 | Deliver to BAH | 0d | 2006-11-14 A | 2006-11-14 A | 31 |  |
| 34 | Developer draft | 12d | 2006-11-01 A | 2006-11-16 A |  |  |
| 35 | Adopter review | 5d | 2006-11-24 A | 2006-11-30 A | 34 |  |
| 36 | Developer update | 5d | 2006-11-01 A | 2006-11-07 A | 35 |  |
| 37 | Deliver to BAH | 0d | 2006-11-01 A | 2006-11-01 A | 36 |  |
| 39 | Developer draft | 2d | 2006-11-01 A | 2006-11-02 A |  |  |
| 40 | **Draft use case document (task 2.1.1)** | 22d | 2006-11-01 A | 2006-11-30 A |  |  |
| 41 | Integrate level 1 use cases | 2d | 2006-11-01 A | 2006-11-02 A | 38 |  |
| 42 | Draft protocol management use cases | 11d | 2006-11-02 A | 2006-11-16 A |  |  |
| 43 | Adopter review | 5d | 2006-11-17 A | 2006-11-23 A | 42 |  |
| 44 | Developer update | 5d | 2006-11-24 A | 2006-11-30 A | 43 |  |
| 45 | Deliver to BAH | 0d | 2006-11-30 A | 2006-11-30 A | 44 |  |
| 47 | Developer draft | 12d | 2006-11-01 | 2006-11-16 |  |  |
| 48 | Adopter review | 5d | 2006-11-17 | 2006-11-23 | 47 |  |
| 49 | Developer update | 5d | 2006-11-24 | 2006-11-30 | 48 |  |
| 50 | Deliver to BAH | 0d | 2006-11-30 | 2006-11-30 | 49 |  |
| 53 | Developer draft | 12d | 2006-11-01 | 2006-11-16 |  |  |
| 54 | Adopter review | 5d | 2006-11-17 | 2006-11-23 | 53 |  |
| 55 | Developer update | 5d | 2006-11-24 | 2006-11-30 | 54 |  |
| 56 | Deliver to BAH | 0d | 2006-11-30 | 2006-11-30 | 55 |  |
| 57 | **UML diagrams (task 2.3.1)** | 22d | 2006-11-01 A | 2006-11-30 A |  |  |
| 58 | Developer draft | 12d | 2006-11-01 A | 2006-11-16 A |  |  |
| 59 | Adopter review | 5d | 2006-11-17 A | 2006-11-23 A | 58 |  |
| 60 | Developer update | 5d | 2006-11-24 A | 2006-11-30 A | 59 |  |
| 61 | Deliver to BAH | 0d | 2006-11-30 A | 2006-11-30 A | 60 |  |
| 90 | Developer Draft | 22d | 2006-11-01 A | 2006-11-30 A |  |  |
| 91 | Deliver to BAH | 0d | 2006-11-30 A | 2006-11-30 A | 90 |  |
| 95 | Developer draft | 2d | 2006-11-29 A | 2006-11-30 A | 93 |  |
| 96 | Deliver to BAH | 0d | 2006-11-30 A | 2006-11-30 A | 95 |  |
| 100 | Developer draft | 11d | 2006-12-01 | 2006-12-15 |  | Patrick |
| 101 | Deliver to BAH | 0d | 2006-12-15 | 2006-12-15 | 100 | Patrick |
| 103 | Developer draft | 10d | 2006-12-18 | 2006-12-29 | 99 | Patrick |
| 104 | Deliver to BAH | 0d | 2006-12-29 | 2006-12-29 | 103 | Patrick |
| 106 | Developer draft | 21d | 2006-12-01 | 2006-12-29 |  | Patrick |
| 107 | Deliver to BAH | 0d | 2006-12-29 | 2006-12-29 | 106 | Patrick |
| 109 | Developer Draft | 11d | 2006-12-01 | 2006-12-15 |  | Patrick |
| 110 | Adopter review | 5d | 2006-12-18 | 2006-12-22 | 109 | Elaborators |
| 111 | Developer update | 5d | 2006-12-25 | 2006-12-29 | 110 | Patrick |
| 112 | Deliver to BAH | 0d | 2006-12-29 | 2006-12-29 | 111 | Patrick |
| 114 | Developer Draft | 11d | 2006-12-01 | 2006-12-15 |  | Patrick |
| 115 | Adopter review | 5d | 2006-12-18 | 2006-12-22 | 114 | Elaborators |
| 116 | Developer update | 5d | 2006-12-25 | 2006-12-29 | 115 | Patrick |
| 117 | Deliver to BAH | 0d | 2006-12-29 | 2006-12-29 | 116 | Patrick |
| 119 | Create level 1 use cases and requirements | 2d | 2006-12-01 | 2006-12-04 |  | Ram |
| 122 | Developer Draft | 11d | 2006-12-01 | 2006-12-15 |  | Ram |
| 123 | Adopter review | 5d | 2006-12-18 | 2006-12-22 | 122 | Elaborators |
| 124 | Developer update | 5d | 2006-12-25 | 2006-12-29 | 123 | Ram |
| 125 | Deliver to BAH | 0d | 2006-12-29 | 2006-12-29 | 124 | Patrick |
| 127 | Developer Draft | 11d | 2006-12-01 | 2006-12-15 |  | Ram |
| 128 | Adopter review | 5d | 2006-12-18 | 2006-12-22 | 127 | Elaborators |
| 129 | Developer update | 5d | 2006-12-25 | 2006-12-29 | 128 | Ram |
| 130 | Deliver to BAH | 0d | 2006-12-29 | 2006-12-29 | 129 | Patrick |
| 132 | Developer Draft | 11d | 2006-12-01 | 2006-12-15 |  | Ram |
| 133 | Adopter review | 5d | 2006-12-18 | 2006-12-22 | 132 | Elaborators |
| 134 | Developer update | 5d | 2006-12-25 | 2006-12-29 | 133 | Ram |
| 135 | Deliver to BAH | 0d | 2006-12-29 | 2006-12-29 | 134 | Patrick |
| 137 | Developer Draft | 11d | 2006-12-01 | 2006-12-15 |  | Ram; Priyatam; Elaborators |
| 138 | Adopter review | 5d | 2006-12-18 | 2006-12-22 | 137 | Elaborators |
| 139 | Developer update | 5d | 2006-12-25 | 2006-12-29 | 138 | Ram; Priyatam; Elaborators |
| 140 | Deliver to BAH | 0d | 2006-12-29 | 2006-12-29 | 139 | Patrick |
| 142 | Developer Draft | 11d | 2006-12-01 | 2006-12-15 |  | Ram |
| 143 | Adopter review | 5d | 2006-12-18 | 2006-12-22 | 142 | Elaborators |
| 144 | Developer update | 5d | 2006-12-25 | 2006-12-29 | 143 | Ram |
| 145 | Deliver to BAH | 0d | 2006-12-29 | 2006-12-29 | 144 | Ram |
| 148 | Developer Draft | 11d | 2006-12-01 | 2006-12-15 |  | Development team |
| 149 | Adopter review | 5d | 2006-12-18 | 2006-12-22 | 148 | Elaborators |
| 150 | Developer update | 5d | 2006-12-25 | 2006-12-29 | 149 | Development team |
| 151 | Deliver to BAH | 0d | 2006-12-29 | 2006-12-29 | 150 | Patrick |
| 153 | Developer Draft | 11d | 2006-12-01 | 2006-12-15 |  | Development team |
| 154 | Adopter review | 5d | 2006-12-18 | 2006-12-22 | 153 | Elaborators |
| 155 | Developer update | 5d | 2006-12-25 | 2006-12-29 | 154 | Development team |
| 156 | Deliver to BAH | 0d | 2006-12-29 | 2006-12-29 | 155 | Patrick |
| 175 | Investigate Identifiers framework | 19d | 2006-12-05 | 2006-12-29 |  | Ram; Priyatam; Ramakrishna |
| 184 | Investigate secure message/conversation | 19d | 2006-12-05 | 2006-12-29 |  | Manav |
| 188 | Developer draft | 19d | 2006-12-05 | 2006-12-29 |  | Development team |
| 189 | Submit to BAH | 0d | 2006-12-29 | 2006-12-29 | 188 | Patrick |
| 192 | Create integration tests | 17d | 2006-12-05 | 2006-12-27 |  | Development team |
| 194 | Developer draft | 2d | 2006-12-28 | 2006-12-29 |  | Development team |
| 195 | Submit to BAH | 0d | 2006-12-29 | 2006-12-29 | 194 | Patrick |
| 199 | Developer draft | 13d | 2007-01-01 | 2007-01-17 |  | Patrick |
| 200 | Deliver to BAH | 0d | 2007-01-17 | 2007-01-17 | 199 | Patrick |
| 202 | Developer draft | 10d | 2007-01-18 | 2007-01-31 |  | Patrick |
| 203 | Deliver to BAH | 0d | 2007-01-31 | 2007-01-31 | 202 | Patrick |
| 205 | Developer draft | 23d | 2007-01-01 | 2007-01-31 |  | Patrick |
| 206 | Deliver to BAH | 0d | 2007-01-31 | 2007-01-31 | 205 | Patrick |
| 208 | Developer draft | 13d | 2007-01-01 | 2007-01-17 |  | Patrick |
| 209 | Adopter review | 5d | 2007-01-18 | 2007-01-24 | 208 | Elaborators |
| 210 | Developer update | 5d | 2007-01-25 | 2007-01-31 | 209 | Patrick |
| 211 | Deliver to BAH | 0d | 2007-01-31 | 2007-01-31 | 210 | Patrick |
| 213 | Developer draft | 13d | 2007-01-01 | 2007-01-17 |  | Patrick |
| 214 | Adopter review | 5d | 2007-01-18 | 2007-01-24 | 213 | Elaborators |
| 215 | Developer update | 5d | 2007-01-25 | 2007-01-31 | 214 | Patrick |
| 216 | Deliver to BAH | 0d | 2007-01-31 | 2007-01-31 | 215 | Patrick |
| 218 | Create level 1 use cases and requirements | 2d | 2007-01-01 | 2007-01-02 |  | Ram |
| 220 | **Develop registration use cases** | 23d | 2007-01-01 | 2007-01-31 |  | Ram; Elaborators |
| 221 | Developer draft | 13d | 2007-01-01 | 2007-01-17 |  | Ram |
| 222 | Adopter review | 5d | 2007-01-18 | 2007-01-24 | 221 | Elaborators |
| 223 | Developer update | 5d | 2007-01-25 | 2007-01-31 | 222 | Ram |
| 224 | Deliver to BAH | 0d | 2007-01-31 | 2007-01-31 | 223 | Patrick |
| 226 | Developer draft | 13d | 2007-01-01 | 2007-01-17 |  | Ram |
| 227 | Adopter review | 5d | 2007-01-18 | 2007-01-24 | 226 | Elaborators |
| 228 | Developer update | 5d | 2007-01-25 | 2007-01-31 | 227 | Ram |
| 229 | Deliver to BAH | 0d | 2007-01-31 | 2007-01-31 | 228 | Patrick |
| 231 | Developer draft | 13d | 2007-01-01 | 2007-01-17 |  | Ram |
| 232 | Adopter review | 5d | 2007-01-18 | 2007-01-24 | 231 | Elaborators |
| 233 | Developer update | 5d | 2007-01-25 | 2007-01-31 | 232 | Ram |
| 234 | Deliver to BAH | 0d | 2007-01-31 | 2007-01-31 | 233 | Patrick |
| 236 | Developer draft | 13d | 2007-01-01 | 2007-01-17 |  | Ram |
| 237 | Adopter review | 5d | 2007-01-18 | 2007-01-24 | 236 | Elaborators |
| 238 | Developer update | 5d | 2007-01-25 | 2007-01-31 | 237 | Ram |
| 239 | Deliver to BAH | 0d | 2007-01-31 | 2007-01-31 | 238 | Patrick |
| 241 | Developer draft | 13d | 2007-01-01 | 2007-01-17 |  | Ram |
| 242 | Adopter review | 5d | 2007-01-18 | 2007-01-24 | 241 | Elaborators |
| 243 | Developer update | 5d | 2007-01-25 | 2007-01-31 | 242 | Ram |
| 244 | Deliver to BAH | 0d | 2007-01-31 | 2007-01-31 | 243 | Patrick |
| 247 | Developer draft | 13d | 2007-01-01 | 2007-01-17 |  | Development team |
| 248 | Adopter review | 5d | 2007-01-18 | 2007-01-24 | 247 | Elaborators |
| 249 | Developer update | 5d | 2007-01-25 | 2007-01-31 | 248 | Development team |
| 250 | Deliver to BAH | 0d | 2007-01-31 | 2007-01-31 | 249 | Patrick |
| 252 | Developer draft | 13d | 2007-01-01 | 2007-01-17 |  | Development team |
| 253 | Adopter review | 5d | 2007-01-18 | 2007-01-24 | 252 | Elaborators |
| 254 | Developer update | 5d | 2007-01-25 | 2007-01-31 | 253 | Development team |
| 255 | Deliver to BAH | 0d | 2007-01-31 | 2007-01-31 | 254 | Patrick |
| 257 | Developer draft | 13d | 2007-01-01 | 2007-01-17 |  | Development team |
| 258 | Adopter review | 5d | 2007-01-18 | 2007-01-24 | 257 | Elaborators |
| 259 | Developer update | 5d | 2007-01-25 | 2007-01-31 | 258 | Development team |
| 260 | Deliver to BAH | 0d | 2007-01-31 | 2007-01-31 | 259 | Patrick |
| 294 | **Prototype code (task 2.5.3)** | 21d | 2007-01-03 | 2007-01-31 |  | Patrick |
| 295 | Developer draft | 21d | 2007-01-03 | 2007-01-31 |  | Development team |
| 296 | Submit to BAH | 0d | 2007-01-31 | 2007-01-31 | 295 | Patrick |
| 299 | Implement integration test framework | 19d | 2007-01-03 | 2007-01-29 |  | Patrick |
| 301 | Developer draft | 2d | 2007-01-30 | 2007-01-31 |  | Development team |
| 302 | Deliver to BAH | 0d | 2007-01-31 | 2007-01-31 | 301 | Patrick |
| 323 | Create unit tests | 20d | 2007-02-01 | 2007-02-28 |  |  |
| 324 | Add integration tests | 20d | 2007-02-01 | 2007-02-28 |  |  |

Removed: 8 Adoption Collaboration Report (task 1.7); 11 Draft meeting notes from face-to-face (task 1.5); 17 UML diagrams (task 2.3.1); 62 Elaborator review of use case document; 108 Refine protocol management use cases; 112 Develop registration use cases; 113 Elaborator review of use case document

Changed:

| ID | Task | Start | Finish | Duration | Complete | Total float | Predecessors | Other |
| --- | --- | --- | --- | --- | --- | --- | --- | --- |
| 1 | **Iteration 1** |  |  |  | 84% → 91% | 64d → 0d |  |  |
| 8 | **Draft communication plan (task 1.2)** |  | 2006-11-17 A → 2006-11-30 A (+13d) | 13d → 22d |  |  |  |  |
| 13 | **Draft risk matrix (task 1.4.1)** |  | 2006-11-14 A → 2006-11-16 A (+2d) | 10d → 12d |  |  |  |  |
| 16 | **Update risk matrix (task 1.3.1)** | 2006-11-15 A → 2006-11-17 A (+2d) |  | 12d → 10d |  |  | 13 → none |  |
| 27 | **Requirements** |  |  |  | 73% → 76% | 64d → 0d |  |  |
| 33 | **Refine vision and scope document (task 1.8)** |  | 2006-11-24 A → 2006-11-30 A (+6d) | 18d → 22d |  |  |  |  |
| 38 | **Draft level 1 use cases and requirements** |  | 2006-11-30 A → 2006-11-02 A (-28d) | 22d → 2d |  |  |  | was named Draft level 1 use cases (task 2.1.1) |
| 51 | **Analysis and Design** |  |  |  | 82% → 79% | 64d → 0d |  |  |
| 62 | **ESB** |  | 2006-11-30 A → 2006-11-07 A (-23d) | 22d → 5d |  |  |  |  |
| 63 | Evalutate technologies by prototyping |  | 2006-11-30 A → 2006-11-07 A (-23d) | 22d → 5d |  |  |  |  |
| 69 | Create protocol model harmonized with BRIDG |  | 2006-11-15 A → 2006-11-14 A (-1d) | 11d → 10d |  |  | none → 38 | was named Create protocol model with harmonized with BRIDG |
| 73 | **Implementation** |  | 2006-11-30 A |  | 88% → 100% | 64d → none |  |  |
| 79 | Create grid service skeleton |  |  |  |  |  | 65 → 65, 38 |  |
| 82 | Implement protocol database structure |  |  |  |  |  | none → 38 |  |
| 85 | Implement protocol model |  |  |  |  |  | none → 38 |  |
| 89 | **Prototype code (task 2.5.1)** | 2006-11-01 A | 2006-11-30 A |  | 0% → 100% | 64d → none |  |  |
| 92 | **Testing** |  | 2006-11-30 A |  | 50% → 100% | 64d → none |  |  |
| 93 | Implement unit tests |  | 2006-11-30 A → 2006-11-28 A (-2d) | 22d → 20d |  |  |  |  |
| 94 | **Test report (task 2.7.1)** | 2006-11-01 → 2006-11-29 A (+28d) | 2006-11-30 A | 22d → 2d | 0% → 100% | 64d → none |  |  |
| 97 | **Iteration 2** | 2006-12-01 A |  |  |  | 0d → 43d | 71, 1 → 1 |  |
| 98 | **Project Management** | 2006-12-01 A |  |  |  |  |  |  |
| 99 | **Update risk matrix (task 1.4.2)** | 2006-12-01 A |  |  |  |  |  |  |
| 102 | **Update risk matrix (task 1.3.2)** |  |  |  |  |  | 99 → none |  |
| 118 | **Requirements** |  |  |  |  | 43d → 0d |  | resources Ram; Elaborators → none |
| 120 | **Use case document** |  |  |  |  |  |  | resources Ram; Elaborators → none |
| 161 | **Implementation** | 2006-12-01 → 2006-12-05 (+4d) |  | 21d → 19d |  |  | none → 119 |  |
| 162 | **Web interface** | 2006-12-01 → 2006-12-05 (+4d) |  | 21d → 19d |  |  |  |  |
| 163 | First pass at dynamic interface | 2006-12-01 → 2006-12-05 (+4d) | 2006-12-07 → 2006-12-11 (+4d) |  |  |  |  |  |
| 164 | Create mockups | 2006-12-08 → 2006-12-12 (+4d) | 2006-12-29 → 2006-12-18 (-11d) | 16d → 5d |  | 43d → 52d |  | was named Add registration tab |
| 165 | Implement protocol management interface | 2006-12-08 → 2006-12-12 (+4d) |  | 16d → 14d |  |  |  |  |
| 166 | Point login module to Dorian (IdP service) | 2006-12-01 → 2006-12-05 (+4d) |  | 21d → 19d |  |  |  |  |
| 167 | **Enterprise Service Bus** | 2006-12-01 → 2006-12-05 (+4d) |  | 21d → 19d |  |  |  |  |
| 168 | Implement protocol creation message router | 2006-12-01 → 2006-12-05 (+4d) | 2006-12-07 → 2006-12-15 (+8d) | 5d → 9d |  | 53d → 43d |  |  |
| 169 | Implement protocol creation message handler for C3PR | 2006-12-08 → 2006-12-18 (+10d) | 2006-12-15 → 2006-12-29 (+14d) | 6d → 10d |  | 53d → 43d |  |  |
| 170 | Implement protocol creation message handler for Study Calendar | 2006-12-08 → 2006-12-18 (+10d) | 2006-12-15 → 2006-12-29 (+14d) | 6d → 10d |  | 53d → 43d |  |  |
| 171 | Integrate caGrid security delegation | 2006-12-01 → 2006-12-05 (+4d) |  | 21d → 19d |  |  |  |  |
| 172 | **Grid service** | 2006-12-01 → 2006-12-05 (+4d) |  | 21d → 19d |  |  |  |  |
| 173 | Implement protocol creation service | 2006-12-01 → 2006-12-05 (+4d) |  | 21d → 19d |  |  |  |  |
| 174 | **Database** | 2006-12-01 → 2006-12-05 (+4d) |  | 21d → 19d |  |  |  |  |
| 176 | Update database with protocol changes | 2006-12-01 → 2006-12-05 (+4d) |  | 21d → 19d |  |  |  |  |
| 177 | **Domain model** | 2006-12-01 → 2006-12-05 (+4d) |  | 21d → 19d |  |  |  |  |
| 178 | Implement protocol model revisions | 2006-12-01 → 2006-12-05 (+4d) |  | 21d → 19d |  |  |  |  |
| 179 | Implement participant model | 2006-12-01 → 2006-12-05 (+4d) |  | 21d → 19d |  |  |  |  |
| 180 | **Security** | 2006-12-01 → 2006-12-05 (+4d) |  | 21d → 19d |  |  |  |  |
| 181 | Deploy Dorian | 2006-12-01 → 2006-12-05 (+4d) |  | 16d → 14d |  |  |  |  |
| 185 | **Business layer** | 2006-12-01 → 2006-12-05 (+4d) |  | 21d → 19d |  |  |  |  |
| 186 | Implement protocol creation service | 2006-12-01 → 2006-12-05 (+4d) |  | 21d → 19d |  |  |  |  |
| 187 | **Prototype code (task 2.5.2)** | 2006-12-01 → 2006-12-05 (+4d) |  | 21d → 19d |  |  |  |  |
| 190 | **Testing** | 2006-12-01 → 2006-12-05 (+4d) |  | 21d → 19d |  |  | none → 119 |  |
| 191 | Create unit tests | 2006-12-01 → 2006-12-05 (+4d) | 2006-12-29 → 2006-12-27 (-2d) | 21d → 17d |  |  |  | resources Developers → Development team |
| 193 | **Test report (task 2.7.2)** | 2006-12-01 → 2006-12-28 (+27d) |  | 21d → 2d |  |  | none → 192, 191 |  |
| 196 | **Iteration 3** |  | 2007-02-14 → 2007-01-31 (-14d) | 33d → 23d |  |  |  |  |
| 198 | **Update risk matrix (task 1.4.3)** |  | 2007-01-12 → 2007-01-17 (+5d) | 10d → 13d |  | 33d → 0d |  |  |
| 201 | **Update risk matrix (task 1.3.3)** | 2007-01-01 → 2007-01-18 (+17d) |  | 23d → 10d |  | 20d → 0d | none → 200 |  |
| 245 | **Analysis and Design** |  | 2007-02-14 → 2007-01-31 (-14d) | 33d → 23d |  | 10d → 0d |  |  |
| 256 | **Draft architecture guide (task 2.8.1)** |  |  |  |  | 20d → 0d |  | resources none → Development team |
| 261 | **Doman model** |  | 2007-02-14 → 2007-01-31 (-14d) | 33d → 23d |  | 10d → 0d |  |  |
| 262 | Harmonize C3PR model with BRIDG |  | 2007-01-26 → 2007-01-12 (-14d) | 20d → 10d |  | 10d → 0d |  |  |
| 263 | Create registration model | 2007-01-29 → 2007-01-15 (-14d) | 2007-02-14 → 2007-01-31 (-14d) |  |  | 10d → 0d |  |  |
| 266 | **Implementation** | 2007-01-01 → 2007-01-03 (+2d) |  | 23d → 21d |  | 20d → 0d | none → 218 |  |
| 267 | **Web interface** | 2007-01-01 → 2007-01-03 (+2d) |  | 23d → 21d |  | 20d → 0d |  |  |
| 268 | Finalize protocol management interface | 2007-01-01 → 2007-01-03 (+2d) |  | 23d → 21d |  | 20d → 0d |  |  |
| 269 | Implement participant management interface | 2007-01-01 → 2007-01-03 (+2d) |  | 23d → 21d |  | 20d → 0d |  |  |
| 270 | **Enterprise Service Bus** | 2007-01-01 → 2007-01-03 (+2d) |  | 23d → 21d |  | 20d → 0d |  |  |
| 271 | Implement participant creation message router | 2007-01-01 → 2007-01-03 (+2d) | 2007-01-11 → 2007-01-12 (+1d) | 9d → 8d |  | 20d → 0d |  |  |
| 272 | Implement participant creation message handler for C3PR | 2007-01-12 → 2007-01-15 (+3d) | 2007-01-22 → 2007-01-23 (+1d) |  |  | 20d → 0d |  |  |
| 273 | Implement participant creation message handler for Study Calendar | 2007-01-23 → 2007-01-24 (+1d) |  | 7d → 6d |  | 20d → 0d |  |  |
| 274 | Implement registration change message router | 2007-01-01 → 2007-01-03 (+2d) | 2007-01-11 → 2007-01-12 (+1d) | 9d → 8d |  | 20d → 0d |  |  |
| 275 | Implement registration change message handler for C3PR | 2007-01-12 → 2007-01-15 (+3d) | 2007-01-22 → 2007-01-23 (+1d) |  |  | 20d → 0d |  |  |
| 276 | Implement registration change message handler for Study Calendar | 2007-01-23 → 2007-01-24 (+1d) |  | 7d → 6d |  | 20d → 0d |  |  |

| ID | Task | Start | Finish | Duration | Total float | Predecessors | Other |
| --- | --- | --- | --- | --- | --- | --- | --- |
| 277 | **Grid service** | 2007-01-01 → 2007-01-03 (+2d) |  | 23d → 21d | 20d → 0d |  |  |
| 278 | Implement participant creation service | 2007-01-01 → 2007-01-03 (+2d) |  | 23d → 21d | 20d → 0d |  |  |
| 279 | Implement registration change service | 2007-01-01 → 2007-01-03 (+2d) |  | 23d → 21d | 20d → 0d |  |  |
| 280 | **Database** | 2007-01-01 → 2007-01-03 (+2d) |  | 23d → 21d | 20d → 0d |  |  |
| 281 | Update database with protocol model changes | 2007-01-01 → 2007-01-03 (+2d) |  | 23d → 21d | 20d → 0d |  |  |
| 282 | Update database with participant model changes | 2007-01-01 → 2007-01-03 (+2d) |  | 23d → 21d | 20d → 0d |  |  |
| 283 | Implement database with registration model | 2007-01-01 → 2007-01-03 (+2d) |  | 23d → 21d | 20d → 0d |  |  |
| 284 | **Domain model** | 2007-01-01 → 2007-01-03 (+2d) |  | 23d → 21d | 20d → 0d |  |  |
| 285 | Implement protocol model revisions | 2007-01-01 → 2007-01-03 (+2d) |  | 23d → 21d | 20d → 0d |  |  |
| 286 | Implement participant model | 2007-01-01 → 2007-01-03 (+2d) |  | 23d → 21d | 20d → 0d |  |  |
| 287 | Implement registration model | 2007-01-01 → 2007-01-03 (+2d) |  | 23d → 21d | 20d → 0d |  | was named Implement registartion model |
| 288 | **Security** | 2007-01-01 → 2007-01-03 (+2d) |  | 23d → 21d | 20d → 0d |  |  |
| 289 | Implement CSM authorization in grid service | 2007-01-01 → 2007-01-03 (+2d) |  | 23d → 21d | 20d → 0d |  |  |
| 290 | Implement grid grouper | 2007-01-01 → 2007-01-03 (+2d) |  | 23d → 21d | 20d → 0d |  |  |
| 291 | **Business layer** | 2007-01-01 → 2007-01-03 (+2d) |  | 23d → 21d | 20d → 0d |  |  |
| 292 | Implement participant creation service | 2007-01-01 → 2007-01-03 (+2d) |  | 23d → 21d | 20d → 0d |  |  |
| 293 | Implement registration change service | 2007-01-01 → 2007-01-03 (+2d) |  | 23d → 21d | 20d → 0d |  |  |
| 297 | **Testing** | 2007-01-01 → 2007-01-03 (+2d) |  | 23d → 21d |  | none → 218 |  |
| 298 | Create unit tests | 2007-01-01 → 2007-01-03 (+2d) | 2007-01-31 → 2007-01-29 (-2d) | 23d → 19d |  |  | resources Developers → Development team |
| 300 | **Test report (task 2.7.3)** | 2007-01-01 → 2007-01-30 (+29d) |  | 23d → 2d |  | none → 299, 298 | resources Patrick → Development team |
| 303 | Create functional test cases | 2007-01-01 → 2007-01-03 (+2d) |  | 23d → 21d |  |  |  |
| 304 | **Iteration 4** |  |  |  |  | 297, 196 → 196 |  |

## Version 9 (saved 2007-02-26)

Note of the change: *** empty log message ***

Last finish 2007-02-28 → 2007-03-19 (+19d). Complete tasks 56 → 195.

Added:

| ID | Task | Duration | Start | Finish | Predecessors | Constraint | Resources |
| --- | --- | --- | --- | --- | --- | --- | --- |
| 2 | Iteration start | 0d | 2006-11-01 A | 2006-11-01 A |  | start no earlier than 2006-11-01 |  |
| 9 | BAH review | 10d | 2006-11-15 | 2006-11-28 | 8 |  |  |
| 15 | BAH review | 10d | 2006-12-01 A | 2006-12-14 A | 14 |  |  |
| 19 | BAH review | 10d | 2006-11-17 A | 2006-11-30 A | 18 |  |  |
| 23 | BAH review | 10d | 2006-12-01 A | 2006-12-14 A | 22 |  |  |
| 27 | BAH review | 10d | 2006-12-01 A | 2006-12-14 A | 26 |  |  |
| 33 | BAH review | 10d | 2006-11-15 | 2006-11-28 | 32 |  |  |
| 40 | BAH review | 10d | 2006-11-15 A | 2006-11-28 A | 39 |  |  |
| 46 | BAH review | 10d | 2006-11-01 A | 2006-11-14 A | 45 |  |  |
| 55 | BAH review | 10d | 2006-12-01 A | 2006-12-14 A | 54 |  |  |
| 61 | BAH review | 10d | 2006-12-01 | 2006-12-14 | 60 |  |  |
| 68 | BAH review | 10d | 2006-12-01 A | 2006-12-14 A | 67 |  |  |
| 74 | BAH review | 10d | 2006-12-01 A | 2006-12-14 A | 73 |  |  |
| 105 | BAH review | 10d | 2006-12-01 A | 2006-12-14 A | 104 |  |  |
| 111 | BAH review | 10d | 2006-12-01 A | 2006-12-14 A | 110 |  |  |
| 113 | Iteration start | 0d | 2006-12-01 A | 2006-12-01 A |  | start no earlier than 2006-12-01 |  |
| 118 | BAH review | 10d | 2006-12-18 A | 2006-12-29 A | 117 |  | BAH |
| 122 | BAH review | 10d | 2007-01-01 A | 2007-01-12 A | 121 |  | BAH |
| 126 | BAH review | 10d | 2007-01-01 | 2007-01-12 | 125 |  | BAH |
| 132 | BAH review | 10d | 2007-01-01 | 2007-01-12 | 131 |  | BAH |
| 138 | BAH review | 10d | 2007-01-01 A | 2007-01-12 A | 137 |  | BAH |
| 147 | BAH review | 10d | 2007-01-01 A | 2007-01-12 A | 146 |  | BAH |
| 153 | BAH review | 10d | 2007-01-01 A | 2007-01-12 A | 152 |  | BAH |
| 159 | BAH review | 10d | 2007-01-01 A | 2007-01-12 A | 158 |  | BAH |
| 165 | BAH review | 10d | 2007-01-01 A | 2007-01-12 A | 164 |  | BAH |
| 171 | BAH review | 10d | 2007-01-01 A | 2007-01-12 A | 170 |  | BAH |
| 178 | BAH review | 10d | 2007-01-01 A | 2007-01-12 A | 177 |  | BAH |
| 184 | BAH review | 10d | 2007-01-01 A | 2007-01-12 A | 183 |  | BAH |
| 194 | Implement base interface | 5d | 2006-12-12 A | 2006-12-18 A |  |  | Priyatam; Kruttik |
| 195 | Hook interface into backend logic | 5d | 2006-12-19 A | 2006-12-25 A | 194 |  | Priyatam; Kruttik |
| 196 | Refine interface | 4d | 2006-12-26 A | 2006-12-29 A | 195 |  | Priyatam; Kruttik |
| 200 | Create router rules | 4d | 2006-12-05 A | 2006-12-08 A |  |  | Manav; Kruttik |
| 201 | Deploy and test router | 5d | 2006-12-11 A | 2006-12-15 A | 200 |  | Manav; Kruttik |
| 203 | Create inbound binding component | 5d | 2006-12-18 A | 2006-12-22 A |  |  | Manav; Kruttik |
| 204 | Create outbound binding component | 5d | 2006-12-25 A | 2006-12-29 A | 203 |  | Manav; Kruttik |
| 206 | Create inbound binding component | 5d | 2006-12-18 A | 2006-12-22 A |  |  | Manav; Kruttik |
| 207 | Create outbound binding component | 5d | 2006-12-25 A | 2006-12-29 A | 206 |  | Manav; Kruttik |
| 209 | Investigate credential handling | 5d | 2006-12-05 A | 2006-12-11 A |  |  | Manav; Kruttik |
| 210 | Implement inbound binding component | 5d | 2006-12-12 A | 2006-12-18 A | 209 |  | Manav; Kruttik |
| 211 | Implement outbound binding component | 5d | 2006-12-19 A | 2006-12-25 A | 210 |  | Manav; Kruttik |
| 212 | Deploy and test | 4d | 2006-12-26 A | 2006-12-29 A | 211 |  | Manav; Kruttik |
| 215 | Create service skeleton | 5d | 2006-12-05 A | 2006-12-11 A |  |  | Manav |
| 216 | Implement skeleton | 5d | 2006-12-12 A | 2006-12-18 A | 215 |  | Manav |
| 217 | Hook in backend database | 5d | 2006-12-19 A | 2006-12-25 A | 216 |  | Manav |
| 218 | Deploy and test | 4d | 2006-12-26 A | 2006-12-29 A | 217 |  | Manav |
| 221 | Review identifiers whitepaper | 5d | 2006-12-05 A | 2006-12-11 A |  |  | Ram; Priyatam; Ramakrishna |
| 222 | Download and review identifiers code | 5d | 2006-12-12 A | 2006-12-18 A | 221 |  | Ram; Priyatam; Ramakrishna |
| 223 | First implementation | 5d | 2006-12-19 A | 2006-12-25 A | 222 |  | Ram; Priyatam; Ramakrishna |
| 224 | Review with team | 4d | 2006-12-26 A | 2006-12-29 A | 223 |  | Ram; Priyatam; Ramakrishna |
| 226 | Create database model | 5d | 2006-12-05 A | 2006-12-11 A |  |  | Ram; Priyatam; Ramakrishna |
| 227 | Create DDLs | 5d | 2006-12-12 A | 2006-12-18 A | 226 |  | Ram; Priyatam; Ramakrishna |
| 228 | Apply DDLs and create test data | 5d | 2006-12-19 A | 2006-12-25 A | 227 |  | Ram; Priyatam; Ramakrishna |
| 229 | Deploy and test | 4d | 2006-12-26 A | 2006-12-29 A | 228 |  | Ram; Priyatam; Ramakrishna |
| 230 | **Implement participant model** | 19d | 2006-12-05 A | 2006-12-29 A |  |  | Ram; Priyatam; Ramakrishna |
| 231 | Create database model | 5d | 2006-12-05 A | 2006-12-11 A |  |  | Ram; Priyatam; Ramakrishna |
| 232 | Create DDLs | 5d | 2006-12-12 A | 2006-12-18 A | 231 |  | Ram; Priyatam; Ramakrishna |
| 233 | Apply DDLs and create test data | 5d | 2006-12-19 A | 2006-12-25 A | 232 |  | Ram; Priyatam; Ramakrishna |
| 234 | Deploy and test | 4d | 2006-12-26 A | 2006-12-29 A | 233 |  | Ram; Priyatam; Ramakrishna |
| 236 | **Setup dorian/authentication** | 19d | 2006-12-05 A | 2006-12-29 A |  |  | Manav |
| 238 | Deploy GTS | 5d | 2006-12-12 A | 2006-12-18 A | 237 |  | Manav |
| 242 | Review whitepapers | 4d | 2006-12-05 A | 2006-12-08 A |  |  | Manav |
| 243 | Review documentation | 5d | 2006-12-11 A | 2006-12-15 A | 242 |  | Manav |
| 244 | Review code | 5d | 2006-12-18 A | 2006-12-22 A | 243 |  | Manav |
| 245 | Create test service | 5d | 2006-12-25 A | 2006-12-29 A | 244 |  | Manav |
| 248 | Design APIs | 5d | 2006-12-05 A | 2006-12-11 A |  |  | Priyatam; Kruttik |
| 249 | Implement APIs | 5d | 2006-12-12 A | 2006-12-18 A | 248 |  | Priyatam; Kruttik |
| 250 | Hook in database | 5d | 2006-12-19 A | 2006-12-25 A | 249 |  | Priyatam; Kruttik |
| 251 | Deploy and test | 4d | 2006-12-26 A | 2006-12-29 A | 250 |  | Priyatam; Kruttik |
| 255 | BAH review | 10d | 2007-01-01 A | 2007-01-12 A | 254 |  | BAH |
| 262 | BAH review | 10d | 2007-01-01 A | 2007-01-12 A | 261 |  | BAH |
| 264 | Iteration start | 0d | 2007-01-01 | 2007-01-01 |  | start no earlier than 2007-01-01 |  |
| 269 | BAH review | 10d | 2007-01-18 | 2007-01-31 | 268 |  | BAH |
| 273 | BAH review | 10d | 2007-02-01 | 2007-02-14 | 272 |  | BAH |
| 277 | BAH review | 10d | 2007-02-01 | 2007-02-14 | 276 |  | BAH |
| 283 | BAH review | 10d | 2007-02-01 | 2007-02-14 | 282 |  | BAH |
| 289 | BAH review | 10d | 2007-02-01 | 2007-02-14 | 288 |  | BAH |
| 298 | BAH review | 10d | 2007-02-01 | 2007-02-14 | 297 |  | BAH |
| 304 | BAH review | 10d | 2007-02-01 | 2007-02-14 | 303 |  | BAH |
| 310 | BAH review | 10d | 2007-02-01 | 2007-02-14 | 309 |  | BAH |
| 316 | BAH review | 10d | 2007-02-01 | 2007-02-14 | 315 |  | BAH |
| 322 | BAH review | 10d | 2007-02-01 | 2007-02-14 | 321 |  | BAH |
| 329 | BAH review | 10d | 2007-02-01 | 2007-02-14 | 328 |  | BAH |
| 335 | BAH review | 10d | 2007-02-01 | 2007-02-14 | 334 |  | BAH |
| 341 | BAH review | 10d | 2007-02-01 | 2007-02-14 | 340 |  | BAH |
| 350 | Analyze use cases | 2d | 2007-01-03 | 2007-01-04 |  |  | Priyatam; Kruttik |
| 351 | Update interface | 5d | 2007-01-05 | 2007-01-11 | 350 |  | Priyatam; Kruttik |
| 352 | Hook into backend logic | 5d | 2007-01-12 | 2007-01-18 | 351 |  | Priyatam; Kruttik |
| 353 | Refine interface | 5d | 2007-01-19 | 2007-01-25 | 352 |  | Priyatam; Kruttik |
| 354 | Deploy and test | 4d | 2007-01-26 | 2007-01-31 | 353 |  | Priyatam; Kruttik |
| 356 | Mockup interface | 2d | 2007-01-03 | 2007-01-04 |  |  | Priyatam; Kruttik |
| 357 | Implement base interface | 5d | 2007-01-05 | 2007-01-11 | 356 |  | Priyatam; Kruttik |
| 358 | Hook interface into backend logic | 5d | 2007-01-12 | 2007-01-18 | 357 |  | Priyatam; Kruttik |
| 359 | Refine interface | 5d | 2007-01-19 | 2007-01-25 | 358 |  | Priyatam; Kruttik |
| 360 | Deploy and test | 4d | 2007-01-26 | 2007-01-31 | 359 |  | Priyatam; Kruttik |
| 363 | Create router rules | 4d | 2007-01-03 | 2007-01-08 |  |  | Manav; Kruttik |
| 364 | Deploy and test router | 5d | 2007-01-09 | 2007-01-15 | 363 |  | Manav; Kruttik |
| 366 | Create inbound binding component | 5d | 2007-01-16 | 2007-01-22 |  |  | Manav; Kruttik |
| 367 | Create outbound binding component | 5d | 2007-01-23 | 2007-01-29 | 366 |  | Manav; Kruttik |
| 369 | Create inbound binding component | 5d | 2007-01-16 | 2007-01-22 |  |  | Manav; Kruttik |
| 370 | Create outbound binding component | 5d | 2007-01-23 | 2007-01-29 | 369 |  | Manav; Kruttik |
| 372 | Create router rules | 5d | 2007-01-03 | 2007-01-09 |  |  | Manav; Kruttik |
| 373 | Deploy and test router | 5d | 2007-01-10 | 2007-01-16 | 372 |  | Manav; Kruttik |
| 375 | Create inbound binding component | 5d | 2007-01-17 | 2007-01-23 |  |  | Manav; Kruttik |
| 376 | Create outbound binding component | 5d | 2007-01-24 | 2007-01-30 | 375 |  | Manav; Kruttik |
| 378 | Create inbound binding component | 5d | 2007-01-17 | 2007-01-23 |  |  | Manav; Kruttik |
| 379 | Create outbound binding component | 5d | 2007-01-24 | 2007-01-30 | 378 |  | Manav; Kruttik |
| 382 | Create service skeleton | 5d | 2007-01-03 | 2007-01-09 |  |  | Manav |
| 383 | Implement skeleton | 5d | 2007-01-10 | 2007-01-16 | 382 |  | Manav |
| 384 | Hook in backend database | 5d | 2007-01-17 | 2007-01-23 | 383 |  | Manav |
| 385 | Deploy and test | 4d | 2007-01-24 | 2007-01-29 | 384 |  | Manav |
| 387 | Create service skeleton | 5d | 2007-01-03 | 2007-01-09 |  |  | Manav |
| 388 | Implement skeleton | 5d | 2007-01-10 | 2007-01-16 | 387 |  | Manav |
| 389 | Hook in backend database | 5d | 2007-01-17 | 2007-01-23 | 388 |  | Manav |
| 390 | Deploy and test | 4d | 2007-01-24 | 2007-01-29 | 389 |  | Manav |
| 393 | Create database model | 6d | 2007-01-03 | 2007-01-10 |  |  | Ram; Priyatam; Ramakrishna |
| 394 | Create DDLs | 6d | 2007-01-11 | 2007-01-18 | 393 |  | Ram; Priyatam; Ramakrishna |
| 395 | Apply DDLs and create test data | 5d | 2007-01-19 | 2007-01-25 | 394 |  | Ram; Priyatam; Ramakrishna |
| 396 | Deploy and test | 4d | 2007-01-26 | 2007-01-31 | 395 |  | Ram; Priyatam; Ramakrishna |
| 398 | Create database model | 6d | 2007-01-03 | 2007-01-10 |  |  | Ram; Priyatam; Ramakrishna |
| 399 | Create DDLs | 6d | 2007-01-11 | 2007-01-18 | 398 |  | Ram; Priyatam; Ramakrishna |
| 400 | Apply DDLs and create test data | 5d | 2007-01-19 | 2007-01-25 | 399 |  | Ram; Priyatam; Ramakrishna |
| 401 | Deploy and test | 4d | 2007-01-26 | 2007-01-31 | 400 |  | Ram; Priyatam; Ramakrishna |
| 403 | Create database model | 6d | 2007-01-03 | 2007-01-10 |  |  | Ram; Priyatam; Ramakrishna |
| 404 | Create DDLs | 6d | 2007-01-11 | 2007-01-18 | 403 |  | Ram; Priyatam; Ramakrishna |
| 405 | Apply DDLs and create test data | 5d | 2007-01-19 | 2007-01-25 | 404 |  | Ram; Priyatam; Ramakrishna |
| 406 | Deploy and test | 4d | 2007-01-26 | 2007-01-31 | 405 |  | Ram; Priyatam; Ramakrishna |
| 408 | **Implement grid grouper** | 11d | 2007-01-03 | 2007-01-17 |  |  | Manav |
| 409 | Deploy grid grouper | 6d | 2007-01-03 | 2007-01-10 |  |  | Manav |
| 410 | Create users and groups | 5d | 2007-01-11 | 2007-01-17 | 409 |  | Manav |
| 412 | Hook CSM into grid service | 5d | 2007-01-11 | 2007-01-17 |  |  | Manav |
| 413 | Hook CSM into grid grouper | 5d | 2007-01-18 | 2007-01-24 | 412 |  | Manav |
| 416 | Design APIs | 5d | 2007-01-03 | 2007-01-09 |  |  | Priyatam; Kruttik |
| 417 | Implement APIs | 6d | 2007-01-10 | 2007-01-17 | 416 |  | Priyatam; Kruttik |
| 418 | Hook in database | 5d | 2007-01-18 | 2007-01-24 | 417 |  | Priyatam; Kruttik |
| 419 | Deploy and test | 5d | 2007-01-25 | 2007-01-31 | 418 |  | Priyatam; Kruttik |
| 421 | Design APIs | 5d | 2007-01-03 | 2007-01-09 |  |  | Priyatam; Kruttik |
| 422 | Implement APIs | 6d | 2007-01-10 | 2007-01-17 | 421 |  | Priyatam; Kruttik |
| 423 | Hook in database | 5d | 2007-01-18 | 2007-01-24 | 422 |  | Priyatam; Kruttik |
| 424 | Deploy and test | 5d | 2007-01-25 | 2007-01-31 | 423 |  | Priyatam; Kruttik |
| 428 | BAH review | 10d | 2007-02-01 | 2007-02-14 | 427 |  | BAH |
| 435 | BAH review | 10d | 2007-02-01 | 2007-02-14 | 434 |  | BAH |
| 437 | Iteration start | 0d | 2007-02-01 | 2007-02-01 |  | start no earlier than 2007-02-01 |  |
| 439 | **Update risk matrix (task 1.4.3)** | 20d | 2007-02-01 | 2007-02-28 |  |  | Patrick |
| 440 | Developer draft | 10d | 2007-02-01 | 2007-02-14 |  |  | Patrick |
| 441 | Deliver to BAH | 0d | 2007-02-14 | 2007-02-14 | 440 |  | Patrick |
| 442 | BAH review | 10d | 2007-02-15 | 2007-02-28 | 441 |  | BAH |
| 443 | **Update risk matrix (task 1.3.3)** | 20d | 2007-02-01 | 2007-02-28 |  |  | Patrick |
| 444 | Developer draft | 10d | 2007-02-01 | 2007-02-14 |  |  | Patrick |
| 445 | Deliver to BAH | 0d | 2007-02-14 | 2007-02-14 | 444 |  | Patrick |
| 446 | BAH review | 10d | 2007-02-15 | 2007-02-28 | 445 |  | BAH |
| 447 | **Monthly report (task 1.3.3)** | 30d | 2007-02-01 | 2007-03-14 |  |  | Patrick |
| 448 | Developer draft | 20d | 2007-02-01 | 2007-02-28 |  |  | Patrick |
| 449 | Deliver to BAH | 0d | 2007-02-28 | 2007-02-28 | 448 |  | Patrick |
| 450 | BAH review | 10d | 2007-03-01 | 2007-03-14 | 449 |  | BAH |
| 451 | **Adoption Collaboration Report (task 1.7)** | 30d | 2007-02-01 | 2007-03-14 |  |  | Patrick |
| 452 | Developer draft | 10d | 2007-02-01 | 2007-02-14 |  |  | Patrick |
| 453 | Adopter review | 5d | 2007-02-15 | 2007-02-21 | 452 |  | Elaborators |
| 454 | Developer update | 5d | 2007-02-22 | 2007-02-28 | 453 |  | Patrick |
| 455 | Deliver to BAH | 0d | 2007-02-28 | 2007-02-28 | 454 |  | Patrick |
| 456 | BAH review | 10d | 2007-03-01 | 2007-03-14 | 455 |  | BAH |
| 457 | **Test plan document (task 2.6.3)** | 30d | 2007-02-01 | 2007-03-14 |  |  | Patrick |
| 458 | Developer draft | 10d | 2007-02-01 | 2007-02-14 |  |  | Patrick |
| 459 | Adopter review | 5d | 2007-02-15 | 2007-02-21 | 458 |  | Elaborators |
| 460 | Developer update | 5d | 2007-02-22 | 2007-02-28 | 459 |  | Patrick |
| 461 | Deliver to BAH | 0d | 2007-02-28 | 2007-02-28 | 460 |  | Patrick |
| 462 | BAH review | 10d | 2007-03-01 | 2007-03-14 | 461 |  | BAH |
| 464 | Create level 1 use cases and requirements | 2d | 2007-02-01 | 2007-02-02 |  |  | Ram |
| 465 | **Use case document** | 30d | 2007-02-01 | 2007-03-14 |  |  | Ram; Elaborators; Priyatam |
| 466 | **Finalize elaboration use cases** | 30d | 2007-02-01 | 2007-03-14 |  |  | Ram; Elaborators |
| 467 | Developer draft | 10d | 2007-02-01 | 2007-02-14 |  |  | Ram |
| 468 | Adopter review | 5d | 2007-02-15 | 2007-02-21 | 467 |  | Elaborators |
| 469 | Developer update | 5d | 2007-02-22 | 2007-02-28 | 468 |  | Ram |
| 470 | Deliver to BAH | 0d | 2007-02-28 | 2007-02-28 | 469 |  | Patrick |
| 471 | BAH review | 10d | 2007-03-01 | 2007-03-14 | 470 |  | BAH |
| 472 | **SRS document** | 30d | 2007-02-01 | 2007-03-14 |  |  | Ram |
| 473 | Developer draft | 10d | 2007-02-01 | 2007-02-14 |  |  | Ram |
| 474 | Adopter review | 5d | 2007-02-15 | 2007-02-21 | 473 |  | Elaborators |
| 475 | Developer update | 5d | 2007-02-22 | 2007-02-28 | 474 |  | Ram |
| 476 | Deliver to BAH | 0d | 2007-02-28 | 2007-02-28 | 475 |  | Patrick |
| 477 | BAH review | 10d | 2007-03-01 | 2007-03-14 | 476 |  | BAH |
| 479 | **UML diagrams (task 2.3.2)** | 30d | 2007-02-01 | 2007-03-14 |  |  | Development team |
| 480 | Developer draft | 10d | 2007-02-01 | 2007-02-14 |  |  | Development team |
| 481 | Adopter review | 5d | 2007-02-15 | 2007-02-21 | 480 |  | Elaborators |
| 482 | Developer update | 5d | 2007-02-22 | 2007-02-28 | 481 |  | Development team |
| 483 | Deliver to BAH | 0d | 2007-02-28 | 2007-02-28 | 482 |  | Patrick |
| 484 | BAH review | 10d | 2007-03-01 | 2007-03-14 | 483 |  | BAH |
| 485 | **Design document (task 2.4.2)** | 30d | 2007-02-01 | 2007-03-14 |  |  | Development team |
| 486 | Developer draft | 10d | 2007-02-01 | 2007-02-14 |  |  | Development team |
| 487 | Adopter review | 5d | 2007-02-15 | 2007-02-21 | 486 |  | Elaborators |
| 488 | Developer update | 5d | 2007-02-22 | 2007-02-28 | 487 |  | Development team |
| 489 | Deliver to BAH | 0d | 2007-02-28 | 2007-02-28 | 488 |  | Patrick |
| 490 | BAH review | 10d | 2007-03-01 | 2007-03-14 | 489 |  | BAH |
| 491 | **Draft architecture guide (task 2.8.1)** | 30d | 2007-02-01 | 2007-03-14 |  |  | Development team |
| 492 | Developer draft | 10d | 2007-02-01 | 2007-02-14 |  |  | Development team |
| 493 | Adopter review | 5d | 2007-02-15 | 2007-02-21 | 492 |  | Elaborators |
| 494 | Developer update | 5d | 2007-02-22 | 2007-02-28 | 493 |  | Development team |
| 495 | Deliver to BAH | 0d | 2007-02-28 | 2007-02-28 | 494 |  | Patrick |
| 496 | BAH review | 10d | 2007-03-01 | 2007-03-14 | 495 |  | BAH |
| 497 | **Doman model** | 20d | 2007-02-01 | 2007-02-28 |  |  | Ram; Priyatam; Ramakrishna |
| 498 | Harmonize C3PR model with BRIDG | 10d | 2007-02-01 | 2007-02-14 |  |  | Ram; Priyatam; Ramakrishna |
| 499 | Revise elaboration models | 10d | 2007-02-15 | 2007-02-28 | 498 |  | Ram; Priyatam; Ramakrishna |
| 501 | **Web interface** | 18d | 2007-02-05 | 2007-02-28 |  |  | Priyatam; Kruttik |
| 502 | **Harden all interfaces** | 18d | 2007-02-05 | 2007-02-28 |  |  | Priyatam; Kruttik |
| 503 | Analyze use cases | 2d | 2007-02-05 | 2007-02-06 |  |  | Priyatam; Kruttik |
| 504 | Update interface | 4d | 2007-02-07 | 2007-02-12 | 503 |  | Priyatam; Kruttik |
| 505 | Hook into backend logic | 4d | 2007-02-13 | 2007-02-16 | 504 |  | Priyatam; Kruttik |
| 506 | Refine interface | 4d | 2007-02-19 | 2007-02-22 | 505 |  | Priyatam; Kruttik |
| 507 | Deploy and test | 4d | 2007-02-23 | 2007-02-28 | 506 |  | Priyatam; Kruttik |
| 508 | **Enterprise Service Bus** | 18d | 2007-02-05 | 2007-02-28 |  |  | Manav; Kruttik |
| 509 | **Harden all message routers** | 9d | 2007-02-05 | 2007-02-15 |  |  | Manav; Kruttik |
| 510 | Create router rules | 4d | 2007-02-05 | 2007-02-08 |  |  | Manav; Kruttik |
| 511 | Deploy and test router | 5d | 2007-02-09 | 2007-02-15 | 510 |  | Manav; Kruttik |
| 512 | **Harden all handlers for C3PR** | 9d | 2007-02-16 | 2007-02-28 | 511 |  | Manav; Kruttik |
| 513 | Create inbound binding component | 4d | 2007-02-16 | 2007-02-21 |  |  | Manav; Kruttik |
| 514 | Create outbound binding component | 5d | 2007-02-22 | 2007-02-28 | 513 |  | Manav; Kruttik |
| 515 | **Harden all handlers fo for Study Calendar** | 9d | 2007-02-16 | 2007-02-28 | 511 |  | Manav; Kruttik |
| 516 | Create inbound binding component | 4d | 2007-02-16 | 2007-02-21 |  |  | Manav; Kruttik |
| 517 | Create outbound binding component | 5d | 2007-02-22 | 2007-02-28 | 516 |  | Manav; Kruttik |
| 518 | **Grid service** | 18d | 2007-02-05 | 2007-02-28 |  |  | Manav |
| 519 | **Harden services** | 18d | 2007-02-05 | 2007-02-28 |  |  | Manav |
| 520 | Create service skeleton | 5d | 2007-02-05 | 2007-02-09 |  |  | Manav |
| 521 | Implement skeleton | 5d | 2007-02-12 | 2007-02-16 | 520 |  | Manav |
| 522 | Hook in backend database | 4d | 2007-02-19 | 2007-02-22 | 521 |  | Manav |
| 523 | Deploy and test | 4d | 2007-02-23 | 2007-02-28 | 522 |  | Manav |
| 524 | **Database/Domain Model** | 18d | 2007-02-05 | 2007-02-28 |  |  | Ram; Priyatam; Ramakrishna |
| 525 | **Harden domain models** | 18d | 2007-02-05 | 2007-02-28 |  |  | Ram; Priyatam; Ramakrishna |
| 526 | Create database model | 5d | 2007-02-05 | 2007-02-09 |  |  | Ram; Priyatam; Ramakrishna |
| 527 | Create DDLs | 5d | 2007-02-12 | 2007-02-16 | 526 |  | Ram; Priyatam; Ramakrishna |
| 528 | Apply DDLs and create test data | 4d | 2007-02-19 | 2007-02-22 | 527 |  | Ram; Priyatam; Ramakrishna |
| 529 | Deploy and test | 4d | 2007-02-23 | 2007-02-28 | 528 |  | Ram; Priyatam; Ramakrishna |
| 530 | **Business layer** | 18d | 2007-02-05 | 2007-02-28 |  |  | Priyatam; Kruttik |
| 531 | **Harden business services** | 18d | 2007-02-05 | 2007-02-28 |  |  | Priyatam; Kruttik |
| 532 | Design APIs | 5d | 2007-02-05 | 2007-02-09 |  |  | Priyatam; Kruttik |
| 533 | Implement APIs | 5d | 2007-02-12 | 2007-02-16 | 532 |  | Priyatam; Kruttik |
| 534 | Hook in database | 4d | 2007-02-19 | 2007-02-22 | 533 |  | Priyatam; Kruttik |
| 535 | Deploy and test | 4d | 2007-02-23 | 2007-02-28 | 534 |  | Priyatam; Kruttik |
| 536 | **Prototype code (task 2.5.3)** | 31d | 2007-02-05 | 2007-03-19 |  |  | Patrick |
| 537 | Developer draft | 21d | 2007-02-05 | 2007-03-05 |  |  | Development team |
| 538 | Submit to BAH | 0d | 2007-03-05 | 2007-03-05 | 537 |  | Patrick |
| 539 | BAH review | 10d | 2007-03-06 | 2007-03-19 | 538 |  | BAH |
| 542 | Implement integration test framework | 16d | 2007-02-05 | 2007-02-26 |  |  | Patrick |
| 543 | **Test report (task 2.7.3)** | 12d | 2007-02-27 | 2007-03-14 | 541, 542 |  | Development team |
| 544 | Developer draft | 2d | 2007-02-27 | 2007-02-28 |  |  | Development team |
| 545 | Deliver to BAH | 0d | 2007-02-28 | 2007-02-28 | 544 |  | Patrick |
| 546 | BAH review | 10d | 2007-03-01 | 2007-03-14 | 545 |  | BAH |
| 547 | Deploy baseline C3PR at adopter sites | 8d | 2007-02-19 | 2007-02-28 |  | start no earlier than 2007-02-19 |  |

Removed: 177 Domain model; 178 Implement protocol model revisions; 179 Implement participant model; 284 Domain model; 285 Implement protocol model revisions; 286 Implement participant model; 287 Implement registration model; 290 Implement grid grouper; 303 Create functional test cases; 306 Update risk matrix; 307 Update risk matrix; 308 Monthly report; 309 Construction and transition phase plan; 310 Adoption Collaboration Report; 311 Test plan document; 313 Use case document; 314 SRS document; 316 UML diagrams; 317 Design document; 318 Final architecture guide; 319 Lessons learned; 321 Prototype code; 324 Add integration tests; 325 Test report

Changed:

| ID | Task | Start | Finish | Duration | Complete | Total float | Predecessors | Other |
| --- | --- | --- | --- | --- | --- | --- | --- | --- |
| 1 | **Iteration 1** |  | 2006-11-30 → 2006-12-14 (+14d) | 22d → 32d | 91% → 95% | 0d → 67d |  |  |
| 3 | **Project Management** |  | 2006-11-30 A → 2006-12-14 (+14d) | 22d → 32d | 100% → 87% | none → 67d | none → 2 |  |
| 4 | **Draft project plan (task 1.1)** |  | 2006-11-14 A → 2006-11-28 (+14d) | 10d → 20d | 100% → 50% | none → 79d |  |  |
| 10 | **Draft communication plan (task 1.2)** |  | 2006-11-30 A → 2006-12-14 A (+14d) | 22d → 32d |  |  |  |  |
| 16 | **Draft risk matrix (task 1.4.1)** |  | 2006-11-16 A → 2006-11-30 A (+14d) | 12d → 22d |  |  |  |  |
| 20 | **Update risk matrix (task 1.3.1)** |  | 2006-11-30 A → 2006-12-14 A (+14d) | 10d → 20d |  |  |  |  |
| 24 | **Monthly report (task 1.3.1)** |  | 2006-11-30 A → 2006-12-14 A (+14d) | 22d → 32d |  |  |  |  |
| 26 | Deliver to BAH |  |  |  |  |  | none → 25 |  |
| 28 | **Test plan document (task 2.6.1)** |  | 2006-11-30 A → 2006-11-30 |  | 100% → 69% | none → 77d |  |  |
| 34 | **Requirements** |  | 2006-11-30 → 2006-12-14 (+14d) | 22d → 32d | 76% → 92% | 0d → 67d | none → 2 |  |
| 49 | **Draft use case document (task 2.1.1)** |  | 2006-11-30 A → 2006-12-14 A (+14d) | 22d → 32d |  |  |  |  |
| 56 | **SRS document (task 2.2.1)** | 2006-11-01 A | 2006-11-30 → 2006-12-14 (+14d) | 22d → 32d | 0% → 69% | 0d → 67d |  |  |
| 57 | Developer draft | 2006-11-01 A | 2006-11-16 A |  | 0% → 100% | 0d → none |  |  |
| 58 | Adopter review | 2006-11-17 A | 2006-11-23 A |  | 0% → 100% | 0d → none |  |  |
| 59 | Developer update | 2006-11-24 A | 2006-11-30 A |  | 0% → 100% | 0d → none |  |  |
| 60 | Deliver to BAH | 2006-11-30 A | 2006-11-30 A |  | 0% → 100% | 0d → none |  |  |
| 62 | **Analysis and Design** |  | 2006-11-30 → 2006-12-14 A (+14d) | 22d → 32d | 79% → 100% | 0d → none | none → 2 |  |
| 63 | **Design document (task 2.4.1)** | 2006-11-01 A | 2006-11-30 → 2006-12-14 A (+14d) | 22d → 32d | 0% → 100% | 0d → none |  |  |
| 64 | Developer draft | 2006-11-01 A | 2006-11-16 A |  | 0% → 100% | 0d → none |  |  |
| 65 | Adopter review | 2006-11-17 A | 2006-11-23 A |  | 0% → 100% | 0d → none |  |  |
| 66 | Developer update | 2006-11-24 A | 2006-11-30 A |  | 0% → 100% | 0d → none |  |  |
| 67 | Deliver to BAH | 2006-11-30 A | 2006-11-30 A |  | 0% → 100% | 0d → none |  |  |
| 69 | **UML diagrams (task 2.3.1)** |  | 2006-11-30 A → 2006-12-14 A (+14d) | 22d → 32d |  |  |  |  |
| 86 | **Implementation** |  | 2006-11-30 A → 2006-12-14 A (+14d) | 22d → 32d |  |  | none → 2 |  |
| 102 | **Prototype code (task 2.5.1)** |  | 2006-11-30 A → 2006-12-14 A (+14d) | 22d → 32d |  |  |  |  |
| 106 | **Testing** |  | 2006-11-30 A → 2006-12-14 A (+14d) | 22d → 32d |  |  | none → 2 |  |
| 108 | **Test report (task 2.7.1)** |  | 2006-11-30 A → 2006-12-14 A (+14d) | 2d → 12d |  |  |  |  |
| 112 | **Iteration 2** |  | 2006-12-29 → 2007-01-12 (+14d) | 21d → 31d | 0% → 94% | 43d → 46d | 1 → none |  |
| 114 | **Project Management** |  | 2006-12-29 → 2007-01-12 (+14d) | 21d → 31d | 0% → 69% | 43d → 46d | none → 113 |  |
| 115 | **Update risk matrix (task 1.4.2)** |  | 2006-12-15 → 2006-12-29 A (+14d) | 11d → 21d | 0% → 100% | 43d → none |  |  |
| 116 | Developer draft | 2006-12-01 A | 2006-12-15 A |  | 0% → 100% | 43d → none |  |  |
| 117 | Deliver to BAH | 2006-12-15 A | 2006-12-15 A |  | 0% → 100% | 43d → none |  |  |
| 119 | **Update risk matrix (task 1.3.2)** | 2006-12-18 A | 2006-12-29 → 2007-01-12 A (+14d) | 10d → 20d | 0% → 100% | 43d → none |  |  |
| 120 | Developer draft | 2006-12-18 A | 2006-12-29 A |  | 0% → 100% | 43d → none | 115 → none | constraint none → start no earlier than 2006-12-18 |
| 121 | Deliver to BAH | 2006-12-29 A | 2006-12-29 A |  | 0% → 100% | 43d → none |  |  |
| 123 | **Monthly report (task 1.3.2)** | 2006-12-01 A | 2006-12-29 → 2007-01-12 (+14d) | 21d → 31d | 0% → 68% | 43d → 46d |  |  |
| 124 | Developer draft | 2006-12-01 A | 2006-12-29 A |  | 0% → 100% | 43d → none |  |  |
| 125 | Deliver to BAH | 2006-12-29 A | 2006-12-29 A |  | 0% → 100% | 43d → none |  |  |
| 127 | **Adoption Collaboration Report (task 1.7)** |  | 2006-12-29 → 2007-01-12 (+14d) | 21d → 31d |  | 43d → 46d |  |  |
| 133 | **Test plan document (task 2.6.2)** | 2006-12-01 A | 2006-12-29 → 2007-01-12 A (+14d) | 21d → 31d | 0% → 100% | 43d → none |  |  |
| 134 | Developer Draft | 2006-12-01 A | 2006-12-15 A |  | 0% → 100% | 43d → none |  |  |
| 135 | Adopter review | 2006-12-18 A | 2006-12-22 A |  | 0% → 100% | 43d → none |  |  |
| 136 | Developer update | 2006-12-25 A | 2006-12-29 A |  | 0% → 100% | 43d → none |  |  |
| 137 | Deliver to BAH | 2006-12-29 A | 2006-12-29 A |  | 0% → 100% | 43d → none |  |  |
| 139 | **Requirements** | 2006-12-01 A | 2006-12-29 → 2007-01-12 A (+14d) | 21d → 31d | 0% → 100% | 0d → none | none → 113 | resources none → Development team; Elaborators |
| 140 | Create level 1 use cases and requirements | 2006-12-01 A | 2006-12-04 A |  | 0% → 100% | 0d → none |  |  |
| 141 | **Use case document** | 2006-12-01 A | 2006-12-29 → 2007-01-12 A (+14d) | 21d → 31d | 0% → 100% | 43d → none |  | resources none → Ram; Elaborators |
| 142 | **Develop C3PR integration use cases (implementation) (task 2.1.2)** | 2006-12-01 A | 2006-12-29 → 2007-01-12 A (+14d) | 21d → 31d | 0% → 100% | 43d → none |  |  |
| 143 | Developer Draft | 2006-12-01 A | 2006-12-15 A |  | 0% → 100% | 43d → none |  |  |
| 144 | Adopter review | 2006-12-18 A | 2006-12-22 A |  | 0% → 100% | 43d → none |  |  |
| 145 | Developer update | 2006-12-25 A | 2006-12-29 A |  | 0% → 100% | 43d → none |  |  |
| 146 | Deliver to BAH | 2006-12-29 A | 2006-12-29 A |  | 0% → 100% | 43d → none |  |  |
| 148 | **Develop Study Calendar integration use cases (implementation) (task 2.1.2)** | 2006-12-01 A | 2006-12-29 → 2007-01-12 A (+14d) | 21d → 31d | 0% → 100% | 43d → none |  |  |
| 149 | Developer Draft | 2006-12-01 A | 2006-12-15 A |  | 0% → 100% | 43d → none |  |  |
| 150 | Adopter review | 2006-12-18 A | 2006-12-22 A |  | 0% → 100% | 43d → none |  |  |
| 151 | Developer update | 2006-12-25 A | 2006-12-29 A |  | 0% → 100% | 43d → none |  |  |
| 152 | Deliver to BAH | 2006-12-29 A | 2006-12-29 A |  | 0% → 100% | 43d → none |  |  |
| 154 | **Develop participant management use cases (implementation) (task 2.1.2)** | 2006-12-01 A | 2006-12-29 → 2007-01-12 A (+14d) | 21d → 31d | 0% → 100% | 43d → none |  |  |
| 155 | Developer Draft | 2006-12-01 A | 2006-12-15 A |  | 0% → 100% | 43d → none |  |  |
| 156 | Adopter review | 2006-12-18 A | 2006-12-22 A |  | 0% → 100% | 43d → none |  |  |
| 157 | Developer update | 2006-12-25 A | 2006-12-29 A |  | 0% → 100% | 43d → none |  |  |
| 158 | Deliver to BAH | 2006-12-29 A | 2006-12-29 A |  | 0% → 100% | 43d → none |  |  |
| 160 | **Refine protocol management use cases (task 2.1.2)** | 2006-12-01 A | 2006-12-29 → 2007-01-12 A (+14d) | 21d → 31d | 0% → 100% | 43d → none |  |  |
| 161 | Developer Draft | 2006-12-01 A | 2006-12-15 A |  | 0% → 100% | 43d → none |  |  |
| 162 | Adopter review | 2006-12-18 A | 2006-12-22 A |  | 0% → 100% | 43d → none |  |  |
| 163 | Developer update | 2006-12-25 A | 2006-12-29 A |  | 0% → 100% | 43d → none |  |  |
| 164 | Deliver to BAH | 2006-12-29 A | 2006-12-29 A |  | 0% → 100% | 43d → none |  |  |
| 166 | **SRS document (task 2.2.2)** | 2006-12-01 A | 2006-12-29 → 2007-01-12 A (+14d) | 21d → 31d | 0% → 100% | 43d → none |  |  |
| 167 | Developer Draft | 2006-12-01 A | 2006-12-15 A |  | 0% → 100% | 43d → none |  |  |
| 168 | Adopter review | 2006-12-18 A | 2006-12-22 A |  | 0% → 100% | 43d → none |  |  |

| ID | Task | Start | Finish | Duration | Complete | Total float | Predecessors | Other |
| --- | --- | --- | --- | --- | --- | --- | --- | --- |
| 169 | Developer update | 2006-12-25 A | 2006-12-29 A |  | 0% → 100% | 43d → none |  |  |
| 170 | Deliver to BAH | 2006-12-29 A | 2006-12-29 A |  | 0% → 100% | 43d → none |  |  |
| 172 | **Analysis and Design** | 2006-12-01 A | 2006-12-29 → 2007-01-12 A (+14d) | 21d → 31d | 0% → 100% | 43d → none | none → 113 | resources none → Development team; Elaborators |
| 173 | **UML diagrams (task 2.3.2)** | 2006-12-01 A | 2006-12-29 → 2007-01-12 A (+14d) | 21d → 31d | 0% → 100% | 43d → none |  |  |
| 174 | Developer Draft | 2006-12-01 A | 2006-12-15 A |  | 0% → 100% | 43d → none |  |  |
| 175 | Adopter review | 2006-12-18 A | 2006-12-22 A |  | 0% → 100% | 43d → none |  |  |
| 176 | Developer update | 2006-12-25 A | 2006-12-29 A |  | 0% → 100% | 43d → none |  |  |
| 177 | Deliver to BAH | 2006-12-29 A | 2006-12-29 A |  | 0% → 100% | 43d → none |  |  |
| 179 | **Design document (task 2.4.2)** | 2006-12-01 A | 2006-12-29 → 2007-01-12 A (+14d) | 21d → 31d | 0% → 100% | 43d → none |  |  |
| 180 | Developer Draft | 2006-12-01 A | 2006-12-15 A |  | 0% → 100% | 43d → none |  |  |
| 181 | Adopter review | 2006-12-18 A | 2006-12-22 A |  | 0% → 100% | 43d → none |  |  |
| 182 | Developer update | 2006-12-25 A | 2006-12-29 A |  | 0% → 100% | 43d → none |  |  |
| 183 | Deliver to BAH | 2006-12-29 A | 2006-12-29 A |  | 0% → 100% | 43d → none |  |  |
| 185 | **Doman model** | 2006-12-01 A | 2006-12-29 A |  | 0% → 100% | 43d → none |  |  |
| 186 | Harmonize participant model with BRIDG | 2006-12-01 A | 2006-12-15 A |  | 0% → 100% | 43d → none |  |  |
| 187 | Create participant model | 2006-12-18 A | 2006-12-29 A |  | 0% → 100% | 43d → none |  |  |
| 188 | Revise protocol model (including BRIDG harmonization) | 2006-12-01 A | 2006-12-29 A |  | 0% → 100% | 43d → none |  |  |
| 189 | **Implementation** | 2006-12-05 A | 2006-12-29 → 2007-01-12 A (+14d) | 19d → 29d | 0% → 100% | 0d → none |  | resources none → Development team |
| 190 | **Web interface** | 2006-12-05 A | 2006-12-29 A |  | 0% → 100% | 43d → none |  |  |
| 191 | First pass at dynamic interface | 2006-12-05 A | 2006-12-11 A |  | 0% → 100% | 43d → none |  |  |
| 192 | Create mockups | 2006-12-12 A | 2006-12-18 A |  | 0% → 100% | 52d → none |  |  |
| 193 | **Implement protocol management interface** | 2006-12-12 A | 2006-12-29 A |  | 0% → 100% | 43d → none |  |  |
| 197 | Point login module to Dorian (IdP service) | 2006-12-05 A | 2006-12-29 → 2006-12-11 A (-18d) | 19d → 5d | 0% → 100% | 43d → none | none → 193 |  |
| 198 | **Enterprise Service Bus** | 2006-12-05 A | 2006-12-29 A |  | 0% → 100% | 43d → none |  |  |
| 199 | **Implement protocol creation message router** | 2006-12-05 A | 2006-12-15 A |  | 0% → 100% | 43d → none |  |  |
| 202 | **Implement protocol creation message handler for C3PR** | 2006-12-18 A | 2006-12-29 A |  | 0% → 100% | 43d → none | 199 → 201 |  |
| 205 | **Implement protocol creation message handler for Study Calendar** | 2006-12-18 A | 2006-12-29 A |  | 0% → 100% | 43d → none |  |  |
| 208 | **Integrate caGrid security delegation** | 2006-12-05 A | 2006-12-29 A |  | 0% → 100% | 43d → none |  |  |
| 213 | **Grid service** | 2006-12-05 A | 2006-12-29 A |  | 0% → 100% | 43d → none |  |  |
| 214 | **Implement protocol creation service** | 2006-12-05 A | 2006-12-29 A |  | 0% → 100% | 43d → none |  |  |
| 219 | **Database/Domain Model** | 2006-12-05 A | 2006-12-29 A |  | 0% → 100% | 43d → none |  | was named Database |
| 220 | **Investigate identifiers framework** | 2006-12-05 A | 2006-12-29 A |  | 0% → 100% | 43d → none |  | was named Investigate Identifiers framework |
| 225 | **Update database with protocol changes** | 2006-12-05 A | 2006-12-29 A |  | 0% → 100% | 43d → none |  |  |
| 235 | **Security** | 2006-12-05 A | 2006-12-29 A |  | 0% → 100% | 0d → none |  |  |
| 237 | Deploy Dorian | 2006-12-05 A | 2006-12-22 → 2006-12-11 A (-11d) | 14d → 5d | 0% → 100% | 0d → none |  |  |
| 239 | Setup Dorian users | 2006-12-25 A | 2006-12-29 A |  | 0% → 100% | 0d → none | 237 → 238 |  |
| 240 | Setup IdP service | 2006-12-25 A | 2006-12-29 → 2006-12-28 A (-1d) | 5d → 4d | 0% → 100% | 0d → none |  |  |
| 241 | **Investigate secure message/conversation** | 2006-12-05 A | 2006-12-29 A |  | 0% → 100% | 0d → none |  |  |
| 246 | **Business layer** | 2006-12-05 A | 2006-12-29 A |  | 0% → 100% | 43d → none |  |  |
| 247 | **Implement protocol creation logic** | 2006-12-05 A | 2006-12-29 A |  | 0% → 100% | 43d → none |  | was named Implement protocol creation service |
| 252 | **Prototype code (task 2.5.2)** | 2006-12-05 A | 2006-12-29 → 2007-01-12 A (+14d) | 19d → 29d | 0% → 100% | 43d → none |  |  |
| 253 | Developer draft | 2006-12-05 A | 2006-12-29 A |  | 0% → 100% | 43d → none |  |  |
| 254 | Submit to BAH | 2006-12-29 A | 2006-12-29 A |  | 0% → 100% | 43d → none |  |  |
| 256 | **Testing** | 2006-12-05 A | 2006-12-29 → 2007-01-12 A (+14d) | 19d → 29d | 0% → 100% | 43d → none |  |  |
| 257 | Create unit tests | 2006-12-05 A | 2006-12-27 A |  | 0% → 100% | 43d → none |  |  |
| 258 | Create integration tests | 2006-12-05 A | 2006-12-27 A |  | 0% → 100% | 43d → none |  |  |
| 259 | **Test report (task 2.7.2)** | 2006-12-28 A | 2006-12-29 → 2007-01-12 A (+14d) | 2d → 12d | 0% → 100% | 43d → none |  |  |
| 260 | Developer draft | 2006-12-28 A | 2006-12-29 A |  | 0% → 100% | 43d → none |  |  |
| 261 | Submit to BAH | 2006-12-29 A | 2006-12-29 A |  | 0% → 100% | 43d → none |  |  |
| 263 | **Iteration 3** | 2007-01-01 A | 2007-01-31 → 2007-02-14 (+14d) | 23d → 33d | 0% → 11% | 0d → 23d | 235 → none |  |
| 265 | **Project Management** | 2007-01-01 A | 2007-01-31 → 2007-02-14 (+14d) | 23d → 33d | 0% → 65% | 0d → 23d | none → 264 |  |
| 266 | **Update risk matrix (task 1.4.3)** | 2007-01-01 A | 2007-01-17 → 2007-01-31 (+14d) | 13d → 23d | 0% → 57% | 0d → 33d |  |  |
| 267 | Developer draft | 2007-01-01 A | 2007-01-17 A |  | 0% → 100% | 0d → none |  |  |
| 268 | Deliver to BAH | 2007-01-17 A | 2007-01-17 A |  | 0% → 100% | 0d → none |  |  |
| 270 | **Update risk matrix (task 1.3.3)** | 2007-01-18 A | 2007-01-31 → 2007-02-14 (+14d) | 10d → 20d | 0% → 50% | 0d → 23d |  |  |
| 271 | Developer draft | 2007-01-18 A | 2007-01-31 A |  | 0% → 100% | 0d → none |  |  |
| 272 | Deliver to BAH | 2007-01-31 A | 2007-01-31 A |  | 0% → 100% | 0d → none |  |  |
| 274 | **Monthly report (task 1.3.3)** | 2007-01-01 A | 2007-01-31 → 2007-02-14 (+14d) | 23d → 33d | 0% → 70% | 0d → 23d |  |  |
| 275 | Developer draft | 2007-01-01 A | 2007-01-31 A |  | 0% → 100% | 0d → none |  |  |
| 276 | Deliver to BAH | 2007-01-31 A | 2007-01-31 A |  | 0% → 100% | 0d → none |  |  |
| 278 | **Adoption Collaboration Report (task 1.7)** | 2007-01-01 A | 2007-01-31 → 2007-02-14 (+14d) | 23d → 33d | 0% → 70% | 0d → 23d |  |  |
| 279 | Developer draft | 2007-01-01 A | 2007-01-17 A |  | 0% → 100% | 0d → none |  |  |
| 280 | Adopter review | 2007-01-18 A | 2007-01-24 A |  | 0% → 100% | 0d → none |  |  |
| 281 | Developer update | 2007-01-25 A | 2007-01-31 A |  | 0% → 100% | 0d → none |  |  |
| 282 | Deliver to BAH | 2007-01-31 A | 2007-01-31 A |  | 0% → 100% | 0d → none |  |  |
| 284 | **Test plan document (task 2.6.3)** | 2007-01-01 A | 2007-01-31 → 2007-02-14 (+14d) | 23d → 33d | 0% → 70% | 0d → 23d |  |  |
| 285 | Developer draft | 2007-01-01 A | 2007-01-17 A |  | 0% → 100% | 0d → none |  |  |
| 286 | Adopter review | 2007-01-18 A | 2007-01-24 A |  | 0% → 100% | 0d → none |  |  |
| 287 | Developer update | 2007-01-25 A | 2007-01-31 A |  | 0% → 100% | 0d → none |  |  |
| 288 | Deliver to BAH | 2007-01-31 A | 2007-01-31 A |  | 0% → 100% | 0d → none |  |  |

| ID | Task | Start | Finish | Duration | Total float | Predecessors | Other |
| --- | --- | --- | --- | --- | --- | --- | --- |
| 290 | **Requirements** |  | 2007-01-31 → 2007-02-14 (+14d) | 23d → 33d | 0d → 23d | none → 264 | resources none → Development team; Elaborators |
| 292 | **Use case document** |  | 2007-01-31 → 2007-02-14 (+14d) | 23d → 33d | 0d → 23d |  |  |
| 293 | **Develop registration use cases** |  | 2007-01-31 → 2007-02-14 (+14d) | 23d → 33d | 0d → 23d |  |  |
| 299 | **Refine participant management use cases** |  | 2007-01-31 → 2007-02-14 (+14d) | 23d → 33d | 0d → 23d |  |  |
| 305 | **Refine C3PR integration use cases** |  | 2007-01-31 → 2007-02-14 (+14d) | 23d → 33d | 0d → 23d |  |  |
| 311 | **Refine PSC use cases** |  | 2007-01-31 → 2007-02-14 (+14d) | 23d → 33d | 0d → 23d |  |  |
| 317 | **SRS document** |  | 2007-01-31 → 2007-02-14 (+14d) | 23d → 33d | 0d → 23d |  |  |
| 323 | **Analysis and Design** |  | 2007-01-31 → 2007-02-14 (+14d) | 23d → 33d | 0d → 23d | none → 264 | resources none → Development team |
| 324 | **UML diagrams (task 2.3.2)** |  | 2007-01-31 → 2007-02-14 (+14d) | 23d → 33d | 0d → 23d |  |  |
| 330 | **Design document (task 2.4.2)** |  | 2007-01-31 → 2007-02-14 (+14d) | 23d → 33d | 0d → 23d |  |  |
| 336 | **Draft architecture guide (task 2.8.1)** |  | 2007-01-31 → 2007-02-14 (+14d) | 23d → 33d | 0d → 23d |  |  |
| 347 | **Implementation** |  | 2007-01-31 → 2007-02-14 (+14d) | 21d → 31d | 0d → 23d |  | resources none → Development team |
| 361 | **Enterprise Service Bus** |  | 2007-01-31 → 2007-01-30 (-1d) | 21d → 20d | 0d → 34d |  |  |
| 362 | **Implement participant creation message router** |  | 2007-01-12 → 2007-01-15 (+3d) | 8d → 9d | 0d → 35d |  |  |
| 365 | **Implement participant creation message handler for C3PR** | 2007-01-15 → 2007-01-16 (+1d) | 2007-01-23 → 2007-01-29 (+6d) | 7d → 10d | 0d → 35d | 362 → 364 |  |
| 368 | **Implement participant creation message handler for Study Calendar** | 2007-01-24 → 2007-01-16 (-8d) | 2007-01-31 → 2007-01-29 (-2d) | 6d → 10d | 0d → 35d | 365 → 364 |  |
| 371 | **Implement registration change message router** |  | 2007-01-12 → 2007-01-16 (+4d) | 8d → 10d | 0d → 34d |  |  |
| 374 | **Implement registration change message handler for C3PR** | 2007-01-15 → 2007-01-17 (+2d) | 2007-01-23 → 2007-01-30 (+7d) | 7d → 10d | 0d → 34d | 371 → 373 |  |
| 377 | **Implement registration change message handler for Study Calendar** | 2007-01-24 → 2007-01-17 (-7d) | 2007-01-31 → 2007-01-30 (-1d) | 6d → 10d | 0d → 34d | 374 → 373 |  |
| 380 | **Grid service** |  | 2007-01-31 → 2007-01-29 (-2d) | 21d → 19d | 0d → 35d |  |  |
| 381 | **Implement participant creation service** |  | 2007-01-31 → 2007-01-29 (-2d) | 21d → 19d | 0d → 35d |  |  |
| 386 | **Implement registration change service** |  | 2007-01-31 → 2007-01-29 (-2d) | 21d → 19d | 0d → 35d |  |  |
| 391 | **Database/Domain Model** |  |  |  | 0d → 33d |  | was named Database |
| 407 | **Security** |  | 2007-01-31 → 2007-01-24 (-7d) | 21d → 16d | 0d → 38d |  |  |
| 411 | **Implement CSM authorization in grid service** | 2007-01-03 → 2007-01-11 (+8d) | 2007-01-31 → 2007-01-24 (-7d) | 21d → 10d | 0d → 38d | none → 409 |  |
| 425 | **Prototype code (task 2.5.3)** |  | 2007-01-31 → 2007-02-14 (+14d) | 21d → 31d | 0d → 23d |  |  |
| 429 | **Testing** |  | 2007-01-31 → 2007-02-14 (+14d) | 21d → 31d | 0d → 23d |  | resources none → Development team |
| 432 | **Test report (task 2.7.3)** |  | 2007-01-31 → 2007-02-14 (+14d) | 2d → 12d | 0d → 23d |  |  |
| 436 | **Iteration 4** |  | 2007-02-28 → 2007-03-19 (+19d) | 20d → 33d |  | 263 → none |  |
| 438 | **Project Management** |  | 2007-02-28 → 2007-03-14 (+14d) | 20d → 30d | 0d → 3d | none → 437 | resources none → Patrick |
| 463 | **Requirements** |  | 2007-02-28 → 2007-03-14 (+14d) | 20d → 30d |  | none → 437 | resources none → Development team; Elaborators |
| 478 | **Analysis and Design** |  | 2007-02-28 → 2007-03-14 (+14d) | 20d → 30d | 0d → 3d | none → 437 | resources none → Development team |
| 500 | **Implementation** | 2007-02-01 → 2007-02-05 (+4d) | 2007-02-28 → 2007-03-19 (+19d) | 20d → 31d |  | none → 464 | resources none → Development team |
| 540 | **Testing** | 2007-02-01 → 2007-02-05 (+4d) | 2007-02-28 → 2007-03-14 (+14d) | 20d → 28d | 0d → 3d | none → 464 | resources none → Development team |
| 541 | Create unit tests | 2007-02-01 → 2007-02-05 (+4d) | 2007-02-28 → 2007-02-26 (-2d) | 20d → 16d | 0d → 3d |  | resources none → Development team |
